# ZnNi Line Development Plan-08

Schedule from MS Project XML, 2024-03-29 to 2026-07-07, A marks actual dates.

## Calendars

- Standard: Mon-Fri 08:00-12:00, 13:00-17:00; Sat-Sun off.

## Resources

| Resource |
| --- |
| Jo Dunford |
| Lloyd Harrington |
| James Bick |
| James Fleming |
| Dean Wilkins |
| Kurtis Parsons |
| Jodie Harris |
| Evie Ellis |
| Operator 1 |
| Shaun McGarry |
| Operator 1 |
| Liam Gardner |
| Puretech |
| Plastic Fan COmpany |
| Hubert Wolski |
| Sam Bates |
| Scott Niedzwiecki |
| ASL |
| HSE |
| James Allcoat |
| SK |
| Paul Williams |
| Richard Hodges |
| Conor Parsons |
| Koch |
| Andy McDowell |
| Lansford |
| Jason Payne |
| Josh Avent |
| Martyn Price |
| Chris Ayelott |
| Ian Smith |
| Facilities |
| SLS Purchasing |
| Georgina Brain |
| Paul Baldwin |
| Zack Brooks |
| Richard Jones |
| Adam Hampson |
| Kurt Parsons |
| Chris Locke |
| Matt Dolphin |
| Craig Baker |
| Martt Dolphin |
| Lois Lee |
| James Flemong |
| Billy Bond |
| M-Tech |
| TBD |
| Matt Wetton |
| Gordano |
| Mike Warriner |
| Germain Forgeuox |
| Resource Names |
| Mukaran Saeed |
| IS Team |

## Schedule

| ID | WBS | Task | Type | Duration | Start | Finish | Predecessors | Complete | Remaining | Actual finish | Baseline 1 start | Baseline 1 finish | Total slack | Constraint | Resources | Work | Actual work | Tasks Due this Month | Text30 | Actual Task Start | Initial Planned Start | Initial Planned Finish | Actual Task Finish | Tasks Due next Month | Tasks Due this week | Tasks Due next Week | Tasks Due Today | Last Tasks | Text7 | Task active Day | Number1 | Number2 | Field | Finish Difference | Start Difference |
| --- | --- | --- | --- | --- | --- | --- | --- | --- | --- | --- | --- | --- | --- | --- | --- | --- | --- | --- | --- | --- | --- | --- | --- | --- | --- | --- | --- | --- | --- | --- | --- | --- | --- | --- | --- |
| 1 | 1 | **Internal ZnNi Project** |  | 592.19d? | 2024-03-29 A | 2026-07-07 |  | 38% | 365.09d? |  | 2024-04-08 | 2025-09-17 | 0d |  |  | 3344.5h | 1565.65h | No | Internal ZnNi Project | 2024-04-08 | 2024-03-29 | 2026-02-17 |  |  |  |  |  |  |  |  |  |  |  |  |  |
| 2 | 1.1 | **ZnNi Line Stabilization** |  | 586.19d? | 2024-04-08 A | 2026-07-07 |  | 39% | 357.6d? |  | 2024-04-08 | 2025-09-17 | 0d |  |  | 1608.86h | 776.61h | No | Maintenance System | 2024-04-08 | 2024-04-08 | 2026-02-17 |  |  |  |  |  |  |  |  |  |  |  |  |  |
| 3 | 1.1.1 | **ZnNi Line Critical Documentation Set in place** |  | 315.33d | 2024-04-08 A | 2025-06-23 |  | 75% | 77.44d |  | 2024-04-08 | 2025-02-04 | 270.86d |  |  | 161.31h | 74.22h | No | Documentation & Training | 2024-04-08 | 2024-04-08 | 2025-03-31 |  |  |  |  |  |  |  |  |  |  |  |  |  |
| 4 | 1.1.1.1 | **ZnNi Line Methods for Analysis Documentation in place** |  | 302.31d | 2024-04-09 A | 2025-06-05 |  | 100% |  | 2025-05-29 | 2024-04-08 | 2025-01-13 |  |  |  | 33.5h | 33.5h | No | Documentation & Training | 2024-04-09 | 2024-04-09 | 2025-03-24 |  |  |  |  |  |  |  |  |  |  |  |  |  |
| 5 | 1.1.1.1.1 | **ZnNi Line Titration Methods** |  | 31.03d | 2024-04-09 A | 2024-05-22 A |  | 100% |  |  |  |  |  |  |  | 6.5h | 6.5h | No |  |  | 2024-04-09 | 2024-09-25 |  |  |  |  |  |  |  |  |  |  |  |  |  |
| 6 | 1.1.1.1.1.1 | **ZnNi Line Titration Analysis Gate 1 Approval to proceed** |  | 0.5d | 2024-04-09 A | 2024-04-09 A |  | 100% |  |  |  |  |  |  |  | 1h | 1h | No |  | 2024-04-09 | 2024-04-09 | 2024-04-09 | 2024-04-09 |  |  |  |  |  |  |  |  |  |  |  |  |
| 7 | 1.1.1.1.1.1.1 | ZnNi Line Titration Analysis Draft work package & PID, requirements agreed |  | 0.5d | 2024-04-09 A | 2024-04-09 A |  | 100% |  |  |  |  |  |  | James Fleming [25%] | 1h | 1h | No |  | 2024-04-09 | 2024-04-09 | 2024-04-09 | 2024-04-09 | No | No | No | No | Yes | -1 | 1 | -1 | -1 | 1 |  |  |
| 8 | 1.1.1.1.1.2 | **ZnNi Line Titration Analysis Gate 4 – approval to start work** |  | 26d | 2024-04-12 A | 2024-05-17 A |  | 100% |  |  |  |  |  |  |  | 3.5h | 3.5h | No |  | 2024-04-12 | 2024-04-12 | 2024-05-20 | 2024-09-23 |  |  |  |  |  |  |  |  |  |  |  |  |
| 9 | 1.1.1.1.1.2.1 | ZnNi Line Titration Analysis Draft complete |  | 14.2d | 2024-04-12 A | 2024-05-02 A |  | 100% |  |  |  |  |  | start no earlier than 2024-04-12 | Jo Dunford [1.76%] | 2h | 2h | No |  | 2024-04-12 | 2024-04-12 | 2024-05-03 | 2024-07-19 | No | No | No | No | Yes | -1 | 1 | -1 |  | 1 | 77 |  |
| 10 | 1.1.1.1.1.2.2 | ZnNi Line Titration Analysis Document Validation complete |  | 6d | 2024-05-10 A | 2024-05-17 A | 9 | 100% |  |  |  |  |  |  | Jo Dunford [3.12%] | 1.5h | 1.5h | No |  | 2024-09-02 | 2024-05-10 | 2024-05-20 | 2024-09-23 | No | No | No | No | Yes |  | 1 |  |  | 1 | 126 | 115 |
| 11 | 1.1.1.1.1.3 | **ZnNi Line Titration Analysis Gate 5 Approval to handover to SF** |  | 1d | 2024-05-20 A | 2024-05-20 A |  | 100% |  |  |  |  |  |  |  | 1h | 1h | No |  | 2024-05-20 | 2024-05-20 | 2024-05-21 | 2024-05-20 |  |  |  |  |  |  |  |  |  |  |  |  |
| 12 | 1.1.1.1.1.3.1 | ZnNi Line Titration Analysis Final sign off & upload |  | 1d | 2024-05-20 A | 2024-05-20 A | 10 | 100% |  |  |  |  |  |  | Jo Dunford [12.5%] | 1h | 1h | No |  | 2024-09-02 | 2024-05-20 | 2024-05-21 | 2024-09-23 | No | No | No | No | Yes |  | 1 |  |  | 1 | 125 | 105 |
| 13 | 1.1.1.1.1.4 | **ZnNi Line Titration Analysis Gate 6 – Approval to close project** |  | 1.03d | 2024-05-21 A | 2024-05-22 A |  | 100% |  |  |  |  |  |  |  | 1h | 1h | No |  | 2024-09-25 | 2024-05-22 | 2024-05-23 | 2024-09-25 |  |  |  |  |  |  |  |  |  |  |  |  |
| 14 | 1.1.1.1.1.4.1 | ZnNi Line Titration Analysis Close Project |  | 1d | 2024-05-21 A | 2024-05-22 A | 12 | 100% |  |  |  |  |  |  | James Fleming [12.5%] | 1h | 1h | No |  | 2024-09-25 | 2024-05-22 | 2024-05-23 | 2024-09-25 | No | No | No | No | Yes |  | 1 | -1 | -1 | 1 | 125 | 126 |
| 15 | 1.1.1.1.2 | **ZnNi Line ICP Analysis** |  | 233.31d | 2024-07-15 A | 2025-06-05 |  | 100% |  | 2025-05-29 | 2024-08-12 | 2025-01-13 |  |  |  | 27h | 27h | No | Documentation & Training | 2024-07-15 | 2024-05-24 | 2024-05-27 | 2025-03-24 |  |  |  |  |  |  |  |  |  |  |  |  |
| 16 | 1.1.1.1.2.1 | ICP Analysis Gate 1 - Approval to continue workpackage |  | 1d | 2024-11-11 A | 2024-11-11 A |  | 100% |  |  |  |  |  | start no earlier than 2024-11-11 | James Fleming [12.5%] | 1h | 1h | No |  | 2024-11-11 | 2024-05-24 | 2024-05-27 | 2024-11-11 | No | No | No | No | Yes |  | 1 | -1 | -1 | 1 | 168 | 171 |
| 17 | 1.1.1.1.2.2 | **ZnNi Line ICP Analysis Gate 4 - Approval to start work** |  | 16d | 2024-11-12 A | 2024-12-03 A |  | 100% |  |  |  |  |  |  |  | 4h | 4h | No |  | 2024-11-12 | 2024-05-28 | 2024-06-03 | 2024-12-03 |  |  |  |  |  |  |  |  |  |  |  |  |
| 18 | 1.1.1.1.2.2.1 | ICP Analysis Review ICP Machine for included methods |  | 1d | 2024-11-12 A | 2024-11-12 A | 16 | 100% |  |  | 2024-11-27 | 2024-11-27 |  |  | Martyn Price [12.5%] | 1h | 1h | No | Documentation & Training | 2024-12-02 | 2024-05-29 | 2024-05-30 | 2024-12-02 | No | No | No | No | Yes |  | 1 | -1 | -1 | 1 | 186 | 187 |
| 19 | 1.1.1.1.2.2.2 | ICP Analysis Create List of missing requirments |  | 1d | 2024-11-13 A | 2024-11-13 A | 18 | 100% |  |  |  |  |  |  | James Fleming [12.5%] | 1h | 1h | No |  | 2024-11-11 | 2024-05-30 | 2024-05-31 | 2024-11-11 | No | No | No | No | Yes |  | 1 | -1 | -1 | 1 | 164 | 165 |
| 20 | 1.1.1.1.2.2.3 | ICP Analysis Order Required Standards |  | 1d | 2024-11-14 A | 2024-11-14 A | 19 | 100% |  |  |  |  |  |  | Chris Ayelott [12.5%] | 1h | 1h | No |  | 2024-11-19 | 2024-05-31 | 2024-06-03 | 2025-03-19 | No | No | No | No | Yes |  | 1 | -1 | -1 | 1 | 289 | 172 |
| 21 | 1.1.1.1.2.2.4 | **ZnNi Line ICP Analysis Review with team** |  | 1d | 2024-12-03 A | 2024-12-03 A |  | 100% |  |  | 2025-01-09 | 2025-01-09 |  |  |  | 1h | 1h | No | Documentation & Training | 2024-12-03 | 2024-06-03 | 2024-06-04 | 2024-12-03 |  |  |  |  |  |  |  |  |  |  |  |  |
| 22 | 1.1.1.1.2.2.4.1 | ICP Analysis Assign responsibilities and actions |  | 1d | 2024-12-03 A | 2024-12-03 A | 19FS+13d | 100% |  |  |  |  |  |  | James Fleming [12.5%] | 1h | 1h | No |  | 2024-11-19 | 2024-06-03 | 2024-06-04 | 2025-03-19 | No | No | No | No | Yes |  | 1 | -1 | -1 | 1 | 288 | 169 |
| 23 | 1.1.1.1.2.3 | **ZnNi Line ICP Analysis Gate 5 - Approval to handover to SF** |  | 227.5d | 2024-07-15 A | 2025-05-28 A |  | 100% |  |  |  |  |  |  |  | 20h | 20h | No |  | 2024-11-20 | 2024-06-04 | 2024-07-08 |  |  |  |  |  |  |  |  |  |  |  |  |  |
| 24 | 1.1.1.1.2.3.1 | ICP Analysis Method A added to ICP |  | 2d | 2024-12-18 A | 2024-12-19 A | 22FS+10d | 100% |  |  |  |  |  |  | Martyn Price [12.5%] | 2h | 2h | No |  | 2024-12-03 | 2024-06-04 | 2024-06-06 | 2024-12-03 | No | No | No | No | Yes |  | 1 | -1 | -1 | 1 | 180 | 182 |
| 25 | 1.1.1.1.2.3.2 | ICP Analysis Method B added to ICP |  | 2d | 2024-12-18 A | 2024-12-19 A | 22FS+10d | 100% |  |  |  |  |  |  | Martyn Price [12.5%] | 2h | 2h | No |  | 2024-12-03 | 2024-06-11 | 2024-06-13 | 2024-12-03 | No | No | No | No | Yes |  | 1 | -1 | -1 | 1 | 173 | 175 |
| 26 | 1.1.1.1.2.3.3 | ICP Analysis Method C added to ICP |  | 2d | 2024-12-18 A | 2024-12-19 A | 22FS+10d | 100% |  |  |  |  |  |  | Martyn Price [12.5%] | 2h | 2h | No |  | 2024-12-03 | 2024-06-13 | 2024-06-17 | 2024-12-03 | No | No | No | No | Yes |  | 1 | -1 | -1 | 1 | 169 | 173 |
| 27 | 1.1.1.1.2.3.4 | ICP Analysis ZnNI Anaysis Methods Doc updated with required methods |  | 1d | 2024-12-20 A | 2024-12-20 A | 26 | 100% |  |  |  |  |  |  | Martyn Price | 8h | 8h | No |  | 2024-12-03 | 2024-06-18 | 2024-12-19 | 2024-12-03 | No | No | No | No | Yes |  | 1 | -1 | -1 | 1 | -16 | 168 |
| 28 | 1.1.1.1.2.3.5 | ICP Analysis Hull Cell Analysis Documentation |  | 5d | 2024-07-15 A | 2024-07-23 A | 9FF | 100% |  |  |  |  |  |  | Jo Dunford [10%] | 4h | 4h | No |  | 2024-09-25 | 2024-06-26 | 2024-07-03 | 2024-09-25 | No | No | No | No | Yes |  | 1 | -1 | -1 | 1 | 84 | 91 |
| 29 | 1.1.1.1.2.3.6 | ICP Analysis Hull Cell Analysis Documentation Finalisation |  | 1d | 2024-09-24 A | 2024-09-25 A | 28FS+45d | 100% |  |  |  |  |  |  | James Bick [25%] | 2h | 2h | No |  | 2024-09-24 | 2024-07-04 | 2024-07-05 | 2024-09-25 | No | No | No | No | Yes |  | 1 |  |  | 1 | 82 | 82 |
| 30 | 1.1.1.1.2.3.7 | ICP Analysis Methods updated to INS-GLO-0199 Approved | milestone | 0d | 2025-05-28 A | 2025-05-28 A | 29FS+175d | 100% |  |  |  |  |  |  | Mike Warriner |  |  | No |  | 2025-05-28 | 2024-07-08 | 2024-07-08 |  | No | No | No | No | Yes |  | 1 | -1 | -1 | 1 |  | 324 |

| ID | WBS | Task | Type | Duration | Start | Finish | Predecessors | Complete | Remaining | Actual start | Actual finish | Baseline 1 start | Baseline 1 finish | Total slack | Free slack | Constraint | Resources | Work | Actual work | Tasks Due this Month | Actual Task Start | Initial Planned Start | Initial Planned Finish | Tasks Due next Month | Tasks Due this week | Tasks Due next Week | Tasks Due Today | Last Tasks | Actual Task Finish | Task active Day | Number1 | Number2 | Start Difference | Finish Difference | Field | Text30 | Text7 | Text8 |
| --- | --- | --- | --- | --- | --- | --- | --- | --- | --- | --- | --- | --- | --- | --- | --- | --- | --- | --- | --- | --- | --- | --- | --- | --- | --- | --- | --- | --- | --- | --- | --- | --- | --- | --- | --- | --- | --- | --- |
| 31 | 1.1.1.1.2.4 | **ZnNi Line ICP Analysis Gate 6 - Approval to close out Workpackage** |  | 0.81d | 2025-03-12 | 2025-06-05 |  | 100% |  | 2025-05-28 | 2025-05-29 |  |  |  |  |  |  | 2h | 2h | No | 2025-06-03 | 2024-07-09 | 2024-07-12 |  |  |  |  |  |  |  |  |  |  |  |  |  |  |  |
| 32 | 1.1.1.1.2.4.1 | ICP Analysis Methods Update lessons learnt communicated |  | 1d | 2025-05-28 A | 2025-05-29 A | 30 | 100% |  |  |  |  |  |  |  |  | James Fleming [12.5%] | 1h | 1h | No | 2025-06-03 | 2024-07-09 | 2025-03-20 | No | No | No | No | Yes | 2025-06-03 | 1 | -1 | -1 | 329 | 75 | 1 |  |  |  |
| 33 | 1.1.1.1.2.4.2 | ICP Analysis Methods workpackage documentation Closed |  | 1d | 2025-05-28 A | 2025-05-29 A | 30 | 100% |  |  |  |  |  |  |  |  | James Fleming [12.5%] | 1h | 1h | No |  | 2024-07-10 | 2024-07-11 | No | No | No | No | Yes |  | 1 | -1 | -1 |  |  | 1 |  |  |  |
| 34 | 1.1.1.1.2.4.3 | ICP Analysis INST-GLO-0199 update WP Closed | milestone | 0d | 2025-05-29 A | 2025-05-29 A | 33 | 100% |  |  |  |  |  |  |  |  | James Fleming |  |  | No |  | 2024-07-12 | 2024-07-12 | No | No | No | No | Yes |  | 1 | -1 | -1 |  |  | 1 |  |  |  |
| 35 | 1.1.1.2 | **ZnNi Line Flysheet Implementation complete** |  | 124d | 2024-04-08 A | 2024-09-26 A |  | 100% |  |  |  | 2024-04-08 | 2024-08-20 |  |  |  |  | 12h | 12h | No | 2024-04-08 | 2024-04-08 | 2024-05-02 |  |  |  |  |  | 2024-09-26 |  |  |  |  | 147 |  | Documentation & Training |  |  |
| 36 | 1.1.1.2.1 | ZnNi Line Flysheet Format Complete |  | 15d | 2024-04-08 A | 2024-04-26 A |  | 100% |  |  |  | 2024-04-08 | 2024-04-26 |  |  |  | Lloyd Harrington | 10h | 10h | No | 2024-04-08 | 2024-04-08 | 2024-04-26 | No | No | No | No | Yes | 2024-04-26 | 1 | -1 | -1 |  |  | 1 | Documentation & Training | -1 | -1 |
| 37 | 1.1.1.2.2 | ZnNi Line Flysheet Reference to analysis methods documentation |  | 1d | 2024-09-26 A | 2024-09-26 A | 14 | 100% |  |  |  | 2024-08-20 | 2024-08-20 |  |  |  | Lloyd Harrington | 1h | 1h | No | 2024-09-26 | 2024-09-26 | 2024-09-26 | No | No | No | No | Yes | 2024-09-26 | 1 | -1 | -1 |  |  | 1 | Documentation & Training |  |  |
| 38 | 1.1.1.2.3 | ZnNi Line Flysheet Release flysheet to team | milestone | 1d | 2024-05-02 A | 2024-05-02 A | 37 | 100% |  |  |  | 2024-05-02 | 2024-05-02 |  |  |  | Lloyd Harrington | 1h | 1h | No | 2024-05-02 | 2024-05-02 | 2024-05-02 | No | No | No | No | Yes | 2024-05-02 | 1 | -1 | -1 |  |  | 1 | Documentation & Training | -1 | -1 |
| 39 | 1.1.1.3 | **Surface Finish Table 1 Implementation complete** |  | 245.33d | 2024-07-15 A | 2025-06-23 |  | 30% | 170.75d |  |  | 2024-04-08 | 2024-08-05 | 270.86d |  |  |  | 104.81h | 17.73h | No | 2024-12-04 | 2024-07-15 | 2024-07-15 |  |  |  |  |  |  |  |  |  | 142 |  |  | Documentation & Training |  |  |
| 40 | 1.1.1.3.1 | Surface Finish Review current state |  | 1d | 2024-07-15 A | 2024-07-15 A |  | 100% |  |  |  | 2024-07-15 | 2024-07-15 |  |  |  | James Bick | 2h | 2h | No | 2024-12-04 | 2024-07-15 | 2024-07-15 | No | No | No | No | Yes | 2024-12-04 | 1 | -1 | -1 | 142 | 142 | 1 | Documentation & Training | -1 | -1 |
| 41 | 1.1.1.3.2 | Surface Finish Table 1 Identify Issues |  | 1d | 2024-07-15 A | 2024-07-15 A | 40 | 100% |  |  |  | 2024-07-15 | 2024-07-15 |  |  |  | James Bick | 2h | 2h | No | 2024-07-15 | 2024-07-15 | 2024-07-15 | No | No | No | No | Yes | 2024-07-15 | 1 | -1 | -1 |  |  | 1 | Documentation & Training | -1 | -1 |
| 42 | 1.1.1.3.3 | **Surface Finish Table 1 Rectification work** |  | 1d | 2024-09-24 A | 2024-09-24 A |  | 100% |  |  |  | 2024-07-15 | 2024-07-15 |  |  |  |  | 8h | 8h | No | 2024-09-11 | 2024-07-16 | 2024-07-19 |  |  |  |  |  | 2024-09-11 |  |  |  |  |  |  | Documentation & Training |  |  |
| 43 | 1.1.1.3.3.1 | Surface Finish Table 1 Lawarance Gauge Diviations |  | 1d | 2024-09-24 A | 2024-09-24 A | 41FS+50d | 100% |  |  |  |  |  |  |  |  | James Bick [25%] | 2h | 2h | No | 2024-09-11 | 2024-07-16 | 2024-07-16 | No | No | No | No | Yes | 2024-09-11 | 1 | -1 | -1 | 57 | 57 | 1 |  |  |  |
| 44 | 1.1.1.3.3.2 | Surface Finish Table 1 Analysis Methods Referencing |  | 1d | 2024-09-24 A | 2024-09-24 A | 41FS+50d | 100% |  |  |  |  |  |  |  |  | James Bick [25%] | 2h | 2h | No | 2024-09-11 | 2024-07-17 | 2024-07-17 | No | No | No | No | Yes | 2024-09-11 | 1 | -1 | -1 | 56 | 56 | 1 |  |  |  |
| 45 | 1.1.1.3.3.3 | Surface Finish Table 1 XRF Referencing |  | 1d | 2024-09-24 A | 2024-09-24 A | 41FS+50d | 100% |  |  |  |  |  |  |  |  | James Bick [25%] | 2h | 2h | No | 2024-09-11 | 2024-07-18 | 2024-07-18 | No | No | No | No | Yes | 2024-09-11 | 1 | -1 | -1 | 55 | 55 | 1 |  |  |  |
| 46 | 1.1.1.3.3.4 | Surface Finish Table 1 Hull Cell Referencing |  | 1d | 2024-09-24 A | 2024-09-24 A | 41FS+50d | 100% |  |  |  |  |  |  |  |  | James Bick [25%] | 2h | 2h | No | 2024-09-11 | 2024-07-19 | 2024-07-19 | No | No | No | No | Yes | 2024-09-11 | 1 | -1 | -1 | 54 | 54 | 1 |  |  |  |
| 47 | 1.1.1.3.4 | **Surface Finish Table 1 Rework Scoping** |  | 78.81d | 2025-02-28 A | 2025-06-18 |  | 22% | 61.51d |  |  |  |  | 0d |  |  | Kurtis Parsons [12.5%] | 89.81h | 5.62h | No | 2025-03-03 | 2024-07-18 | 2024-08-21 | No | Yes | No | Yes | Yes |  |  |  |  |  |  |  |  |  |  |
| 48 | 1.1.1.3.4.1 | Surface Finish Table 1 Rework Time line agreed |  | 1d | 2025-02-28 A | 2025-03-03 A | 46FS+112d | 100% |  |  |  |  |  |  |  |  | James Fleming [12.5%] | 1h | 1h | No | 2025-03-03 | 2024-07-18 | 2024-07-19 | No | No | No | No | Yes | 2025-03-03 | 1 | -1 | -1 | 228 | 227 | 1 |  |  |  |
| 49 | 1.1.1.3.4.2 | Surface Finish Table 1 Rework Period |  | 40d | 2025-03-03 A | 2025-06-18 | 48FS+30d | 20% | 32d |  |  |  |  | 0d |  | start no earlier than 2025-03-03 | James Bick [3.12%] | 10h | 2h | No | 2025-03-03 | 2024-07-22 | 2024-08-14 | No | No | No | No | Yes |  | 1 | -1 | -1 | 224 |  | 1 |  |  |  |
| 50 | 1.1.1.3.5 | Surface Finish Table 1 Final Review & Approval |  | 2d | 2025-03-26 A | 2025-06-20 | 49 | 10% | 1.8d |  |  |  |  | 270.86d | 0d |  | James Fleming [6.25%] | 1h | 0.1h | No |  | 2024-08-15 | 2024-08-19 | No | No | No | No | Yes |  | 1 | -1 | -1 |  |  | 1 |  |  |  |
| 51 | 1.1.1.3.6 | Surface Finish Table 1 released |  | 1d | 2025-06-20 | 2025-06-23 | 50 |  |  |  |  | 2024-08-05 | 2024-08-05 | 270.86d | 0d |  | Martyn Price [25%] | 2h |  | No |  | 2024-08-20 | 2024-08-20 | No | No | No | No | Yes |  |  | -1 | -1 |  |  |  | Documentation & Training |  |  |
| 52 | 1.1.1.3.7 | Surface Finish Table 1 Work Package Complete | milestone | 0d | 2025-06-23 | 2025-06-23 | 51 |  |  |  |  |  |  | 270.86d |  |  | James Fleming |  |  | No |  | 2024-08-21 | 2024-08-21 | No | No | No | No | Yes |  |  | -1 | -1 |  |  |  |  |  |  |
| 53 | 1.1.1.4 | **ZnNi Line Complexing Agent additions Documentation in place** |  | 3d | 2024-04-29 A | 2024-05-01 A |  | 100% |  |  |  | 2024-04-08 | 2024-08-20 |  |  |  |  | 2h | 2h | No | 2024-04-29 | 2024-04-29 | 2024-05-01 |  |  |  |  |  | 2024-05-01 |  |  |  |  |  |  | Documentation & Training |  |  |
| 54 | 1.1.1.4.1 | ZnNi Line Complexing Agent Calculation created in flysheet |  | 1d | 2024-04-29 A | 2024-04-29 A | 36 | 100% |  |  |  | 2024-04-29 | 2024-04-29 |  |  |  | Lloyd Harrington [12.5%] | 1h | 1h | No | 2024-04-29 | 2024-04-29 | 2024-04-29 | No | No | No | No | Yes | 2024-04-29 | 1 | -1 | -1 |  |  | 1 | Documentation & Training | -1 |  |
| 55 | 1.1.1.4.2 | ZnNi Line Complexing Agent Referenced/added in/to Analysis documentation |  | 1d | 2024-05-01 A | 2024-05-01 A |  | 100% |  |  |  | 2024-05-01 | 2024-08-20 |  |  |  | Jo Dunford | 1h | 1h | No | 2024-05-01 | 2024-05-01 | 2024-05-01 | No | No | No | No | Yes | 2024-05-01 | 1 | -1 | -1 |  |  | 1 | Documentation & Training | -1 | -1 |

Notes:
- 37: JF 290724 Once the Analysis document has been released then the reference can be updated in the fly sheet
- 38: Hello! Just looking at the flysheets, we're just missing a tiny bit of info: / 1) Paragraph reference for analysis method / 2) Updated information on the filtration system / 3) Final sign off from Jo & Lloyd / JF 240724 I am just waiting for a teams response from Jodie on getting this closed out CoP week 30

| ID | WBS | Task | Type | Duration | Start | Finish | Predecessors | Complete | Remaining | Baseline 1 start | Baseline 1 finish | Total slack | Constraint | Resources | Work | Actual work | Tasks Due this Month | Text30 | Actual Task Start | Initial Planned Start | Initial Planned Finish | Start Difference | Tasks Due next Month | Tasks Due this week | Tasks Due next Week | Tasks Due Today | Last Tasks | Actual Task Finish | Task active Day | Number1 | Number2 | Finish Difference | Field |
| --- | --- | --- | --- | --- | --- | --- | --- | --- | --- | --- | --- | --- | --- | --- | --- | --- | --- | --- | --- | --- | --- | --- | --- | --- | --- | --- | --- | --- | --- | --- | --- | --- | --- |
| 56 | 1.1.1.5 | **Surface Finish XRF Operating SoP** |  | 203.56d | 2024-08-01 A | 2025-05-13 A |  | 100% |  | 2024-07-22 | 2024-07-26 |  |  |  | 9h | 9h | No | Documentation & Training | 2024-09-02 | 2024-08-22 | 2024-09-05 | 11 |  |  |  |  |  |  |  |  |  |  |  |
| 57 | 1.1.1.5.1 | **Surface Finish XRF Operating SoP Kick off meeting completed** |  | 203.56d | 2024-08-01 A | 2025-05-13 A |  | 100% |  | 2024-07-22 | 2024-07-26 |  |  |  | 9h | 9h | No | Documentation & Training | 2025-09-02 | 2024-08-22 | 2024-09-05 |  |  |  |  |  |  |  |  |  |  |  |  |
| 58 | 1.1.1.5.1.1 | Surface Finish XRF Operating SoP Requirements identified& agreed |  | 1d | 2024-09-30 A | 2024-09-30 A |  | 100% |  | 2024-07-22 | 2024-07-22 |  | start no earlier than 2024-09-30 | James Fleming | 1h | 1h | No | Documentation & Training | 2024-09-02 | 2024-08-22 | 2024-08-22 | 11 | No | No | No | No | Yes | 2024-09-02 | 1 | -1 | -1 | 11 | 1 |
| 59 | 1.1.1.5.1.2 | Surface Finish XRF Operating SoP Documentation of process complete |  | 5d | 2024-08-01 A | 2024-08-07 A | 58 | 100% |  | 2024-07-23 | 2024-07-24 |  |  | Jo Dunford [5%] | 2h | 2h | No | Documentation & Training | 2024-08-22 | 2024-08-23 | 2024-08-30 | -1 | No | No | No | No | Yes | 2024-09-16 | 1 | -1 | -1 | 17 | 1 |
| 60 | 1.1.1.5.1.3 | Surface Finish XRF Operating SoP Documentation of process finalized |  | 1d | 2024-09-24 A | 2024-09-24 A | 59FS+33d | 100% |  |  |  |  |  | Conor Parsons [25%] | 2h | 2h | No |  | 2024-09-23 | 2024-09-02 | 2024-09-02 | 21 | No | No | No | No | Yes | 2025-02-21 | 1 |  |  | 172 | 1 |
| 61 | 1.1.1.5.1.4 | Surface Finish XRF Operating SoP Competency form development |  | 17d | 2025-02-24 A | 2025-03-31 A | 59FS+138d | 100% |  |  |  |  | start no earlier than 2025-02-24 | James Bick [1.47%] | 2h | 2h | No |  | 2025-03-03 | 2024-09-03 | 2024-09-03 | 181 | No | No | No | No | Yes | 2025-03-24 | 1 | -1 | -1 | 202 | 1 |
| 62 | 1.1.1.5.1.5 | Surface Finish XRF Operating SoP Competency form creation complete | milestone | 0d | 2025-03-31 A | 2025-03-31 A | 61 | 100% |  |  |  |  |  | James Bick |  |  | No |  | 2025-03-24 | 2024-09-03 | 2024-09-03 | 202 | No | No | No | No | Yes | 2025-03-24 | 1 |  |  | 202 | 1 |
| 63 | 1.1.1.5.1.6 | Surface Finish XRF Operating SoP & Compentency Form Approved |  | 5d | 2025-03-31 A | 2025-04-07 A | 61 | 100% |  | 2024-07-25 | 2024-07-25 |  |  | Lloyd Harrington [2.5%] | 1h | 1h | No | Documentation & Training | 2025-04-01 | 2024-09-04 | 2024-09-04 | 209 | No | No | No | No | Yes | 2025-04-01 | 1 | -1 | -1 | 209 | 1 |
| 64 | 1.1.1.5.1.7 | Surface Finish XRF Operating SoP & Compentency Form Uploaded to OSR/CHEOPs | milestone | 1d | 2025-04-14 A | 2025-04-15 A | 63FS+5d | 100% |  | 2024-07-26 | 2024-07-26 |  |  | James Fleming | 1h | 1h | No | Documentation & Training | 2025-04-14 | 2024-09-05 | 2024-09-05 | 221 | No | No | No | No | Yes | 2025-04-14 | 1 | -1 | -1 | 221 | 1 |
| 65 | 1.1.1.5.1.8 | Surface Finish XRF Operating SoP Work Package Closed | milestone | 0d | 2025-05-13 A | 2025-05-13 A | 64FS+20d | 100% |  |  |  |  |  | James Fleming |  |  | No |  | 2025-05-20 | 2024-09-05 | 2024-09-05 | 257 | No | No | No | No | Yes | 2025-05-20 | 1 | -1 | -1 | 257 | 1 |
| 66 | 1.1.2 | **ZnNi Line Critical Training Carried Out** |  | 67.59d | 2024-08-13 A | 2024-11-14 A |  | 100% |  |  |  |  |  |  | 6h | 6h | No |  | 2024-08-13 | 2024-08-13 | 2024-11-14 |  | No | No | No | No | Yes | 2024-11-14 |  |  |  |  |  |
| 67 | 1.1.2.1 | **ZnNi Line Critical Training Surtec Solution Training Carried Out** |  | 2.78d | 2024-08-13 A | 2024-08-15 A |  | 100% |  |  |  |  |  |  | 4h | 4h | No |  | 2024-08-13 | 2024-08-13 | 2024-08-15 |  | No | No | No | No | Yes | 2024-08-15 |  |  |  |  |  |
| 68 | 1.1.2.1.1 | ZnNi Line Critical Training Surtec Solution Training Coordination |  | 2d | 2024-08-13 A | 2024-08-14 A | 9FS+16d | 100% |  |  |  |  |  | James Fleming [25%] | 4h | 4h | No |  | 2024-08-13 | 2024-08-13 | 2024-08-14 |  | No | No | No | No | Yes | 2024-08-14 | 1 | -1 | -1 |  | 1 |
| 69 | 1.1.2.1.2 | ZnNi Line Critical Training Surtec Solution Training Complete | milestone | 0d | 2024-08-15 A | 2024-08-15 A | 68FS+1d | 100% |  |  |  |  |  | James Fleming [25%] |  |  | No |  | 2024-08-15 | 2024-08-15 | 2024-08-15 |  | No | No | No | No | Yes | 2024-08-15 | 1 | -1 | -1 |  | 1 |
| 70 | 1.1.2.2 | **ZnNi Line Critical Training Thermo Fischer XRF Solution Analysis Training Carried Out** |  | 2.81d | 2024-11-11 A | 2024-11-14 A |  | 100% |  |  |  |  |  |  | 2h | 2h | No |  | 2024-11-11 | 2024-11-11 | 2024-11-14 |  | No | No | No | No | Yes | 2024-11-14 |  |  |  |  |  |
| 71 | 1.1.2.2.1 | ZnNi Line Critical Training Thermo Fischer Training Coordination |  | 1d | 2024-11-11 A | 2024-11-12 A | 69FS+62d | 100% |  |  |  |  |  | James Fleming [25%] | 2h | 2h | No |  | 2024-11-11 | 2024-11-11 | 2024-11-12 |  | No | No | No | No | Yes | 2024-11-12 | 1 | -1 | -1 |  | 1 |
| 72 | 1.1.2.2.2 | ZnNi Line Critical Training Thermo Fischer training Complete | milestone | 0d | 2024-11-14 A | 2024-11-14 A | 71FS+2d | 100% |  |  |  |  |  | James Fleming |  |  | No |  | 2024-11-14 | 2024-11-14 | 2024-11-14 |  | No | No | No | No | Yes | 2024-11-14 | 1 | -1 | -1 |  | 1 |
| 73 | 1.1.3 | **SF Investment Strategy** |  | 308.59d? | 2025-04-30 A | 2026-07-07 |  | 9% | 280.56d? |  |  |  |  |  | 338.67h | 54.3h | No |  | 2025-04-15 | 2025-04-30 | 2026-07-07 | -7 | No | No | No | No | Yes |  | 1 |  |  |  | 1 |
| 74 | 1.1.3.1 | **SF Investment Strategy OEE & OLE Application** |  | 125.34d? | 2025-04-30 A | 2026-07-07 |  | 17% | 257.64d? |  |  |  |  |  | 338.67h | 54.3h | No |  | 2025-04-30 | 2025-04-30 | 2026-07-07 |  | No | No | No | No | Yes | 2026-07-07 |  |  |  |  |  |
| 75 | 1.1.3.1.1 | **SF Investment Strategy OEE & OLE Application Planning for all production lines** |  | 1.72d | 2025-04-30 A | 2025-05-02 A |  | 100% |  |  |  |  |  |  | 2h | 2h | No |  | 2025-04-30 | 2025-04-30 | 2025-05-02 |  | No | No | No | No | Yes | 2025-05-02 |  |  |  |  |  |
| 76 | 1.1.3.1.1.1 | SF Investment Strategy OEE & OLE Application (PID) |  | 1d | 2025-04-30 A | 2025-05-01 A | 72FS+119d | 100% |  |  |  |  |  | James Fleming [12.5%] | 1h | 1h | No |  | 2025-04-30 | 2025-04-30 | 2025-05-01 |  | No | No | No | No | Yes | 2025-05-01 | 1 |  |  |  | 1 |
| 77 | 1.1.3.1.1.2 | SF Investment Strategy OEE & OLE Application Planning Complete | milestone | 0d | 2025-05-01 A | 2025-05-01 A | 76 | 100% |  |  |  |  |  | James Fleming |  |  | No |  | 2025-05-01 | 2025-05-01 | 2025-05-01 |  | No | No | No | No | Yes | 2025-05-01 | 1 |  |  |  | 1 |
| 78 | 1.1.3.1.1.3 | SF Investment Strategy OEE & OLE Application Planning Review Meeting |  | 1d | 2025-05-01 A | 2025-05-02 A | 77 | 100% |  |  |  |  |  | James Fleming [12.5%] | 1h | 1h | No |  | 2025-05-01 | 2025-05-01 | 2025-05-02 |  | No | No | No | No | Yes | 2025-05-02 | 1 |  |  |  | 1 |
| 79 | 1.1.3.1.2 | **SF Investment Strategy OEE & OLE Application Hardware Specification for Zinc Nickel Line** |  | 44.16d | 2025-05-02 A | 2025-07-03 |  | 11% | 39.34d |  |  | 262.72d |  |  | 42h | 1.8h | Yes |  | 2025-07-02 | 2025-05-02 | 2025-05-21 |  | No | No | No | No | Yes |  |  |  |  |  |  |
| 80 | 1.1.3.1.2.1 | SF Investment Strategy OEE & OLE Application Hardware Procurement for Zinc Nickel Line |  | 5d | 2025-06-09 A | 2025-07-03 | 78SF+45d | 20% | 4d |  |  | 262.72d |  | Mukaran Saeed [2.5%] | 1h | 0.2h | Yes |  |  | 2025-05-02 | 2025-05-16 |  | No | No | No | No | Yes |  | 1 |  |  |  | 1 |
| 81 | 1.1.3.1.2.2 | SF Investment Strategy OEE & OLE Application LAN Port Installation |  | 1d | 2025-05-02 A | 2025-06-23 | 78SF+37d | 20% | 0.8d |  |  | 0d |  | IS Team | 8h | 1.6h | No |  |  | 2025-05-02 | 2025-05-05 |  | No | No | No | No | Yes |  | 1 |  |  |  | 1 |
| 82 | 1.1.3.1.2.3 | SF Investment Strategy OEE & OLE Application Hardware Installation for Zinc Nickel Line |  | 2d | 2025-06-23 | 2025-06-25 | 81 |  |  |  |  | 268.72d |  | Germain Forgeuox | 16h |  | No |  |  | 2025-05-16 | 2025-05-20 |  | No | No | No | No | Yes |  |  |  |  |  |  |
| 83 | 1.1.3.1.2.4 | SF Investment Strategy OEE & OLE Application SCADA Network Connection for Zinc Nickel Line |  | 2d | 2025-06-23 | 2025-06-25 | 81 |  |  |  |  | 0d |  | IS Team | 16h |  | No |  |  | 2025-05-16 | 2025-05-20 |  | No | No | No | No | Yes |  |  |  |  |  |  |
| 84 | 1.1.3.1.2.5 | SF Investment Strategy OEE & OLE Application Hardware and SCADA Connection Review Meeting for Zinc Nickel Line |  | 1d | 2025-06-25 | 2025-06-26 | 83 |  |  |  |  | 0d |  | James Fleming [12.5%] | 1h |  | No |  |  | 2025-05-20 | 2025-05-21 |  | No | No | No | No | Yes |  |  |  |  |  |  |
| 85 | 1.1.3.1.2.6 | SF Investment Strategy OEE & OLE Application Hardware and SCADA Connection for Zinc Nickel Complete | milestone | 0d | 2025-06-26 | 2025-06-26 | 84 |  |  |  |  | 267.91d |  | James Fleming |  |  | No |  |  | 2025-05-21 | 2025-05-21 |  | No | No | No | No | Yes |  |  |  |  |  |  |

Notes:
- 56: JF 080824 This Can't be started until the Hull Cell Analysis documentation is complete, target is end of wk 32. Once this is complete we can plan for the XRF SoP for methods and we also need to check that the calibration aspect is covered as part of this activity.

| ID | WBS | Task | Type | Duration | Start | Finish | Predecessors | Complete | Remaining | Total slack | Free slack | Resources | Work | Actual work | Tasks Due this Month | Tasks Due next Month | Tasks Due this week | Tasks Due next Week | Tasks Due Today | Last Tasks | Initial Planned Start | Initial Planned Finish | Actual Task Start | Task active Day | Field | Actual Task Finish | Start Difference | Finish Difference |
| --- | --- | --- | --- | --- | --- | --- | --- | --- | --- | --- | --- | --- | --- | --- | --- | --- | --- | --- | --- | --- | --- | --- | --- | --- | --- | --- | --- | --- |
| 86 | 1.1.3.1.3 | **SF Investment Strategy OEE & OLE Application MES ZnNI Routings (Contingency)** |  | 26d | 2025-06-26 A | 2025-08-01 |  | 33% | 17.33d | 0d |  |  | 96h | 32h | No | No | No | No | No | Yes | 2025-06-26 | 2025-07-14 |  |  |  |  |  |  |
| 87 | 1.1.3.1.3.1 | SF Investment Strategy OEE & OLE Application Dummy Routing for ZnNi |  | 10d | 2025-06-26 A | 2025-07-18 | 84FS+10d | 40% | 6d | 0d |  | Matt Wetton | 80h | 32h | Yes | No | No | No | No | Yes | 2025-06-26 | 2025-07-10 | 2025-06-26 | 1 | 1 |  |  |  |
| 88 | 1.1.3.1.3.2 | SF Investment Strategy OEE & OLE Application Dummy Layout Proposal to Man Eng |  | 1d | 2025-07-30 | 2025-07-31 | 87FS+8d |  |  | 0d |  | Matt Wetton | 8h |  | Yes | No | No | Yes | No | No | 2025-07-10 | 2025-07-11 | 2025-07-10 |  |  |  |  |  |
| 89 | 1.1.3.1.3.3 | SF Investment Strategy OEE & OLE Application Dummy Layout Approved by Man Eng | milestone | 0d | 2025-07-31 | 2025-07-31 | 88 |  |  | 0d |  | James Fleming |  |  | Yes | No | No | Yes | No | No | 2025-07-11 | 2025-07-11 |  |  |  |  |  |  |
| 90 | 1.1.3.1.3.4 | SF Investment Strategy OEE & OLE Application Layout Engagement/Infrustucture/Process |  | 1d | 2025-07-31 | 2025-08-01 | 89 |  |  | 0d |  | Matt Wetton | 8h |  | No | Yes | No | Yes | No | No | 2025-07-11 | 2025-07-14 |  |  |  |  |  |  |
| 91 | 1.1.3.1.3.5 | SF Investment Strategy OEE & OLE Application Layout Roll Out | milestone | 0d | 2025-08-01 | 2025-08-01 | 90 |  |  | 0d |  | James Fleming |  |  | No | Yes | No | Yes | No | No | 2025-07-14 | 2025-07-14 |  |  |  |  |  |  |
| 92 | 1.1.3.1.4 | **SF Investment Strategy OEE & OLE Application Data Integration for Zinc Nickel Line** |  | 73.09d | 2025-05-02 A | 2025-08-13 |  | 32% | 49.84d | 0d |  |  | 11h | 2.1h | No | No | No | No | No | No | 2025-05-02 | 2025-06-12 |  |  |  |  |  |  |
| 93 | 1.1.3.1.4.1 | SF Investment Strategy OEE & OLE Application Data Integration strategy for Zinc Nickel Line |  | 1d | 2025-08-01 | 2025-08-04 | 91 |  |  | 0d |  | James Fleming [12.5%] | 1h |  | No | Yes | No | No | No | No | 2025-05-21 | 2025-05-22 |  |  |  |  |  |  |
| 94 | 1.1.3.1.4.2 | SF Investment Strategy OEE & OLE Application Data Integration Zinc Nickel Line viewable on Power BI |  | 3d | 2025-05-02 A | 2025-08-05 | 93 | 67% | 1d | 0d |  | Matt Wetton [22.5%] | 3h | 1.2h | No | Yes | No | No | No | No | 2025-05-02 | 2025-05-09 |  | 1 | 1 |  |  |  |
| 95 | 1.1.3.1.4.3 | SF Investment Strategy OEE & OLE Application Data Integration Zinc Nickel Line viewable on Power BI inc. ancilary machines |  | 3d | 2025-06-26 A | 2025-08-07 | 94 | 33% | 2d | 0d |  | Matt Wetton [15%] | 3h | 0.6h | No | Yes | No | No | No | No | 2025-05-21 | 2025-05-28 |  | 1 | 1 |  |  |  |
| 96 | 1.1.3.1.4.4 | SF Investment Strategy OEE & OLE Application Data Integration Zinc Nickel Line viewable on Power BI for people data |  | 3d | 2025-06-26 A | 2025-08-12 | 95 | 17% | 2.5d | 0d |  | James Fleming [13.5%] | 3h | 0.3h | No | Yes | No | No | No | No | 2025-05-21 | 2025-05-28 |  | 1 | 1 |  |  |  |
| 97 | 1.1.3.1.4.5 | SF Investment Strategy OEE & OLE Application Data Integration Review Meeting for Zinc Nickel Line |  | 1d | 2025-08-12 | 2025-08-13 | 96 |  |  | 0d |  | James Fleming [12.5%] | 1h |  | No | Yes | No | No | No | No | 2025-06-11 | 2025-06-12 |  |  |  |  |  |  |
| 98 | 1.1.3.1.4.6 | SF Investment Strategy OEE & OLE Application Data Integration for Zinc Nickel Complete | milestone | 0d | 2025-08-13 | 2025-08-13 | 97 |  |  | 0d |  | James Fleming |  |  | No | Yes | No | No | No | No | 2025-06-12 | 2025-06-12 |  |  |  |  |  |  |
| 99 | 1.1.3.1.5 | **SF Investment Strategy OEE & OLE Application Development for Zinc Nickel Line** |  | 44.28d | 2025-06-12 A | 2025-08-13 |  | 36% | 28.18d | 233.78d |  |  | 35.67h | 16h | No | Yes | No | No | No | No | 2025-06-12 | 2025-06-27 | 2025-07-11 |  |  |  |  |  |
| 100 | 1.1.3.1.5.1 | SF Investment Strategy OEE & OLE Application Development - OEE Feature production/Aggregate |  | 10d | 2025-07-11 A | 2025-07-25 A | 93 | 100% |  |  |  | Matt Wetton [10%] | 8h | 8h | Yes | No | Yes | No | No | No | 2025-06-12 | 2025-06-26 | 2025-07-11 | 1 | 1 | 2025-07-25 | 29 | 29 |
| 101 | 1.1.3.1.5.2 | SF Investment Strategy OEE & OLE Application Development - OLE Feature production/Aggregate |  | 34d | 2025-06-12 | 2025-07-30 | 100FS-31d |  |  | 243.06d | 0d | Matt Wetton [6.86%] | 18.67h |  | Yes | No | No | Yes | No | No | 2025-06-12 | 2025-06-26 |  |  |  |  |  |  |
| 102 | 1.1.3.1.5.3 | SF Investment Strategy OEE & OLE Application Development - ROI Feature production/Aggregate |  | 10d | 2025-07-11 A | 2025-07-25 A | 98 | 100% |  |  |  | Matt Wetton [10%] | 8h | 8h | Yes | No | Yes | No | No | No | 2025-06-12 | 2025-06-26 | 2025-07-11 | 1 | 1 | 2025-07-25 | 29 | 29 |
| 103 | 1.1.3.1.5.4 | SF Investment Strategy OEE & OLE Application Development Review Meeting for Zinc Nickel Line |  | 1d | 2025-07-30 | 2025-07-31 | 101 |  |  | 243.19d |  | James Fleming [12.5%] | 1h |  | Yes | No | No | Yes | No | No | 2025-06-26 | 2025-06-27 |  |  |  |  |  |  |
| 104 | 1.1.3.1.5.5 | SF Investment Strategy OEE & OLE Application Development for Zinc Nickel Line Complete | milestone | 0d | 2025-08-13 | 2025-08-13 | 98 |  |  | 0d |  | James Fleming |  |  | No | Yes | No | No | No | No | 2025-06-26 | 2025-06-26 |  |  |  |  |  |  |
| 105 | 1.1.3.1.6 | **SF Investment Strategy OEE & OLE Application Testing for Zinc Nickel Line** |  | 49.28d | 2025-06-12 | 2025-08-20 |  |  |  | 49.28d |  |  | 4h |  | No | No | No | No | No | Yes | 2025-06-26 | 2025-08-27 |  |  |  |  |  |  |
| 106 | 1.1.3.1.6.1 | SF Investment Strategy OEE & OLE Application Test Schedule for Zinc Nickel Line |  | 34d | 2025-06-12 | 2025-07-30 | 101SS |  |  | 243.06d | 0d | Matt Wetton [0.73%] | 2h |  | Yes | No | No | Yes | No | No | 2025-08-13 | 2025-08-27 |  |  |  |  |  |  |
| 107 | 1.1.3.1.6.2 | SF Investment Strategy OEE & OLE Application Testing Review Meeting for Zinc Nickel Line |  | 1d | 2025-07-30 | 2025-07-31 | 106 |  |  | 243.06d |  | Matt Wetton [25%] | 2h |  | Yes | No | No | Yes | No | No | 2025-08-13 | 2025-08-27 |  |  |  |  |  |  |
| 108 | 1.1.3.1.6.3 | SF Investment Strategy OEE & OLE Application Testing for Zinc Nickel Line Complete | milestone | 0d | 2025-08-20 | 2025-08-20 | 104FS+5d |  |  | 0d |  | James Fleming |  |  | No | Yes | No | No | No | No | 2025-06-26 | 2025-06-26 |  |  |  |  |  |  |
| 109 | 1.1.3.1.7 | **SF Investment Strategy OEE & OLE Application Documentation Set** |  | 20.28d | 2025-07-30 | 2025-08-27 |  |  |  | 223.78d |  |  | 6h |  | No | No | No | No | No | Yes | 2025-08-13 | 2025-08-29 |  |  |  |  |  |  |
| 110 | 1.1.3.1.7.1 | SF Investment Strategy OEE & OLE Application Requirements & Enhancements |  | 1d | 2025-07-30 | 2025-07-31 | 106 |  |  | 243.19d |  | James Fleming [25%] | 2h |  | Yes | No | No | Yes | No | No | 2025-08-13 | 2025-08-14 |  |  |  |  |  |  |
| 111 | 1.1.3.1.7.2 | SF Investment Strategy OEE & OLE Application User Guide |  | 5d | 2025-08-20 | 2025-08-27 | 108 |  |  | 223.78d | 0d | Matt Wetton [10%] | 4h |  | No | Yes | No | No | No | No | 2025-08-21 | 2025-08-28 |  |  |  |  |  |  |
| 112 | 1.1.3.1.7.3 | SF Investment Strategy OEE & OLE Application Documentation Set Complete | milestone | 0d | 2025-08-27 | 2025-08-27 | 111 |  |  | 223.78d |  | James Fleming |  |  | No | Yes | No | No | No | No | 2025-08-29 | 2025-08-29 |  |  |  |  |  |  |

| ID | WBS | Task | Type | Duration | Start | Finish | Predecessors | Complete | Remaining | Total slack | Free slack | Resources | Work | Actual work | Tasks Due this Month | Tasks Due next Month | Tasks Due this week | Tasks Due next Week | Tasks Due Today | Last Tasks | Initial Planned Start | Initial Planned Finish | Task active Day | Field |
| --- | --- | --- | --- | --- | --- | --- | --- | --- | --- | --- | --- | --- | --- | --- | --- | --- | --- | --- | --- | --- | --- | --- | --- | --- |
| 113 | 1.1.3.1.8 | **SF Investment Strategy OEE & OLE Application Deployment for Zinc Nickel Line** |  | 5.81d | 2025-08-20 | 2025-08-28 |  |  |  | 0d |  |  | 2h |  | No | Yes | No | No | No | No | 2025-06-26 | 2025-06-30 |  |  |
| 114 | 1.1.3.1.8.1 | SF Investment Strategy OEE & OLE Application Deployment Planning Documentation |  | 5d | 2025-08-20 | 2025-08-27 | 108 |  |  | 0d |  | Matt Wetton [2.5%] | 1h |  | No | Yes | No | No | No | No | 2025-06-26 | 2025-06-27 |  |  |
| 115 | 1.1.3.1.8.2 | SF Investment Strategy OEE & OLE Application Deployment Review Meeting for Zinc Nickel Line |  | 1d | 2025-08-27 | 2025-08-28 | 114 |  |  | 0d |  | James Fleming [12.5%] | 1h |  | No | Yes | No | No | No | No | 2025-06-27 | 2025-06-30 |  |  |
| 116 | 1.1.3.1.8.3 | SF Investment Strategy OEE & OLE Application Deployment for ZnNi Complete | milestone | 0d | 2025-08-28 | 2025-08-28 | 115 |  |  | 0d |  | James Fleming |  |  | No | Yes | No | No | No | No | 2025-06-30 | 2025-06-30 |  |  |
| 117 | 1.1.3.1.9 | **SF Investment Strategy OEE & OLE Application MES Remaining Line Routings (Contingency)** |  | 42.03d | 2025-07-29 A | 2025-09-25 |  | 5% | 40.03d | 183.28d |  |  | 85h | 0.4h | No | Yes | No | No | No | No | 2025-06-30 | 2025-07-29 |  |  |
| 118 | 1.1.3.1.9.1 | SF Investment Strategy OEE & OLE Application Dummy Routing for ZnNi |  | 10d | 2025-07-29 A | 2025-09-10 | 116 | 10% | 9d | 183.28d | 0d | Mukaran Saeed [5%] | 4h | 0.4h | No | No | No | No | No | No | 2025-06-30 | 2025-07-14 | 1 | 1 |
| 119 | 1.1.3.1.9.2 | SF Investment Strategy OEE & OLE Application Dummy Layout Proposal to Man Eng |  | 5d | 2025-09-10 | 2025-09-17 | 118 |  |  | 183.28d | 0d | Germain Forgeuox | 40h |  | No | No | No | No | No | No | 2025-07-14 | 2025-07-21 |  |  |
| 120 | 1.1.3.1.9.3 | SF Investment Strategy OEE & OLE Application Dummy Layout Approved by Man Eng |  | 5d | 2025-09-17 | 2025-09-24 | 119 |  |  | 183.28d | 0d | IS Team | 40h |  | No | No | No | No | No | No | 2025-07-21 | 2025-07-28 |  |  |
| 121 | 1.1.3.1.9.4 | SF Investment Strategy OEE & OLE Application Layout Engagement/Infrustucture/Process |  | 1d | 2025-09-24 | 2025-09-25 | 120 |  |  | 183.28d | 0d | James Fleming [12.5%] | 1h |  | No | No | No | No | No | No | 2025-07-28 | 2025-07-29 |  |  |
| 122 | 1.1.3.1.9.5 | SF Investment Strategy OEE & OLE Application Layout Roll Out | milestone | 0d | 2025-09-25 | 2025-09-25 | 121 |  |  | 183.28d | 0d | James Fleming |  |  | No | No | No | No | No | No | 2025-07-29 | 2025-07-29 |  |  |
| 123 | 1.1.3.1.10 | **SF Investment Strategy OEE & OLE Application Data Integration for Remaining Lines** |  | 10.78d | 2025-09-25 | 2025-10-09 |  |  |  | 183.28d |  |  | 13h |  | No | No | No | No | No | No | 2025-07-29 | 2025-08-13 |  |  |
| 124 | 1.1.3.1.10.1 | SF Investment Strategy OEE & OLE Application Data Integration strategy for Remaining Lines |  | 5d | 2025-09-25 | 2025-10-02 | 122 |  |  | 183.25d | 0d | James Fleming [5%] | 2h |  | No | No | No | No | No | No | 2025-07-29 | 2025-08-05 |  |  |
| 125 | 1.1.3.1.10.2 | SF Investment Strategy OEE & OLE Application Data Integration Remaining Lines viewable on Power BI |  | 5d | 2025-10-02 | 2025-10-08 | 124 |  |  | 183.25d | 0d | Matt Wetton [25%] | 10h |  | No | No | No | No | No | No | 2025-08-05 | 2025-08-12 |  |  |
| 126 | 1.1.3.1.10.3 | SF Investment Strategy OEE & OLE Application Data Integration Review Meeting for Remaining Lines |  | 1d | 2025-10-09 | 2025-10-09 | 125 |  |  | 183.25d | 0d | James Fleming [12.5%] | 1h |  | No | No | No | No | No | No | 2025-08-12 | 2025-08-13 |  |  |
| 127 | 1.1.3.1.10.4 | SF Investment Strategy OEE & OLE Application Data Integration for Remaining Lines Complete | milestone | 0d | 2025-10-09 | 2025-10-09 | 126 |  |  | 183.41d | 0d | James Fleming |  |  | No | No | No | No | No | No | 2025-08-13 | 2025-08-13 |  |  |
| 128 | 1.1.3.1.11 | **SF Investment Strategy OEE & OLE Application Development for Remaining Lines** |  | 120.22d | 2025-04-30 | 2025-10-15 |  |  |  | 188.38d |  |  | 28h |  | No | No | No | No | No | No | 2025-04-30 | 2025-08-19 |  |  |
| 129 | 1.1.3.1.11.1 | SF Investment Strategy OEE & OLE Application Development - OEE Feature production/Aggregate for Remaining Lines |  | 2d | 2025-10-09 | 2025-10-13 | 127 |  |  | 183.41d | 0d | Matt Wetton [50%] | 8h |  | No | No | No | No | No | No | 2025-08-13 | 2025-08-15 |  |  |
| 130 | 1.1.3.1.11.2 | SF Investment Strategy OEE & OLE Application Development - OLE Feature production/Aggregate for Remaining Lines |  | 2d | 2025-10-13 | 2025-10-15 | 129 |  |  | 188.38d |  | Matt Wetton [50%] | 8h |  | No | No | No | No | No | No | 2025-08-15 | 2025-08-19 |  |  |
| 131 | 1.1.3.1.11.3 | SF Investment Strategy OEE & OLE Application Development - ROI Feature production/Aggregate for Remaining Lines |  | 2d | 2025-04-30 | 2025-05-02 |  |  |  | 306.59d |  | Matt Wetton [50%] | 8h |  | No | No | No | No | No | Yes | 2025-04-30 | 2025-05-02 |  |  |
| 132 | 1.1.3.1.11.4 | SF Investment Strategy OEE & OLE Application Development Plan for Remaining Lines |  | 1d | 2025-10-09 | 2025-10-13 | 127 |  |  | 190.16d | 0d | James Fleming [25%] | 2h |  | No | No | No | No | No | No | 2025-08-13 | 2025-08-14 |  |  |
| 133 | 1.1.3.1.11.5 | SF Investment Strategy OEE & OLE Application Development Review Meeting for Remaining Lines |  | 1d | 2025-10-13 | 2025-10-14 | 132 |  |  | 190.16d | 0d | James Fleming [25%] | 2h |  | No | No | No | No | No | No | 2025-08-14 | 2025-08-15 |  |  |
| 134 | 1.1.3.1.11.6 | SF Investment Strategy OEE & OLE Application Development Complete | milestone | 0d | 2025-10-14 | 2025-10-14 | 133 |  |  | 190.16d |  | James Fleming |  |  | No | No | No | No | No | No | 2025-08-15 | 2025-08-15 |  |  |
| 135 | 1.1.3.1.12 | **SF Investment Strategy OEE & OLE Application Testing for Remaining Lines** |  | 5d | 2025-10-09 | 2025-10-16 |  |  |  | 183.41d |  |  | 4h |  | No | No | No | No | No | No | 2025-08-13 | 2025-08-20 |  |  |
| 136 | 1.1.3.1.12.1 | SF Investment Strategy OEE & OLE Application Testing Schedule for Remaining Lines |  | 5d | 2025-10-09 | 2025-10-16 | 129SS |  |  | 187.38d |  | Matt Wetton [5%] | 2h |  | No | No | No | No | No | No | 2025-08-13 | 2025-08-20 |  |  |
| 137 | 1.1.3.1.12.2 | SF Investment Strategy OEE & OLE Application Testing Review Meeting for Remaining Lines |  | 5d | 2025-10-09 | 2025-10-16 | 129SS |  |  | 183.41d | 0d | Matt Wetton [5%] | 2h |  | No | No | No | No | No | No | 2025-08-13 | 2025-08-20 |  |  |
| 138 | 1.1.3.1.12.3 | SF Investment Strategy OEE & OLE Application Testing Complete | milestone | 0d | 2025-10-16 | 2025-10-16 | 137 |  |  | 183.41d | 0d | James Fleming |  |  | No | No | No | No | No | No | 2025-08-20 | 2025-08-20 |  |  |

| ID | WBS | Task | Type | Duration | Start | Finish | Predecessors | Total slack | Free slack | Resources | Work | Tasks Due this Month | Tasks Due next Month | Tasks Due this week | Tasks Due next Week | Tasks Due Today | Last Tasks | Initial Planned Start | Initial Planned Finish |
| --- | --- | --- | --- | --- | --- | --- | --- | --- | --- | --- | --- | --- | --- | --- | --- | --- | --- | --- | --- |
| 139 | 1.1.3.1.13 | **SF Investment Strategy OEE & OLE Application Deployment for Remaining Lines** |  | 2.22d? | 2025-10-16 | 2025-10-21 |  | 182.97d |  |  | 5h | No | No | No | No | No | No | 2025-08-20 | 2025-08-22 |
| 140 | 1.1.3.1.13.1 | SF Investment Strategy OEE & OLE Application Deployment Plan for Remaining Lines |  | 1d | 2025-10-16 | 2025-10-20 | 138 | 182.81d | 0d | James Fleming [50%] | 4h | No | No | No | No | No | No | 2025-08-20 | 2025-08-21 |
| 141 | 1.1.3.1.13.2 | SF Investment Strategy OEE & OLE Application Deployment Review Meeting for Remaining Lines |  | 1d | 2025-10-20 | 2025-10-21 | 140 | 182.81d | 0d | James Fleming [12.5%] | 1h | No | No | No | No | No | No | 2025-08-21 | 2025-08-22 |
| 142 | 1.1.3.1.13.3 | SF Investment Strategy OEE & OLE Application Deployment for Remaining Lines Complete | milestone | 0d? | 2025-10-21 | 2025-10-21 | 141 | 182.97d | 0d | James Fleming |  | No | No | No | No | No | No | 2025-08-22 | 2025-08-22 |
| 143 | 1.1.3.1.14 | **SF Investment Strategy OEE & OLE Application Project Close** |  | 1.91d? | 2025-10-21 | 2025-10-22 |  | 182.97d |  |  | 5h | No | No | No | No | No | No | 2025-08-22 | 2025-08-26 |
| 144 | 1.1.3.1.14.1 | SF Investment Strategy OEE & OLE Application Lessons Learnt |  | 1d? | 2025-10-21 | 2025-10-22 | 142 | 182.97d | 0d | James Fleming [50%] | 4h | No | No | No | No | No | No | 2025-08-22 | 2025-08-25 |
| 145 | 1.1.3.1.14.2 | SF Investment Strategy OEE & OLE Application Project Close Review Meeting |  | 1d | 2025-10-22 | 2025-10-22 | 144 | 183.25d | 0d | James Fleming [12.5%] | 1h | No | No | No | No | No | No | 2025-08-25 | 2025-08-26 |
| 146 | 1.1.3.1.14.3 | SF Investment Strategy OEE & OLE Application Project Complete | milestone | 0d | 2025-10-22 | 2025-10-22 | 145 | 183.25d |  | James Fleming |  | No | No | No | No | No | No | 2025-08-26 | 2025-08-26 |
| 147 | 1.1.3.2 | **SF Investment Strategy Planning FO Application** |  | 157d? | 2025-04-30 | 2025-12-05 |  | 151.59d |  |  |  | No | No | No | No | No | Yes | 2025-04-30 | 2025-12-05 |
| 148 | 1.1.3.2.1 | **SF Investment Strategy Planning FO Application Planning** |  | 11d | 2025-04-30 | 2025-05-15 |  | 151.59d |  |  |  | No | No | No | No | No | Yes | 2025-04-30 | 2025-05-15 |
| 149 | 1.1.3.2.1.1 | SF Investment Strategy FO Application (PID) |  | 5d | 2025-04-30 | 2025-05-07 | 72FS+119d | 151.59d | 0d |  |  | No | No | No | No | No | Yes | 2025-04-30 | 2025-05-07 |
| 150 | 1.1.3.2.1.2 | SF Investment Strategy FO Application Features List |  | 5d | 2025-05-07 | 2025-05-14 | 149 | 151.59d | 0d |  |  | No | No | No | No | No | Yes | 2025-05-07 | 2025-05-14 |
| 151 | 1.1.3.2.1.3 | SF Investment Strategy FO Application Planning Review Meeting | milestone | 0d | 2025-05-14 | 2025-05-14 | 150 | 151.59d | 0d |  |  | No | No | No | No | No | Yes | 2025-05-14 | 2025-05-14 |
| 152 | 1.1.3.2.1.4 | SF Investment Strategy FO Application Planning Complete |  | 1d | 2025-05-14 | 2025-05-15 | 151 | 151.59d | 0d |  |  | No | No | No | No | No | Yes | 2025-05-14 | 2025-05-15 |
| 153 | 1.1.3.2.2 | **SF Investment Strategy FO Application Design** |  | 12d? | 2025-05-15 | 2025-06-02 |  | 151.59d |  |  |  | No | No | No | No | No | Yes | 2025-05-15 | 2025-06-02 |
| 154 | 1.1.3.2.2.1 | SF Investment Strategy FO Application Design Documentation |  | 10d | 2025-05-15 | 2025-05-29 | 152 | 151.59d | 0d |  |  | No | No | No | No | No | Yes | 2025-05-15 | 2025-05-29 |
| 155 | 1.1.3.2.2.2 | SF Investment Strategy FO Application Design Review Meeting |  | 1d? | 2025-05-29 | 2025-05-30 | 154 | 151.59d | 0d |  |  | No | No | No | No | No | Yes | 2025-05-29 | 2025-05-30 |
| 156 | 1.1.3.2.2.3 | SF Investment Strategy FO Application Design Complete |  | 1d? | 2025-05-30 | 2025-06-02 | 155 | 151.59d | 0d |  |  | No | No | No | No | No | Yes | 2025-05-30 | 2025-06-02 |
| 157 | 1.1.3.2.3 | **SF Investment Strategy Development** |  | 71d? | 2025-06-02 | 2025-09-09 |  | 151.59d |  |  |  | No | No | No | No | No | Yes | 2025-06-02 | 2025-09-09 |
| 158 | 1.1.3.2.3.1 | **SF Investment Strategy FO Application Core Stability** |  | 15d? | 2025-06-02 | 2025-06-23 |  | 151.59d |  |  |  | No | No | No | No | No | Yes | 2025-06-02 | 2025-06-23 |
| 159 | 1.1.3.2.3.1.1 | **SF Investment Strategy FO Application Financial Statement Tab Completion** |  | 5d? | 2025-06-02 | 2025-06-09 |  | 151.59d |  |  |  | No | No | No | No | No | Yes | 2025-06-02 | 2025-06-09 |
| 160 | 1.1.3.2.3.1.1.1 | SF Investment Strategy FO Application Fix data display issues in financial statement tabs |  | 1d? | 2025-06-02 | 2025-06-03 | 156 | 151.59d | 0d |  |  | No | No | No | No | No | Yes | 2025-06-02 | 2025-06-03 |
| 161 | 1.1.3.2.3.1.1.2 | SF Investment Strategy FO Application Implement proper data connection to financial models |  | 1d? | 2025-06-03 | 2025-06-04 | 160 | 151.59d | 0d |  |  | No | No | No | No | No | Yes | 2025-06-03 | 2025-06-04 |
| 162 | 1.1.3.2.3.1.1.3 | SF Investment Strategy FO Application Add interactive filtering/selection capabilities |  | 1d? | 2025-06-04 | 2025-06-05 | 161 | 151.59d | 0d |  |  | No | No | No | No | No | Yes | 2025-06-04 | 2025-06-05 |
| 163 | 1.1.3.2.3.1.1.4 | SF Investment Strategy FO Application Verify data consistency across income statement, balance sheet, and cash flow statement |  | 1d? | 2025-06-05 | 2025-06-06 | 162 | 151.59d | 0d |  |  | No | No | No | No | No | Yes | 2025-06-05 | 2025-06-06 |
| 164 | 1.1.3.2.3.1.1.5 | SF Investment Strategy FO Application **Testing:** Verify statements reflect accurate data from inputs and projections |  | 1d? | 2025-06-06 | 2025-06-09 | 163 | 151.59d | 0d |  |  | No | No | No | No | No | Yes | 2025-06-06 | 2025-06-09 |

| ID | WBS | Task | Duration | Start | Finish | Predecessors | Total slack | Free slack | Tasks Due this Month | Tasks Due next Month | Tasks Due this week | Tasks Due next Week | Tasks Due Today | Last Tasks | Initial Planned Start | Initial Planned Finish |
| --- | --- | --- | --- | --- | --- | --- | --- | --- | --- | --- | --- | --- | --- | --- | --- | --- |
| 165 | 1.1.3.2.3.1.2 | **SF Investment Strategy FO Application Scenario Analysis Feature** | 5d? | 2025-06-09 | 2025-06-16 |  | 151.59d |  | No | No | No | No | No | Yes | 2025-06-09 | 2025-06-16 |
| 166 | 1.1.3.2.3.1.2.1 | Complete scenario analysis for business mode | 1d? | 2025-06-09 | 2025-06-10 | 164 | 151.59d | 0d | No | No | No | No | No | Yes | 2025-06-09 | 2025-06-10 |
| 167 | 1.1.3.2.3.1.2.2 | - Adapt scenario analysis for personal mode with appropriate metrics | 1d? | 2025-06-10 | 2025-06-11 | 166 | 151.59d | 0d | No | No | No | No | No | Yes | 2025-06-10 | 2025-06-11 |
| 168 | 1.1.3.2.3.1.2.3 | - Create scenario comparison functionality with visual indicators | 1d? | 2025-06-11 | 2025-06-12 | 167 | 151.59d | 0d | No | No | No | No | No | Yes | 2025-06-11 | 2025-06-12 |
| 169 | 1.1.3.2.3.1.2.4 | - Implement scenario selection and parameters adjustment | 1d? | 2025-06-12 | 2025-06-13 | 168 | 151.59d | 0d | No | No | No | No | No | Yes | 2025-06-12 | 2025-06-13 |
| 170 | 1.1.3.2.3.1.2.5 | - **Testing:** Verify scenarios correctly impact financial projections in both modes | 1d? | 2025-06-13 | 2025-06-16 | 169 | 151.59d | 0d | No | No | No | No | No | Yes | 2025-06-13 | 2025-06-16 |
| 171 | 1.1.3.2.3.1.3 | **SF Investment Strategy FO Application Unified Projection Charts** | 5d? | 2025-06-16 | 2025-06-23 |  | 151.59d |  | No | No | No | No | No | Yes | 2025-06-16 | 2025-06-23 |
| 172 | 1.1.3.2.3.1.3.1 | SF Investment Strategy FO Application Align investment slider behavior with projection charts | 1d? | 2025-06-16 | 2025-06-17 | 170 | 151.59d | 0d | No | No | No | No | No | Yes | 2025-06-16 | 2025-06-17 |
| 173 | 1.1.3.2.3.1.3.2 | SF Investment Strategy FO Application Ensure consistent data flow between financial overview and projection charts | 1d? | 2025-06-17 | 2025-06-18 | 172 | 151.59d | 0d | No | No | No | No | No | Yes | 2025-06-17 | 2025-06-18 |
| 174 | 1.1.3.2.3.1.3.3 | SF Investment Strategy FO Application Standardize chart formatting and interaction patterns | 1d? | 2025-06-18 | 2025-06-19 | 173 | 151.59d | 0d | No | No | No | No | No | Yes | 2025-06-18 | 2025-06-19 |
| 175 | 1.1.3.2.3.1.3.4 | SF Investment Strategy FO Application Fix any disconnects between user inputs and visual outputs | 1d? | 2025-06-19 | 2025-06-20 | 174 | 151.59d | 0d | No | No | No | No | No | Yes | 2025-06-19 | 2025-06-20 |
| 176 | 1.1.3.2.3.1.3.5 | SF Investment Strategy FO Application **Testing:** Verify changes in inputs properly reflect in all projection charts | 1d? | 2025-06-20 | 2025-06-23 | 175 | 151.59d | 0d | No | No | No | No | No | Yes | 2025-06-20 | 2025-06-23 |
| 177 | 1.1.3.2.3.2 | **SF Investment Strategy FO Application Economic Analysis & Contextual Features** | 15d? | 2025-06-23 | 2025-07-14 |  | 151.59d |  | Yes | No | No | No | No | Yes | 2025-06-23 | 2025-07-14 |
| 178 | 1.1.3.2.3.2.1 | **SF Investment Strategy FO Application Economic Climate Integration** | 5d? | 2025-06-23 | 2025-06-30 |  | 151.59d |  | No | No | No | No | No | Yes | 2025-06-23 | 2025-06-30 |
| 179 | 1.1.3.2.3.2.1.1 | SF Investment Strategy FO Application Complete implementation of regional economic data retrieval | 1d? | 2025-06-23 | 2025-06-24 | 176 | 151.59d | 0d | No | No | No | No | No | Yes | 2025-06-23 | 2025-06-24 |
| 180 | 1.1.3.2.3.2.1.2 | SF Investment Strategy FO Application Create economic indicator dashboard (GDP, inflation, employment, interest rates) | 1d? | 2025-06-24 | 2025-06-25 | 179 | 151.59d | 0d | No | No | No | No | No | Yes | 2025-06-24 | 2025-06-25 |
| 181 | 1.1.3.2.3.2.1.3 | SF Investment Strategy FO Application Develop economic climate classification algorithm | 1d? | 2025-06-25 | 2025-06-26 | 180 | 151.59d | 0d | No | No | No | No | No | Yes | 2025-06-25 | 2025-06-26 |
| 182 | 1.1.3.2.3.2.1.4 | SF Investment Strategy FO Application Connect economic climate to scenario selection and parameters | 1d? | 2025-06-26 | 2025-06-27 | 181 | 151.59d | 0d | No | No | No | No | No | Yes | 2025-06-26 | 2025-06-27 |
| 183 | 1.1.3.2.3.2.1.5 | SF Investment Strategy FO Application **Testing:** Verify economic data retrieval and display across all regions | 1d? | 2025-06-27 | 2025-06-30 | 182 | 151.59d | 0d | No | No | No | No | No | Yes | 2025-06-27 | 2025-06-30 |
| 184 | 1.1.3.2.3.2.2 | **SF Investment Strategy FO Application Investment Analysis Enhancement** | 5d? | 2025-06-30 | 2025-07-07 |  | 151.59d |  | Yes | No | No | No | No | Yes | 2025-06-30 | 2025-07-07 |
| 185 | 1.1.3.2.3.2.2.1 | SF Investment Strategy FO Application Review and optimize investment comparison functionality | 1d? | 2025-06-30 | 2025-07-01 | 183 | 151.59d | 0d | Yes | No | No | No | No | Yes | 2025-06-30 | 2025-07-01 |
| 186 | 1.1.3.2.3.2.2.2 | SF Investment Strategy FO Application Connect investment analysis to scenario parameters | 1d? | 2025-07-01 | 2025-07-02 | 185 | 151.59d | 0d | Yes | No | No | No | No | Yes | 2025-07-01 | 2025-07-02 |
| 187 | 1.1.3.2.3.2.2.3 | SF Investment Strategy FO Application Add comparative metrics like ROI, IRR, and payback period | 1d? | 2025-07-02 | 2025-07-03 | 186 | 151.59d | 0d | Yes | No | No | No | No | Yes | 2025-07-02 | 2025-07-03 |
| 188 | 1.1.3.2.3.2.2.4 | SF Investment Strategy FO Application Implement investment type-specific calculations | 1d? | 2025-07-03 | 2025-07-04 | 187 | 151.59d | 0d | Yes | No | No | No | No | Yes | 2025-07-03 | 2025-07-04 |
| 189 | 1.1.3.2.3.2.2.5 | SF Investment Strategy FO Application **Testing:** Verify investment metrics calculations are accurate and properly displayed | 1d? | 2025-07-04 | 2025-07-07 | 188 | 151.59d | 0d | Yes | No | No | No | No | Yes | 2025-07-04 | 2025-07-07 |

| ID | WBS | Task | Duration | Start | Finish | Predecessors | Total slack | Free slack | Tasks Due this Month | Tasks Due next Month | Tasks Due this week | Tasks Due next Week | Tasks Due Today | Last Tasks | Initial Planned Start | Initial Planned Finish |
| --- | --- | --- | --- | --- | --- | --- | --- | --- | --- | --- | --- | --- | --- | --- | --- | --- |
| 190 | 1.1.3.2.3.2.3 | **SF Investment Strategy FO Application OEE/OLE Investment Analysis (Business Mode)** | 5d? | 2025-07-07 | 2025-07-14 |  | 151.59d |  | Yes | No | No | No | No | Yes | 2025-07-07 | 2025-07-14 |
| 191 | 1.1.3.2.3.2.3.1 | SF Investment Strategy FO Application Implement OEE/OLE calculation models | 1d? | 2025-07-07 | 2025-07-08 | 189 | 151.59d | 0d | Yes | No | No | No | No | Yes | 2025-07-07 | 2025-07-08 |
| 192 | 1.1.3.2.3.2.3.2 | SF Investment Strategy FO Application Create input forms for OEE/OLE parameters | 1d? | 2025-07-08 | 2025-07-09 | 191 | 151.59d | 0d | Yes | No | No | No | No | Yes | 2025-07-08 | 2025-07-09 |
| 193 | 1.1.3.2.3.2.3.3 | SF Investment Strategy FO Application Develop visualization of efficiency improvements | 1d? | 2025-07-09 | 2025-07-10 | 192 | 151.59d | 0d | Yes | No | No | No | No | Yes | 2025-07-09 | 2025-07-10 |
| 194 | 1.1.3.2.3.2.3.4 | SF Investment Strategy FO Application Connect efficiency analysis to financial projections | 1d? | 2025-07-10 | 2025-07-11 | 193 | 151.59d | 0d | Yes | No | No | No | No | Yes | 2025-07-10 | 2025-07-11 |
| 195 | 1.1.3.2.3.2.3.5 | SF Investment Strategy FO Application **Testing:** Validate OEE/OLE calculations and verify impacts on financial metrics | 1d? | 2025-07-11 | 2025-07-14 | 194 | 151.59d | 0d | Yes | No | No | No | No | Yes | 2025-07-11 | 2025-07-14 |
| 196 | 1.1.3.2.3.3 | **SF Investment Strategy FO Application Advanced Analysis Capabilities** | 16d? | 2025-07-14 | 2025-08-05 |  | 151.59d |  | No | No | No | No | No | Yes | 2025-07-14 | 2025-08-05 |
| 197 | 1.1.3.2.3.3.1 | **SF Investment Strategy FO Application Sensitivity Analysis Implementation** | 5d? | 2025-07-14 | 2025-07-21 |  | 151.59d |  | Yes | No | No | No | No | Yes | 2025-07-14 | 2025-07-21 |
| 198 | 1.1.3.2.3.3.1.1 | SF Investment Strategy FO Application Implement parameter variation capabilities | 1d? | 2025-07-14 | 2025-07-15 | 195 | 151.59d | 0d | Yes | No | No | No | No | Yes | 2025-07-14 | 2025-07-15 |
| 199 | 1.1.3.2.3.3.1.2 | SF Investment Strategy FO Application Create tornado charts for parameter sensitivity | 1d? | 2025-07-15 | 2025-07-16 | 198 | 151.59d | 0d | Yes | No | No | No | No | Yes | 2025-07-15 | 2025-07-16 |
| 200 | 1.1.3.2.3.3.1.3 | SF Investment Strategy FO Application Develop threshold analysis for critical variables | 1d? | 2025-07-16 | 2025-07-17 | 199 | 151.59d | 0d | Yes | No | No | No | No | Yes | 2025-07-16 | 2025-07-17 |
| 201 | 1.1.3.2.3.3.1.4 | SF Investment Strategy FO Application Adapt sensitivity analysis for both business and personal modes | 1d? | 2025-07-17 | 2025-07-18 | 200 | 151.59d | 0d | Yes | No | No | No | No | Yes | 2025-07-17 | 2025-07-18 |
| 202 | 1.1.3.2.3.3.1.5 | SF Investment Strategy FO Application **Testing:** Verify sensitivity analysis correctly identifies critical parameters | 1d? | 2025-07-18 | 2025-07-21 | 201 | 151.59d | 0d | Yes | No | Yes | No | No | Yes | 2025-07-18 | 2025-07-21 |
| 203 | 1.1.3.2.3.3.2 | **SF Investment Strategy FO Application Monte Carlo Simulation** | 6d? | 2025-07-21 | 2025-07-29 |  | 151.59d |  | Yes | No | No | No | No | Yes | 2025-07-21 | 2025-07-29 |
| 204 | 1.1.3.2.3.3.2.1 | SF Investment Strategy FO Application Implement simulation engine with configurable iterations | 1d? | 2025-07-21 | 2025-07-22 | 202 | 151.59d | 0d | Yes | No | Yes | No | No | Yes | 2025-07-21 | 2025-07-22 |
| 205 | 1.1.3.2.3.3.2.2 | SF Investment Strategy FO Application Create probability distribution charts for outcomes | 1d? | 2025-07-22 | 2025-07-23 | 204 | 151.59d | 0d | Yes | No | Yes | No | No | Yes | 2025-07-22 | 2025-07-23 |
| 206 | 1.1.3.2.3.3.2.3 | SF Investment Strategy FO Application Add confidence interval calculations | 1d? | 2025-07-23 | 2025-07-24 | 205 | 151.59d | 0d | Yes | No | Yes | No | No | No | 2025-07-23 | 2025-07-24 |
| 207 | 1.1.3.2.3.3.2.4 | SF Investment Strategy FO Application Implement parameter correlation modeling | 1d? | 2025-07-24 | 2025-07-25 | 206 | 151.59d | 0d | Yes | No | Yes | No | Yes | No | 2025-07-24 | 2025-07-25 |
| 208 | 1.1.3.2.3.3.2.5 | SF Investment Strategy FO Application Adapt Monte Carlo analysis for both business and personal modes | 1d? | 2025-07-25 | 2025-07-28 | 207 | 151.59d | 0d | Yes | No | No | Yes | No | No | 2025-07-25 | 2025-07-28 |
| 209 | 1.1.3.2.3.3.2.6 | SF Investment Strategy FO Application **Testing:** Verify simulation produces statistically valid results and useful visualizations | 1d? | 2025-07-28 | 2025-07-29 | 208 | 151.59d | 0d | Yes | No | No | Yes | No | No | 2025-07-28 | 2025-07-29 |
| 210 | 1.1.3.2.3.3.3 | **SF Investment Strategy FO Application Investment Portfolio Optimization** | 5d? | 2025-07-29 | 2025-08-05 |  | 151.59d |  | No | No | No | No | No | Yes | 2025-07-29 | 2025-08-05 |
| 211 | 1.1.3.2.3.3.3.1 | SF Investment Strategy FO Application Develop portfolio builder interface | 1d? | 2025-07-29 | 2025-07-30 | 209 | 151.59d | 0d | Yes | No | No | Yes | No | No | 2025-07-29 | 2025-07-30 |
| 212 | 1.1.3.2.3.3.3.2 | SF Investment Strategy FO Application Implement portfolio optimization algorithms (efficient frontier) | 1d? | 2025-07-30 | 2025-07-31 | 211 | 151.59d | 0d | Yes | No | No | Yes | No | No | 2025-07-30 | 2025-07-31 |
| 213 | 1.1.3.2.3.3.3.3 | SF Investment Strategy FO Application Create asset allocation visualization | 1d? | 2025-07-31 | 2025-08-01 | 212 | 151.59d | 0d | No | Yes | No | Yes | No | No | 2025-07-31 | 2025-08-01 |
| 214 | 1.1.3.2.3.3.3.4 | SF Investment Strategy FO Application Adapt optimization for both business and personal modes | 1d? | 2025-08-01 | 2025-08-04 | 213 | 151.59d | 0d | No | Yes | No | No | No | No | 2025-08-01 | 2025-08-04 |
| 215 | 1.1.3.2.3.3.3.5 | SF Investment Strategy FO Application **Testing:** Verify optimization produces reasonable asset allocations in various scenarios | 1d? | 2025-08-04 | 2025-08-05 | 214 | 151.59d | 0d | No | Yes | No | No | No | No | 2025-08-04 | 2025-08-05 |

| ID | WBS | Task | Duration | Start | Finish | Predecessors | Total slack | Free slack | Tasks Due this Month | Tasks Due next Month | Tasks Due this week | Tasks Due next Week | Tasks Due Today | Last Tasks | Initial Planned Start | Initial Planned Finish |
| --- | --- | --- | --- | --- | --- | --- | --- | --- | --- | --- | --- | --- | --- | --- | --- | --- |
| 216 | 1.1.3.2.3.4 | **SF Investment Strategy FO Application Insight Reporting Framework** | 15d? | 2025-08-05 | 2025-08-26 |  | 151.59d |  | No | No | No | No | No | Yes | 2025-08-05 | 2025-08-26 |
| 217 | 1.1.3.2.3.4.1 | **SF Investment Strategy FO Application Insight Reporting Framework** | 5d? | 2025-08-05 | 2025-08-12 |  | 151.59d |  | No | No | No | No | No | Yes | 2025-08-05 | 2025-08-12 |
| 218 | 1.1.3.2.3.4.1.1 | SF Investment Strategy FO Application Design comprehensive reporting templates | 1d? | 2025-08-05 | 2025-08-06 | 215 | 151.59d | 0d | No | Yes | No | No | No | No | 2025-08-05 | 2025-08-06 |
| 219 | 1.1.3.2.3.4.1.2 | SF Investment Strategy FO Application Implement report generation functionality | 1d? | 2025-08-06 | 2025-08-07 | 218 | 151.59d | 0d | No | Yes | No | No | No | No | 2025-08-06 | 2025-08-07 |
| 220 | 1.1.3.2.3.4.1.3 | SF Investment Strategy FO Application Create exportable reports (PDF, Excel) | 1d? | 2025-08-07 | 2025-08-08 | 219 | 151.59d | 0d | No | Yes | No | No | No | No | 2025-08-07 | 2025-08-08 |
| 221 | 1.1.3.2.3.4.1.4 | SF Investment Strategy FO Application Include key metrics, charts, and recommendations | 1d? | 2025-08-08 | 2025-08-11 | 220 | 151.59d | 0d | No | Yes | No | No | No | No | 2025-08-08 | 2025-08-11 |
| 222 | 1.1.3.2.3.4.1.5 | SF Investment Strategy FO Application **Testing:** Verify reports contain all relevant information in a clear, organized format | 1d? | 2025-08-11 | 2025-08-12 | 221 | 151.59d | 0d | No | Yes | No | No | No | No | 2025-08-11 | 2025-08-12 |
| 223 | 1.1.3.2.3.4.2 | **SF Investment Strategy FO Application Investment Timing Insights (Personal Mode)** | 5d? | 2025-08-12 | 2025-08-19 |  | 151.59d |  | No | No | No | No | No | Yes | 2025-08-12 | 2025-08-19 |
| 224 | 1.1.3.2.3.4.2.1 | SF Investment Strategy FO Application Implement market timing analysis for personal investments | 1d? | 2025-08-12 | 2025-08-13 | 222 | 151.59d | 0d | No | Yes | No | No | No | No | 2025-08-12 | 2025-08-13 |
| 225 | 1.1.3.2.3.4.2.2 | SF Investment Strategy FO Application Create buy/sell recommendation engine | 1d? | 2025-08-13 | 2025-08-14 | 224 | 151.59d | 0d | No | Yes | No | No | No | No | 2025-08-13 | 2025-08-14 |
| 226 | 1.1.3.2.3.4.2.3 | SF Investment Strategy FO Application Develop visualization of optimal entry/exit points | 1d? | 2025-08-14 | 2025-08-15 | 225 | 151.59d | 0d | No | Yes | No | No | No | No | 2025-08-14 | 2025-08-15 |
| 227 | 1.1.3.2.3.4.2.4 | SF Investment Strategy FO Application Connect timing analysis to portfolio performance | 1d? | 2025-08-15 | 2025-08-18 | 226 | 151.59d | 0d | No | Yes | No | No | No | No | 2025-08-15 | 2025-08-18 |
| 228 | 1.1.3.2.3.4.2.5 | SF Investment Strategy FO Application **Testing:** Verify timing recommendations are reasonable and properly justified | 1d? | 2025-08-18 | 2025-08-19 | 227 | 151.59d | 0d | No | Yes | No | No | No | No | 2025-08-18 | 2025-08-19 |
| 229 | 1.1.3.2.3.4.3 | **SF Investment Strategy FO Application Cross-Feature Integration & Unification** | 5d? | 2025-08-19 | 2025-08-26 |  | 151.59d |  | No | No | No | No | No | Yes | 2025-08-19 | 2025-08-26 |
| 230 | 1.1.3.2.3.4.3.1 | SF Investment Strategy FO Application Ensure consistent data flow between all application components | 1d? | 2025-08-19 | 2025-08-20 | 228 | 151.59d | 0d | No | Yes | No | No | No | No | 2025-08-19 | 2025-08-20 |
| 231 | 1.1.3.2.3.4.3.2 | SF Investment Strategy FO Application Standardize UI patterns across all tabs and modes | 1d? | 2025-08-20 | 2025-08-21 | 230 | 151.59d | 0d | No | Yes | No | No | No | No | 2025-08-20 | 2025-08-21 |
| 232 | 1.1.3.2.3.4.3.3 | SF Investment Strategy FO Application Optimize navigation between related features | 1d? | 2025-08-21 | 2025-08-22 | 231 | 151.59d | 0d | No | Yes | No | No | No | No | 2025-08-21 | 2025-08-22 |
| 233 | 1.1.3.2.3.4.3.4 | SF Investment Strategy FO Application Implement unified state management | 1d? | 2025-08-22 | 2025-08-25 | 232 | 151.59d | 0d | No | Yes | No | No | No | No | 2025-08-22 | 2025-08-25 |
| 234 | 1.1.3.2.3.4.3.5 | SF Investment Strategy FO Application **Testing:** Verify seamless transitions between features and consistency in data display | 1d? | 2025-08-25 | 2025-08-26 | 233 | 151.59d | 0d | No | Yes | No | No | No | No | 2025-08-25 | 2025-08-26 |
| 235 | 1.1.3.2.3.5 | **SF Investment Strategy FO Application Refinement & Performance Optimization** | 10d? | 2025-08-26 | 2025-09-09 |  | 151.59d |  | No | No | No | No | No | Yes | 2025-08-26 | 2025-09-09 |
| 236 | 1.1.3.2.3.5.1 | **SF Investment Strategy FO Application User Experience Enhancement** | 5d? | 2025-08-26 | 2025-09-02 |  | 151.59d |  | No | No | No | No | No | Yes | 2025-08-26 | 2025-09-02 |
| 237 | 1.1.3.2.3.5.1.1 | SF Investment Strategy FO Application Conduct usability testing | 1d? | 2025-08-26 | 2025-08-27 | 234 | 151.59d | 0d | No | Yes | No | No | No | No | 2025-08-26 | 2025-08-27 |
| 238 | 1.1.3.2.3.5.1.2 | SF Investment Strategy FO Application Implement feedback from initial users | 1d? | 2025-08-27 | 2025-08-28 | 237 | 151.59d | 0d | No | Yes | No | No | No | No | 2025-08-27 | 2025-08-28 |
| 239 | 1.1.3.2.3.5.1.3 | SF Investment Strategy FO Application Refine UI/UX based on interaction patterns | 1d? | 2025-08-28 | 2025-08-29 | 238 | 151.59d | 0d | No | Yes | No | No | No | No | 2025-08-28 | 2025-08-29 |
| 240 | 1.1.3.2.3.5.1.4 | SF Investment Strategy FO Application Add contextual help and tooltips | 1d? | 2025-08-29 | 2025-09-01 | 239 | 151.59d | 0d | No | No | No | No | No | No | 2025-08-29 | 2025-09-01 |
| 241 | 1.1.3.2.3.5.1.5 | SF Investment Strategy FO Application **Testing:** Gather user feedback on overall application experience | 1d? | 2025-09-01 | 2025-09-02 | 240 | 151.59d | 0d | No | No | No | No | No | No | 2025-09-01 | 2025-09-02 |

| ID | WBS | Task | Type | Duration | Start | Finish | Predecessors | Total slack | Free slack | Tasks Due this Month | Tasks Due next Month | Tasks Due this week | Tasks Due next Week | Tasks Due Today | Last Tasks | Initial Planned Start | Initial Planned Finish |
| --- | --- | --- | --- | --- | --- | --- | --- | --- | --- | --- | --- | --- | --- | --- | --- | --- | --- |
| 242 | 1.1.3.2.3.5.2 | **SF Investment Strategy FO Application Performance Optimization** |  | 5d? | 2025-09-02 | 2025-09-09 |  | 151.59d |  | No | No | No | No | No | Yes | 2025-09-02 | 2025-09-09 |
| 243 | 1.1.3.2.3.5.2.1 | SF Investment Strategy FO Application Profile application performance |  | 1d? | 2025-09-02 | 2025-09-03 | 241 | 151.59d | 0d | No | No | No | No | No | No | 2025-09-02 | 2025-09-03 |
| 244 | 1.1.3.2.3.5.2.2 | SF Investment Strategy FO Application Optimize computation-heavy operations |  | 1d? | 2025-09-03 | 2025-09-04 | 243 | 151.59d | 0d | No | No | No | No | No | No | 2025-09-03 | 2025-09-04 |
| 245 | 1.1.3.2.3.5.2.3 | SF Investment Strategy FO Application Implement data caching where appropriate |  | 1d? | 2025-09-04 | 2025-09-05 | 244 | 151.59d | 0d | No | No | No | No | No | No | 2025-09-04 | 2025-09-05 |
| 246 | 1.1.3.2.3.5.2.4 | SF Investment Strategy FO Application Reduce unnecessary re-renders |  | 1d? | 2025-09-05 | 2025-09-08 | 245 | 151.59d | 0d | No | No | No | No | No | No | 2025-09-05 | 2025-09-08 |
| 247 | 1.1.3.2.3.5.2.5 | SF Investment Strategy FO Application **Testing:** Measure load times and interaction responsiveness |  | 1d? | 2025-09-08 | 2025-09-09 | 246 | 151.59d | 0d | No | No | No | No | No | No | 2025-09-08 | 2025-09-09 |
| 248 | 1.1.3.2.4 | **SF Investment Strategy FO Application Testing** |  | 46d | 2025-09-09 | 2025-11-12 |  | 151.59d | 0d | No | No | No | No | No | Yes | 2025-09-09 | 2025-11-12 |
| 249 | 1.1.3.2.4.1 | SF Investment Strategy FO Application **Unit Testing:** Test individual components in isolation |  | 10d | 2025-09-09 | 2025-09-23 | 247 | 151.59d | 0d | No | No | No | No | No | No | 2025-09-09 | 2025-09-23 |
| 250 | 1.1.3.2.4.2 | SF Investment Strategy FO Application **Integration Testing:** Test interaction between related components |  | 10d | 2025-09-23 | 2025-10-07 | 249 | 151.59d | 0d | No | No | No | No | No | No | 2025-09-23 | 2025-10-07 |
| 251 | 1.1.3.2.4.3 | SF Investment Strategy FO Application **Mode Testing:** Verify functionality in both business and personal modes |  | 5d | 2025-10-07 | 2025-10-14 | 250 | 151.59d | 0d | No | No | No | No | No | No | 2025-10-07 | 2025-10-14 |
| 252 | 1.1.3.2.4.4 | SF Investment Strategy FO Application **Cross-browser Testing:** Ensure compatibility across major browsers |  | 5d | 2025-10-14 | 2025-10-21 | 251 | 151.59d | 0d | No | No | No | No | No | No | 2025-10-14 | 2025-10-21 |
| 253 | 1.1.3.2.4.5 | SF Investment Strategy FO Application **User Acceptance Testing:** Validate with actual users for real-world feedback |  | 10d | 2025-10-21 | 2025-11-04 | 252 | 151.59d | 0d | No | No | No | No | No | No | 2025-10-21 | 2025-11-04 |
| 254 | 1.1.3.2.4.6 | SF Investment Strategy FO Application Testing Schedule |  | 5d | 2025-11-04 | 2025-11-11 | 253 | 151.59d | 0d | No | No | No | No | No | No | 2025-11-04 | 2025-11-11 |
| 255 | 1.1.3.2.4.7 | SF Investment Strategy FO Application Testing Review Meeting |  | 1d | 2025-11-11 | 2025-11-12 | 254 | 151.59d | 0d | No | No | No | No | No | No | 2025-11-11 | 2025-11-12 |
| 256 | 1.1.3.2.4.8 | SF Investment Strategy FO Application Testing Complete | milestone | 0d | 2025-11-12 | 2025-11-12 | 255 | 151.59d |  | No | No | No | No | No | No | 2025-11-12 | 2025-11-12 |
| 257 | 1.1.3.2.5 | **SF Investment Strategy FO Application Deployment** |  | 6d | 2025-11-12 | 2025-11-20 | 248 | 151.59d | 0d | No | No | No | No | No | Yes | 2025-11-12 | 2025-11-20 |
| 258 | 1.1.3.2.5.1 | SF Investment Strategy FO Application Deployment Plan |  | 5d | 2025-11-12 | 2025-11-19 |  | 151.59d | 0d | No | No | No | No | No | No | 2025-11-12 | 2025-11-19 |
| 259 | 1.1.3.2.5.2 | SF Investment Strategy FO Application Deployment Complete | milestone | 0d | 2025-11-19 | 2025-11-19 | 258 | 151.59d | 0d | No | No | No | No | No | No | 2025-11-19 | 2025-11-19 |
| 260 | 1.1.3.2.5.3 | SF Investment Strategy FO Application Deployment Review Meeting |  | 1d | 2025-11-19 | 2025-11-20 | 259 | 151.59d |  | No | No | No | No | No | No | 2025-11-19 | 2025-11-20 |
| 261 | 1.1.3.2.6 | **SF Investment Strategy FO Application Project Closure** |  | 11d | 2025-11-20 | 2025-12-05 | 257 | 151.59d |  | No | No | No | No | No | Yes | 2025-11-20 | 2025-12-05 |
| 262 | 1.1.3.2.6.1 | SF Investment Strategy FO Application Lessons Learned Documentation |  | 5d | 2025-11-20 | 2025-11-27 |  | 151.59d | 0d | No | No | No | No | No | No | 2025-11-20 | 2025-11-27 |
| 263 | 1.1.3.2.6.2 | SF Investment Strategy FO Application Closure Report |  | 5d | 2025-11-27 | 2025-12-04 | 262 | 151.59d | 0d | No | No | No | No | No | No | 2025-11-27 | 2025-12-04 |
| 264 | 1.1.3.2.6.3 | SF Investment Strategy FO Application Final Review Meeting |  | 1d | 2025-12-04 | 2025-12-05 | 263 | 151.59d | 0d | No | No | No | No | No | No | 2025-12-04 | 2025-12-05 |
| 265 | 1.1.3.2.6.4 | SF Investment Strategy FO Application Project Closure Complete | milestone | 0d | 2025-12-05 | 2025-12-05 | 264 | 151.59d |  | No | No | No | No | No | No | 2025-12-05 | 2025-12-05 |

| ID | WBS | Task | Duration | Start | Finish | Predecessors | Complete | Remaining | Baseline 1 start | Baseline 1 finish | Total slack | Constraint | Resources | Work | Actual work | Tasks Due this Month | Text30 | Actual Task Start | Initial Planned Start | Initial Planned Finish | Actual Task Finish | Finish Difference | Tasks Due next Month | Tasks Due this week | Tasks Due next Week | Tasks Due Today | Last Tasks | Task active Day | Number1 | Number2 | Start Difference | Field |
| --- | --- | --- | --- | --- | --- | --- | --- | --- | --- | --- | --- | --- | --- | --- | --- | --- | --- | --- | --- | --- | --- | --- | --- | --- | --- | --- | --- | --- | --- | --- | --- | --- |
| 266 | 1.1.4 | **ZnNi Line Critical Maintenance** | 450.75d | 2024-07-02 A | 2026-03-24 |  | 53% | 213.81d | 2024-04-08 | 2024-11-07 | 74.44d |  |  | 1102.88h | 642.08h | No | Maintenance System | 2024-04-08 | 2024-04-08 | 2026-02-17 |  |  |  |  |  |  |  |  |  |  |  |  |
| 267 | 1.1.4.1 | **Chiller System Serviceable** | 59.78d | 2024-12-19 A | 2025-03-12 A |  | 100% |  | 2024-04-08 | 2024-06-06 |  |  |  | 63.08h | 63.08h | No | Maintenance System | 2024-10-10 | 2024-10-10 | 2025-03-12 | 2025-03-20 | 8 |  |  |  |  |  |  |  |  |  |  |
| 268 | 1.1.4.1.1 | **Phase 1 - Interim Chiller System Install** | 59.78d | 2024-12-19 A | 2025-03-12 A |  | 100% |  |  |  |  |  |  | 63.08h | 63.08h | No |  | 2024-10-10 | 2024-10-10 | 2025-03-12 | 2025-03-12 |  |  |  |  |  |  |  |  |  |  |  |
| 269 | 1.1.4.1.1.1 | **Interim Chiller System Install Gate 1- Approval to continue** | 2d | 2024-12-19 A | 2024-12-20 A |  | 100% |  |  |  |  |  |  | 4h | 4h | No |  | 2025-01-06 | 2024-10-10 | 2024-12-20 | 2025-01-23 |  |  |  |  |  |  |  |  |  |  |  |
| 270 | 1.1.4.1.1.1.1 | Interim Chiller System Install HSE risk assessment TBCO | 1d | 2024-12-19 A | 2024-12-19 A |  | 100% |  |  |  |  | start no earlier than 2024-12-19 | Ian Smith [25%] | 2h | 2h | No |  | 2025-01-06 | 2024-10-10 | 2024-10-10 | 2025-01-23 | 105 | No | No | No | No | Yes | 1 | -1 | -1 | 88 | 1 |
| 271 | 1.1.4.1.1.1.2 | Interim Chiller System Install PID, scope of work, WBS, PBS completed | 1d | 2024-12-20 A | 2024-12-20 A | 270 | 100% |  |  |  |  |  | James Fleming [25%] | 2h | 2h | No |  | 2025-01-21 | 2024-10-10 | 2024-10-10 | 2025-01-21 | 103 | No | No | No | No | Yes | 1 | -1 | -1 | 103 | 1 |
| 272 | 1.1.4.1.1.2 | **Gate 2 - Approval to RFQ** | 2d | 2024-12-23 A | 2024-12-24 A |  | 100% |  |  |  |  |  |  | 4h | 4h | No |  | 2024-10-10 | 2024-10-10 | 2024-12-24 | 2024-11-20 |  |  |  |  |  |  |  |  |  |  |  |
| 273 | 1.1.4.1.1.2.1 | Interim Chiller System Install Vendors identified and communicated | 1d | 2024-12-23 A | 2024-12-23 A | 271 | 100% |  |  |  |  |  | James Fleming [12.5%] | 1h | 1h | No |  | 2024-10-10 | 2024-10-10 | 2024-10-10 | 2024-10-10 |  | No | No | No | No | Yes | 1 | -1 | -1 |  | 1 |
| 274 | 1.1.4.1.1.2.2 | Interim Chiller System Install Requirements defined | 1d | 2024-12-23 A | 2024-12-23 A | 271 | 100% |  |  |  |  |  | James Fleming [12.5%] | 1h | 1h | No |  | 2024-11-20 | 2024-10-11 | 2024-10-11 | 2024-11-20 | 40 | No | No | No | No | Yes | 1 | -1 | -1 | 40 | 1 |
| 275 | 1.1.4.1.1.2.3 | Interim Chiller System Install specifications agreed and approved | 1d | 2024-12-24 A | 2024-12-24 A | 274 | 100% |  |  |  |  |  | James Fleming [25%] | 2h | 2h | No |  | 2024-11-22 | 2024-10-14 | 2024-10-14 | 2024-11-22 | 39 | No | No | No | No | Yes | 1 | -1 | -1 | 39 | 1 |
| 276 | 1.1.4.1.1.3 | **Gate 3 - Approval to Procure** | 36d | 2024-12-25 A | 2025-02-12 A |  | 100% |  |  |  |  |  |  | 10h | 10h | No |  | 2024-10-16 | 2024-10-15 | 2024-10-29 | 2025-03-03 |  |  |  |  |  |  |  |  |  |  |  |
| 277 | 1.1.4.1.1.3.1 | Interim Chiller System Install Proposals received from SK | 1d | 2024-12-25 A | 2024-12-25 A | 275 | 100% |  |  |  |  | start no earlier than 2024-11-01 | James Fleming [12.5%] | 1h | 1h | No |  | 2024-11-13 | 2024-10-15 | 2024-10-15 | 2024-11-13 | 29 | No | No | No | No | Yes | 1 | -1 | -1 | 29 | 1 |
| 278 | 1.1.4.1.1.3.2 | Interim Chiller System Install Proposals requested from GK for programming | 1d | 2025-01-06 A | 2025-01-06 A | 277FS+7d | 100% |  |  |  |  |  | James Fleming | 1h | 1h | No |  | 2025-03-03 | 2024-10-16 | 2024-10-16 | 2025-03-03 | 138 | No | No | No | No | Yes | 1 | -1 | -1 | 138 | 1 |
| 279 | 1.1.4.1.1.3.3 | Interim Chiller System Install Method for accessing PLC identified | 0.25d | 2025-02-04 A | 2025-02-04 A | 278FS+20d | 100% |  |  |  |  |  | James Fleming | 2h | 2h | No |  | 2025-03-03 | 2024-10-17 | 2024-10-17 | 2025-03-03 | 137 | No | No | No | No | Yes | 1 | -1 | -1 | 137 | 1 |
| 280 | 1.1.4.1.1.3.4 | Interim Chiller System Install Proposals received from GK for programming | 1d | 2025-02-05 A | 2025-02-05 A | 279 | 100% |  |  |  |  |  | James Fleming [12.5%] | 1h | 1h | No |  | 2025-03-03 | 2024-10-18 | 2024-10-18 | 2025-03-03 | 136 | No | No | No | No | Yes | 1 | -1 | -1 | 136 | 1 |
| 281 | 1.1.4.1.1.3.5 | Interim Chiller System Install Sequencing for Chiller extracted from PLC | 1d | 2025-02-12 A | 2025-02-12 A | 279FS+5d | 100% |  |  |  |  |  | James Fleming [25%] | 2h | 2h | No |  | 2025-03-03 | 2024-10-21 | 2024-10-21 | 2025-03-03 | 133 | No | No | No | No | Yes | 1 | -1 | -1 | 133 | 1 |
| 282 | 1.1.4.1.1.3.6 | Interim Chiller System Install 3PH supply solution agreed | 1d | 2025-01-24 A | 2025-01-24 A |  | 100% |  |  |  |  |  | James Fleming | 2h | 2h | No |  | 2025-01-30 | 2024-10-23 | 2024-10-23 | 2025-01-30 | 99 | No | No | No | No | Yes | 1 | -1 | -1 | 99 | 1 |
| 283 | 1.1.4.1.1.3.7 | Interim Chiller System Install Proposals received for rental chiller siting frame/platform | 1d | 2025-01-24 A | 2025-01-24 A |  | 100% |  |  |  |  | start no earlier than 2025-01-24 | James Fleming [12.5%] | 1h | 1h | No |  | 2025-01-28 | 2024-10-24 | 2024-10-24 | 2025-01-28 | 96 | No | No | No | No | Yes | 1 | -1 | -1 | 96 | 1 |
| 284 | 1.1.4.1.1.4 | **Gate 4 - Approval to Start work** | 17d | 2025-01-23 A | 2025-02-14 A |  | 100% |  |  |  |  |  |  | 9.08h | 9.08h | No |  | 2024-11-25 | 2024-10-30 | 2024-11-14 | 2025-03-05 |  |  |  |  |  |  |  |  |  |  |  |
| 285 | 1.1.4.1.1.4.1 | Interim Chiller System Install PO raised on SK | 1d | 2025-01-23 A | 2025-02-05 A |  | 100% |  |  |  |  |  | Josh Avent [13%] | 1.04h | 1.04h | No |  | 2024-11-25 | 2024-10-30 | 2024-10-30 | 2024-11-25 | 26 | No | No | No | No | Yes | 1 | -1 | -1 | 26 | 1 |
| 286 | 1.1.4.1.1.4.2 | Interim Chiller System Install PO raised for rental chiller siting | 1d | 2025-02-05 A | 2025-02-05 A |  | 100% |  |  |  |  |  | Josh Avent [13%] | 1.04h | 1.04h | No |  | 2025-01-29 | 2024-11-04 | 2024-11-04 | 2025-01-29 | 86 | No | No | No | No | Yes | 1 | -1 | -1 | 86 | 1 |
| 287 | 1.1.4.1.1.4.3 | Interim Chiller System Install Line handover to maintnenance agreed | 1d | 2025-01-28 A | 2025-01-28 A |  | 100% |  |  |  |  |  | James Fleming [12.5%] | 1h | 1h | No |  | 2025-03-07 | 2024-11-06 | 2024-11-06 | 2025-03-07 | 121 | No | No | No | No | Yes | 1 | -1 | -1 | 121 | 1 |
| 288 | 1.1.4.1.1.4.4 | Interim Chiller System Install Vendor RAMs | 1d | 2025-02-11 A | 2025-02-11 A |  | 100% |  |  |  |  |  | James Allcoat [12.5%] | 1h | 1h | No |  | 2025-03-07 | 2024-11-08 | 2024-11-08 | 2025-03-07 | 119 | No | No | No | No | Yes | 1 | -1 | -1 | 119 | 1 |
| 289 | 1.1.4.1.1.4.5 | Interim Chiller System Install Risk Assessments | 1d | 2025-02-12 A | 2025-02-12 A | 288 | 100% |  |  |  |  |  | James Allcoat [25%] | 2h | 2h | No |  | 2025-03-07 | 2024-11-11 | 2024-11-11 | 2025-03-07 | 116 | No | No | No | No | Yes | 1 | -1 | -1 | 116 | 1 |
| 290 | 1.1.4.1.1.4.6 | Interim Chiller System Install Line Isolated | 1d | 2025-02-13 A | 2025-02-13 A | 289 | 100% |  |  |  |  |  | James Allcoat [12.5%] | 1h | 1h | No |  | 2025-03-05 | 2024-11-12 | 2024-11-12 | 2025-03-05 | 113 | No | No | No | No | Yes | 1 | -1 | -1 | 113 | 1 |
| 291 | 1.1.4.1.1.4.7 | Interim Chiller System Install Area Prep - contamination containment | 1d | 2025-02-14 A | 2025-02-14 A | 290 | 100% |  |  |  |  |  | James Allcoat [12.5%] | 1h | 1h | No |  | 2025-03-05 | 2024-11-13 | 2024-11-13 | 2025-03-05 | 112 | No | No | No | No | Yes | 1 | -1 | -1 | 112 | 1 |
| 292 | 1.1.4.1.1.4.8 | Interim Chiller System Install Services Available | 1d | 2025-02-14 A | 2025-02-14 A | 290 | 100% |  |  |  |  |  | James Allcoat [12.5%] | 1h | 1h | No |  | 2025-03-05 | 2024-11-14 | 2024-11-14 | 2025-03-05 | 111 | No | No | No | No | Yes | 1 | -1 | -1 | 111 | 1 |

Notes:
- 267: JF 250724 Awaiting Quotation from SK to understand timescales - plan to be update post recipt / JF 140824 Requested documentation from James ALLCOAT not recieved as yet. Need to link to project plan: Quote, PO where applicable.
- 275: JF 191224 James Bick provided a spec to SK and the wider team, SK should be able to make a proposal based on this.

| ID | WBS | Task | Type | Duration | Start | Finish | Predecessors | Complete | Remaining | Total slack | Constraint | Resources | Work | Actual work | Tasks Due this Month | Actual Task Start | Actual Task Finish | Initial Planned Start | Initial Planned Finish | Tasks Due next Month | Tasks Due this week | Tasks Due next Week | Tasks Due Today | Last Tasks | Task active Day | Number1 | Number2 | Start Difference | Finish Difference | Field |
| --- | --- | --- | --- | --- | --- | --- | --- | --- | --- | --- | --- | --- | --- | --- | --- | --- | --- | --- | --- | --- | --- | --- | --- | --- | --- | --- | --- | --- | --- | --- |
| 293 | 1.1.4.1.1.5 | **Gate 5 - Approval to Handover to SF** |  | 8d | 2025-02-28 A | 2025-03-11 A |  | 100% |  |  |  |  | 33h | 33h | No | 2025-01-28 | 2025-03-20 | 2024-11-15 | 2024-11-29 |  |  |  |  |  |  |  |  |  |  |  |
| 294 | 1.1.4.1.1.5.1 | Interim Chiller System Install Preprogramming PLC work |  | 1d | 2025-02-28 A | 2025-02-28 A |  | 100% |  |  |  | ASL [25%] | 2h | 2h | No | 2025-03-03 | 2025-03-03 | 2024-11-15 | 2024-11-15 | No | No | No | No | Yes | 1 | -1 | -1 | 108 | 108 | 1 |
| 295 | 1.1.4.1.1.5.2 | Interim Chiller System Install siting of rental chiller and 3PH power agreed |  | 1d | 2025-03-03 A | 2025-03-03 A | 292FS+10d | 100% |  |  |  | James Allcoat [25%] | 2h | 2h | No | 2025-01-28 | 2025-01-28 | 2024-11-18 | 2024-11-18 | No | No | No | No | Yes | 1 | -1 | -1 | 71 | 71 | 1 |
| 296 | 1.1.4.1.1.5.3 | Interim Chiller System Install 3 phase AC supply installation complete |  | 1d | 2025-03-04 A | 2025-03-04 A | 295 | 100% |  |  |  | James Allcoat [50%] | 4h | 4h | No | 2025-02-05 | 2025-02-05 | 2024-11-19 | 2024-11-19 | No | No | No | No | Yes | 1 | -1 | -1 | 78 | 78 | 1 |
| 297 | 1.1.4.1.1.5.4 | Interim Chiller System Install Confirm Delivery of PHE |  | 1d | 2025-03-05 A | 2025-03-05 A | 296 | 100% |  |  |  | James Fleming [12.5%] | 1h | 1h | No | 2025-02-07 | 2025-02-07 | 2024-11-20 | 2024-11-20 | No | No | No | No | Yes | 1 | -1 | -1 | 79 | 79 | 1 |
| 298 | 1.1.4.1.1.5.5 | Interim Chiller System Install Confirm Delivery of rental chiller |  | 1d | 2025-03-05 A | 2025-03-05 A | 296 | 100% |  |  |  | James Fleming [12.5%] | 1h | 1h | No | 2025-03-06 | 2025-03-06 | 2024-11-21 | 2024-11-21 | No | No | No | No | Yes | 1 | -1 | -1 | 105 | 105 | 1 |
| 299 | 1.1.4.1.1.5.6 | Interim Chiller System Install siting of rental chiller & connection |  | 0.5d | 2025-03-06 A | 2025-03-06 A | 298 | 100% |  |  |  | James Fleming [50%] | 2h | 2h | No | 2025-03-07 | 2025-03-07 | 2024-11-21 | 2024-11-21 | No | No | No | No | Yes | 1 | -1 | -1 | 106 | 106 | 1 |
| 300 | 1.1.4.1.1.5.7 | Interim Chiller System Install Disconnection and removal of incumbent PHEs |  | 2d | 2025-03-06 A | 2025-03-07 A | 298 | 100% |  |  |  | SK [37.5%] | 4h | 4h | No | 2025-03-04 | 2025-03-04 | 2024-11-22 | 2024-11-26 | No | No | No | No | Yes | 1 | -1 | -1 | 102 | 98 | 1 |
| 301 | 1.1.4.1.1.5.8 | Interim Chiller System Install Installation of titanium PHEs |  | 1d | 2025-03-07 A | 2025-03-07 A | 299 | 100% |  |  |  | SK | 8h | 8h | No | 2025-03-05 | 2025-03-05 | 2024-11-27 | 2024-11-27 | No | No | No | No | Yes | 1 | -1 | -1 | 98 | 98 | 1 |
| 302 | 1.1.4.1.1.5.9 | Interim Chiller System Install Interim Chiller System commissioning |  | 1d | 2025-03-10 A | 2025-03-10 A | 300 | 100% |  |  |  | SK | 8h | 8h | No | 2025-03-10 | 2025-03-10 | 2024-11-28 | 2024-11-28 | No | No | No | No | Yes | 1 | -1 | -1 | 102 | 102 | 1 |
| 303 | 1.1.4.1.1.5.10 | Interim Chiller System Install Sign off |  | 1d | 2025-03-11 A | 2025-03-11 A | 302 | 100% |  |  |  | Josh Avent [12.5%] | 1h | 1h | No | 2025-03-07 | 2025-03-20 | 2024-11-29 | 2024-11-29 | No | No | No | No | Yes | 1 | -1 | -1 | 98 | 111 | 1 |
| 304 | 1.1.4.1.1.6 | **Gate 6 - Approval to close out workpackage** |  | 1.78d | 2025-03-11 A | 2025-03-12 A |  | 100% |  |  |  |  | 3h | 3h | No | 2025-03-18 | 2025-03-20 | 2024-11-29 | 2024-12-02 |  |  |  |  |  |  |  |  |  |  |  |
| 305 | 1.1.4.1.1.6.1 | Interim Chiller System Install Desseminate lessons learnt |  | 1d | 2025-03-11 A | 2025-03-11 A | 302 | 100% |  |  |  | James Fleming [25%] | 2h | 2h | No | 2025-03-18 | 2025-03-18 | 2024-11-29 | 2024-11-29 | No | No | No | No | Yes | 1 | -1 | -1 | 109 | 109 | 1 |
| 306 | 1.1.4.1.1.6.2 | Interim Chiller System Install Close out project |  | 1d | 2025-03-11 A | 2025-03-12 A | 305 | 100% |  |  |  | James Fleming [12.5%] | 1h | 1h | No | 2025-03-20 | 2025-03-20 | 2024-12-02 | 2024-12-02 | No | No | No | No | Yes | 1 | -1 | -1 | 108 | 108 | 1 |
| 307 | 1.1.4.2 | **Vat 8 Remove & Install** |  | 441.75d | 2024-07-15 A | 2026-03-24 |  | 11% | 394.46d | 74.44d |  |  | 481.8h | 26h | No | 2024-11-01 |  | 2024-11-01 | 2025-09-24 |  |  |  |  |  |  |  |  |  |  |  |
| 308 | 1.1.4.2.1 | **Vat 8 Remove & Install Gate 1- Approval to continue project** |  | 1.5d | 2024-11-01 A | 2024-11-04 A |  | 100% |  |  |  |  | 3h | 3h | No | 2024-11-01 | 2024-11-01 | 2024-11-01 | 2024-11-01 |  |  |  |  |  |  |  |  |  |  |  |
| 309 | 1.1.4.2.1.1 | Vat 8 Remove & Install PID, scope of work, WBS, PBS completed |  | 1d | 2024-11-01 A | 2024-11-04 A | 310 | 100% |  |  |  | James Fleming [25%] | 2h | 2h | No | 2025-01-08 | 2025-01-08 | 2024-11-01 | 2024-11-01 | No | No | No | No | Yes | 1 | -1 | -1 | 68 | 68 | 1 |
| 310 | 1.1.4.2.1.2 | Vat 8 Remove & Install HSE risk assessment TBCO |  | 1d | 2024-11-01 A | 2024-11-01 A | 16FS-8d | 100% |  |  | start no earlier than 2024-11-01 | Ian Smith [12.5%] | 1h | 1h | No | 2024-11-05 | 2024-11-05 | 2024-11-01 | 2024-11-01 | No | No | No | No | Yes | 1 | -1 | -1 | 4 | 4 | 1 |
| 311 | 1.1.4.2.2 | **Vat 8 Remove & Install Gate 2 - Approval to RFQ** |  | 0.5d | 2024-11-01 A | 2024-11-01 A |  | 100% |  |  |  |  | 2h | 2h | No | 2024-11-04 | 2024-11-06 | 2024-11-04 | 2024-11-06 |  |  |  |  |  |  |  |  |  |  |  |
| 312 | 1.1.4.2.2.1 | Vat 8 Remove & Install Vendors identified |  | 0.5d | 2024-11-01 A | 2024-11-01 A | 309 | 100% |  |  |  | James Fleming [12.5%] | 0.5h | 0.5h | No | 2024-11-04 | 2024-11-04 | 2024-11-04 | 2024-11-04 | No | No | No | No | Yes | 1 | -1 | -1 |  |  | 1 |
| 313 | 1.1.4.2.2.2 | Vat 8 Remove & Install Requirements communicated |  | 0.5d | 2024-11-01 A | 2024-11-01 A | 309 | 100% |  |  |  | James Fleming [12.5%] | 0.5h | 0.5h | No | 2024-11-05 | 2024-11-05 | 2024-11-05 | 2024-11-05 | No | No | No | No | Yes | 1 | -1 | -1 |  |  | 1 |
| 314 | 1.1.4.2.2.3 | Vat 8 Remove & Install SoWs agreed and approved |  | 0.5d | 2024-11-01 A | 2024-11-01 A | 309 | 100% |  |  |  | James Fleming [25%] | 1h | 1h | No | 2024-11-06 | 2024-11-06 | 2024-11-06 | 2024-11-06 | No | No | No | No | Yes | 1 | -1 | -1 |  |  | 1 |
| 315 | 1.1.4.2.3 | **Vat 8 Remove & Install Gate 3 - Approval to Procure** |  | 114.31d | 2024-11-11 A | 2025-04-18 A |  | 100% |  |  |  |  | 9h | 9h | No | 2024-11-07 | 2025-04-25 | 2024-11-07 | 2024-11-26 |  |  |  |  |  |  |  |  |  |  |  |
| 316 | 1.1.4.2.3.1 | Vat 8 Remove & Install Proposals received |  | 1d | 2024-11-11 A | 2024-11-11 A | 314 | 100% |  |  | start no earlier than 2024-12-16 | James Fleming [12.5%] | 1h | 1h | No | 2024-12-16 | 2024-12-16 | 2024-11-07 | 2024-11-07 | No | No | No | No | Yes | 1 | -1 | -1 | 39 | 39 | 1 |
| 317 | 1.1.4.2.3.2 | Vat 8 Remove & Install Proposal Agreed |  | 5d | 2024-11-18 A | 2024-11-25 A | 316FS+5d | 100% |  |  |  | Scott Niedzwiecki [25%] | 2h | 2h | No | 2024-11-18 | 2025-01-14 | 2024-11-08 | 2024-11-15 | No | No | No | No | Yes | 1 | -1 | -1 | 10 | 60 | 1 |
| 318 | 1.1.4.2.3.3 | Vat 8 Remove & Install Raise CO4 Paperwork |  | 1d | 2025-01-15 A | 2025-01-16 A | 317FS+37d | 100% |  |  |  | James Fleming [12.5%] | 1h | 1h | No | 2025-02-05 | 2025-02-14 | 2024-11-18 | 2024-11-18 | No | No | No | No | Yes | 1 |  |  | 79 | 88 | 1 |
| 319 | 1.1.4.2.3.4 | Vat 8 Remove & Install Raise Vat PR/PO |  | 1d | 2025-03-20 A | 2025-03-21 A | 318FS+45d | 100% |  |  |  | Josh Avent [12.5%] | 1h | 1h | No | 2025-02-05 | 2025-04-25 | 2024-11-19 | 2024-11-19 | No | No | No | No | Yes | 1 |  |  | 78 | 157 | 1 |
| 320 | 1.1.4.2.3.5 | Vat 8 Remove & Install Raise Capex Paperwork |  | 3d | 2025-01-15 A | 2025-01-20 A | 319 | 100% |  |  |  | James Fleming [12.5%] | 3h | 3h | No | 2025-02-05 | 2025-02-14 | 2024-11-20 | 2024-11-25 | No | No | No | No | Yes | 1 | -1 | -1 | 77 | 81 | 1 |
| 321 | 1.1.4.2.3.6 | Vat 8 Remove & Install Raise Install & Hoist PR/PO |  | 1d | 2025-03-21 A | 2025-03-24 A | 319 | 100% |  |  |  | Josh Avent [12.5%] | 1h | 1h | No | 2025-02-05 | 2025-04-25 | 2024-11-26 | 2024-11-26 | No | No | No | No | Yes | 1 |  |  | 71 | 150 | 1 |
| 322 | 1.1.4.2.3.7 | Vat 8 Remove & Install Funding Raised Complete | milestone | 0d | 2025-04-18 A | 2025-04-18 A | 321FS+19d | 100% |  |  |  | James Fleming |  |  | No | 2025-02-05 | 2025-04-25 | 2024-11-26 | 2024-11-26 | No | No | No | No | Yes | 1 |  |  | 71 | 150 | 1 |

| ID | WBS | Task | Type | Duration | Start | Finish | Predecessors | Complete | Remaining | Total slack | Free slack | Resources | Work | Actual work | Tasks Due this Month | Actual Task Start | Initial Planned Start | Initial Planned Finish | Tasks Due next Month | Tasks Due this week | Tasks Due next Week | Tasks Due Today | Last Tasks | Task active Day | Number1 | Number2 | Start Difference | Field | Actual Task Finish | Finish Difference |
| --- | --- | --- | --- | --- | --- | --- | --- | --- | --- | --- | --- | --- | --- | --- | --- | --- | --- | --- | --- | --- | --- | --- | --- | --- | --- | --- | --- | --- | --- | --- |
| 323 | 1.1.4.2.4 | **Vat 8 Remove & Install Gate 4 - Approval to Start work** |  | 117.97d | 2025-04-28 A | 2025-10-09 |  | 6% | 111.16d | 192.91d |  |  | 338.8h | 10h | No | 2025-06-10 | 2024-11-27 | 2024-11-28 |  |  |  |  |  |  |  |  |  |  |  |  |
| 324 | 1.1.4.2.4.1 | Vat 8 Remove & Install Structural Calculations Complete |  | 1d | 2025-05-22 A | 2025-05-23 A | 322FS+24d | 100% |  |  |  | Koch [50%] | 4h | 4h | No | 2025-06-10 | 2024-11-27 | 2024-11-27 | No | No | No | No | Yes | 1 | -1 | -1 | 195 | 1 |  |  |
| 325 | 1.1.4.2.4.2 | Vat 8 Remove & Install Vat 8 transit route scanned Complete |  | 1d | 2025-04-28 A | 2025-04-29 A | 324 | 100% |  |  |  | Koch [50%] | 4h | 4h | No | 2025-06-10 | 2024-11-28 | 2024-11-28 | No | No | No | No | Yes | 1 | -1 | -1 | 194 | 1 |  |  |
| 326 | 1.1.4.2.4.3 | Vat 8 Remove & Install Vat 8 Prelims (structural calcs & route to line 360 scan) Complete | milestone | 0d | 2025-05-23 A | 2025-05-30 A | 324FS+5d | 100% |  |  |  | James Fleming |  |  | No | 2025-06-10 | 2024-11-28 | 2024-11-28 | No | No | No | No | Yes | 1 |  |  | 194 | 1 |  |  |
| 327 | 1.1.4.2.4.4 | **Vat 8 Remove & Install Design** |  | 10.97d | 2025-06-10 A | 2025-06-25 A |  | 100% |  |  |  |  | 2h | 2h | No | 2025-06-10 | 2025-01-02 | 2025-02-25 |  |  |  |  |  |  |  |  |  |  |  |  |
| 328 | 1.1.4.2.4.4.1 | Vat 8 Remove & Install Initial Design Review and sign off |  | 1d | 2025-06-10 A | 2025-06-11 A | 326FS+7d | 100% |  |  |  | James Fleming [25%] | 2h | 2h | No | 2025-06-10 | 2025-01-02 | 2025-01-02 | No | No | No | No | Yes | 1 | -1 | -1 | 159 | 1 | 2025-06-10 | 159 |
| 329 | 1.1.4.2.4.4.2 | Vat 8 Remove & Install Final Design Review & Sign off | milestone | 0d | 2025-06-18 A | 2025-06-18 A | 328FS+5d | 100% |  |  |  | James Fleming |  |  | No | 2025-06-24 | 2025-01-02 | 2025-01-02 | No | No | No | No | Yes | 1 | -1 | -1 | 173 | 1 | 2025-06-24 | 173 |
| 330 | 1.1.4.2.4.4.3 | Vat 8 Remove & Install Approval for Manufacture | milestone | 0d | 2025-06-25 A | 2025-06-25 A | 329FS+5d | 100% |  |  |  |  |  |  | No | 2025-06-25 | 2025-01-02 | 2025-01-02 | No | No | No | No | Yes | 1 |  |  | 174 | 1 | 2025-06-25 | 174 |
| 331 | 1.1.4.2.4.5 | Vat 8 Remove & Install Manaufacture |  | 35d | 2025-08-12 | 2025-09-30 | 330FS+34d |  |  | -331.09d | 0d | Koch | 280h |  | No |  | 2025-01-02 | 2025-02-20 | No | No | No | No | No |  | -1 | -1 |  |  |  |  |
| 332 | 1.1.4.2.4.6 | Vat 8 Remove & Install Testing Complete |  | 1d | 2025-09-30 | 2025-10-01 | 331 |  |  | -331.09d | 0d | Koch | 8h |  | No |  | 2025-02-21 | 2025-02-21 | No | No | No | No | No |  | -1 | -1 |  |  |  |  |
| 333 | 1.1.4.2.4.7 | Vat 8 Remove & Install Manufacture Complete | milestone | 0d | 2025-10-01 | 2025-10-01 | 332 |  |  | -331.09d | 0d | James Fleming |  |  | No |  | 2025-02-25 | 2025-02-25 | No | No | No | No | No |  | -1 | -1 |  |  |  |  |
| 334 | 1.1.4.2.4.8 | **Vat 8 Remove & Install Logistics** |  | 12d | 2025-09-23 | 2025-10-09 |  |  |  | -322.09d | 0d |  | 26.8h |  | No |  | 2025-02-26 | 2025-03-14 |  |  |  |  |  |  |  |  |  |  |  |  |
| 335 | 1.1.4.2.4.8.1 | Vat 8 Remove & Install Skip Location Defined |  | 1d | 2025-09-23 | 2025-09-24 | 333SF-5d |  |  | 203.91d |  | Facilities [12.5%] | 1h |  | No |  | 2025-02-26 | 2025-02-26 | No | No | No | No | No |  | -1 | -1 |  |  |  |  |
| 336 | 1.1.4.2.4.8.2 | Vat 8 Remove & Install Route in Plan |  | 1d | 2025-09-23 | 2025-09-24 | 333SF-5d |  |  | 203.91d |  | James Fleming | 8h |  | No |  | 2025-02-27 | 2025-02-27 | No | No | No | No | No |  | -1 | -1 |  |  |  |  |
| 337 | 1.1.4.2.4.8.3 | Vat 8 Remove & Install Unload area cordoned |  | 1d | 2025-10-03 | 2025-10-06 | 333FS+2d |  |  | 195.91d |  | James Allcoat [10%] | 0.8h |  | No |  | 2025-02-28 | 2025-02-28 | No | No | No | No | No |  | -1 | -1 |  |  |  |  |
| 338 | 1.1.4.2.4.8.4 | Vat 8 Remove & Install Vat 8 delivery |  | 1d | 2025-10-06 | 2025-10-07 | 333FS+3d |  |  | -331.09d | 0d | Josh Avent [12.5%] | 1h |  | No |  | 2025-03-03 | 2025-03-03 | No | No | No | No | No |  | -1 | -1 |  |  |  |  |
| 339 | 1.1.4.2.4.8.5 | Vat 8 Remove & Install Gantry Extension Erect |  | 1d | 2025-10-07 | 2025-10-08 | 338 |  |  | 192.91d | 0d | Koch | 8h |  | No |  | 2025-03-04 | 2025-03-04 | No | No | No | No | No |  | -1 | -1 |  |  |  |  |
| 340 | 1.1.4.2.4.8.6 | Boggie & Winch Loaded |  | 1d | 2025-10-08 | 2025-10-09 | 339 |  |  | 192.91d |  | Koch | 8h |  | No |  | 2025-03-05 | 2025-03-05 | No | No | No | No | No |  | -1 | -1 |  |  |  |  |
| 341 | 1.1.4.2.4.9 | Vat 8 Remove & Install Stas Booked |  | 1d | 2025-09-19 | 2025-09-22 | 338SF-10d |  |  | 205.91d |  | James Allcoat [12.5%] | 1h |  | No |  | 2025-03-06 | 2025-03-06 | No | No | No | No | No |  | -1 | -1 |  |  |  |  |
| 342 | 1.1.4.2.4.10 | Vat 8 Remove & Install Vendor RAMs |  | 1d | 2025-09-26 | 2025-09-29 | 338SF-5d |  |  | 200.91d |  | James Allcoat [25%] | 2h |  | No |  | 2025-03-07 | 2025-03-07 | No | No | No | No | No |  | -1 | -1 |  |  |  |  |
| 343 | 1.1.4.2.4.11 | Vat 8 Remove & Install Risk Assessments |  | 1d | 2025-09-19 | 2025-09-22 | 338SF-10d |  |  | 205.91d |  | James Allcoat [25%] | 2h |  | No |  | 2025-03-10 | 2025-03-10 | No | No | No | No | No |  | -1 | -1 |  |  |  |  |
| 344 | 1.1.4.2.4.12 | Vat 8 Remove & Install 415V AC Power Supply Installed |  | 1d | 2025-09-19 | 2025-09-22 | 338SF-10d |  |  | 205.91d |  | Facilities [50%] | 4h |  | No |  | 2025-03-11 | 2025-03-11 | No | No | No | No | No |  | -1 | -1 |  |  |  |  |
| 345 | 1.1.4.2.4.13 | Vat 8 Remove & Install Line Isolated |  | 1d | 2025-10-02 | 2025-10-03 | 338SF-1d |  |  | 196.91d |  | James Allcoat [12.5%] | 1h |  | No |  | 2025-03-12 | 2025-03-12 | No | No | No | No | No |  | -1 | -1 |  |  |  |  |
| 346 | 1.1.4.2.4.14 | Vat 8 Remove & Install Area Prep - contamination containment |  | 1d | 2025-10-02 | 2025-10-03 | 338SF-1d |  |  | -331.09d | 0d | James Allcoat [25%] | 2h |  | No |  | 2025-03-13 | 2025-03-13 | No | No | No | No | No |  | -1 | -1 |  |  |  |  |
| 347 | 1.1.4.2.4.15 | Vat 8 Remove & Install Services |  | 1d | 2025-10-03 | 2025-10-06 | 346 |  |  | -331.09d | 0d | James Allcoat [25%] | 2h |  | No |  | 2025-03-14 | 2025-03-14 | No | No | No | No | No |  | -1 | -1 |  |  |  |  |

| ID | WBS | Task | Type | Duration | Start | Finish | Predecessors | Complete | Remaining | Baseline 1 start | Baseline 1 finish | Total slack | Free slack | Resources | Work | Actual work | Tasks Due this Month | Initial Planned Start | Initial Planned Finish | Tasks Due next Month | Tasks Due this week | Tasks Due next Week | Tasks Due Today | Last Tasks | Number1 | Number2 | Text30 | Text7 | Text8 | Task active Day | Field |
| --- | --- | --- | --- | --- | --- | --- | --- | --- | --- | --- | --- | --- | --- | --- | --- | --- | --- | --- | --- | --- | --- | --- | --- | --- | --- | --- | --- | --- | --- | --- | --- |
| 348 | 1.1.4.2.5 | **Vat 8 Remove & Install Gate 5 - Approval to Handover to SF** |  | 439.84d | 2024-07-15 A | 2026-03-20 |  | 2% | 432.63d |  |  | 76.34d |  |  | 126h | 2h | No | 2025-03-14 | 2025-03-26 |  |  |  |  |  |  |  |  |  |  |  |  |
| 349 | 1.1.4.2.5.1 | **Vat 8 Remove & Install Removal** |  | 4d | 2025-10-06 | 2025-10-10 |  |  |  |  |  | -331.09d | 0d |  | 32h |  | No | 2025-03-14 | 2025-03-26 |  |  |  |  |  |  |  |  |  |  |  |  |
| 350 | 1.1.4.2.5.1.1 | Vat 8 Remove & Install Internal Structures Removed |  | 1d | 2025-10-06 | 2025-10-07 | 347 |  |  |  |  | -331.09d | 0d | Koch | 8h |  | No | 2025-03-14 | 2025-03-18 | No | No | No | No | No | -1 | -1 |  |  |  |  |  |
| 351 | 1.1.4.2.5.1.2 | Vat 8 Remove & Install External Connections Removed |  | 1d | 2025-10-07 | 2025-10-08 | 350 |  |  |  |  | -331.09d | 0d | Koch | 8h |  | No | 2025-03-19 | 2025-03-20 | No | No | No | No | No | -1 | -1 |  |  |  |  |  |
| 352 | 1.1.4.2.5.1.3 | Vat 8 Remove & Install Vat 8 removed |  | 1d | 2025-10-08 | 2025-10-09 | 351 |  |  |  |  | -331.09d | 0d | Koch | 8h |  | No | 2025-03-21 | 2025-03-24 | No | No | No | No | No | -1 | -1 |  |  |  |  |  |
| 353 | 1.1.4.2.5.1.4 | Vat 8 Remove & Install Vat 8 disposed of |  | 1d | 2025-10-09 | 2025-10-10 | 352 |  |  |  |  | -331.09d | 0d | Koch | 8h |  | No | 2025-03-25 | 2025-03-26 | No | No | No | No | No | -1 | -1 |  |  |  |  |  |
| 354 | 1.1.4.2.5.1.5 | Vat 8 Remove & Install Vat 8 Removal Complete | milestone | 0d | 2025-10-10 | 2025-10-10 | 353 |  |  |  |  | 191.91d |  | James Fleming |  |  | No | 2025-03-26 | 2025-03-27 | No | No | No | No | No |  |  |  |  |  |  |  |
| 355 | 1.1.4.2.5.2 | **Vat 8 Remove & Install Installation** |  | 4.84d | 2025-10-10 | 2025-10-17 |  |  |  |  |  | -331.12d | 0d |  | 33h |  | No | 2025-03-27 | 2025-04-10 |  |  |  |  |  |  |  |  |  |  |  |  |
| 356 | 1.1.4.2.5.2.1 | Vat 8 Remove & Install Spark testing |  | 1d | 2025-10-10 | 2025-10-13 | 353 |  |  |  |  | -331.09d | 0d | Koch | 8h |  | No | 2025-03-27 | 2025-03-27 | No | No | No | No | No | -1 | -1 |  |  |  |  |  |
| 357 | 1.1.4.2.5.2.2 | Vat 8 Remove & Install External structures connected |  | 1d | 2025-10-13 | 2025-10-14 | 356 |  |  |  |  | -331.09d | 0d | Koch | 8h |  | No | 2025-03-31 | 2025-04-01 | No | No | No | No | No | -1 | -1 |  |  |  |  |  |
| 358 | 1.1.4.2.5.2.3 | Vat 8 Remove & Install Internal structures connected |  | 1d | 2025-10-14 | 2025-10-15 | 357 |  |  |  |  | -331.09d | 0d | Koch | 8h |  | No | 2025-04-03 | 2025-04-03 | No | No | No | No | No | -1 | -1 |  |  |  |  |  |
| 359 | 1.1.4.2.5.2.4 | Vat 8 Remove & Install Fill Vat 8 with solution |  | 1d | 2025-10-15 | 2025-10-16 | 358 |  |  |  |  | -331.09d | 0d | Koch | 8h |  | No | 2025-04-07 | 2025-04-07 | No | No | No | No | No | -1 | -1 |  |  |  |  |  |
| 360 | 1.1.4.2.5.2.5 | Vat 8 Remove & Install Leak Check |  | 1d | 2025-10-16 | 2025-10-17 | 359 |  |  |  |  | -331.12d | 0d | James Fleming [12.5%] | 1h |  | No | 2025-04-08 | 2025-04-08 | No | No | No | No | No | -1 | -1 |  |  |  |  |  |
| 361 | 1.1.4.2.5.2.6 | Vat 8 Remove & Install Installation Complete | milestone | 0d | 2025-10-17 | 2025-10-17 | 360 |  |  |  |  | -331.12d | 0d |  |  |  | No |  |  | No | No | No | No | No |  |  |  |  |  |  |  |
| 362 | 1.1.4.2.5.3 | Vat 8 Remove & Install Commissioning |  | 2d | 2025-10-17 | 2025-10-21 | 361 |  |  |  |  | -331.12d | 0d | Koch | 16h |  | No | 2025-04-08 | 2025-04-09 | No | No | No | No | No | -1 | -1 |  |  |  |  |  |
| 363 | 1.1.4.2.5.4 | Vat 8 Remove & Install Final Sign off | milestone | 0d | 2025-10-21 | 2025-10-21 | 362 |  |  |  |  | 185.06d |  | James Fleming |  |  | No | 2025-04-10 | 2025-04-10 | No | No | No | No | No | -1 | -1 |  |  |  |  |  |
| 364 | 1.1.4.2.5.5 | **ZnNi Vat Solution Qualification** |  | 439.84d | 2024-07-15 A | 2026-03-20 |  | 2% | 431.92d | 2024-05-13 | 2025-01-16 | 74.16d |  |  | 45h | 2h | No | 2024-04-11 | 2024-04-15 |  |  |  |  |  |  |  | Future State Production |  |  |  |  |
| 365 | 1.1.4.2.5.5.1 | **ZnNi Vat Solution Qualification Pump out Vat 8 Solution** |  | 332.09d | 2024-07-15 A | 2025-10-22 | 362 | 67% | 110.7d | 2024-07-15 | 2024-07-24 | 74.12d |  |  | 3h | 2h | No | 2024-04-11 | 2024-04-15 |  |  |  |  |  |  |  | Future State Production |  |  |  |  |
| 366 | 1.1.4.2.5.5.1.1 | ZnNi Vat Solution Qualification Confirm Vat pump out procedure is in place |  | 1d | 2024-07-15 A | 2024-07-15 A |  | 100% |  | 2024-07-15 | 2024-07-15 |  |  | James Fleming | 1h | 1h | No | 2024-04-11 | 2024-04-11 | No | No | No | No | Yes | -1 | -1 | Future State Production | -1 | -1 | 1 | 1 |
| 367 | 1.1.4.2.5.5.1.2 | ZnNi Vat Solution Qualification Reach out to Bido for Pump out best Practice |  | 1d | 2024-07-23 A | 2024-07-23 A | 366 | 100% |  | 2024-07-23 | 2024-07-23 |  |  | James Fleming | 1h | 1h | No | 2024-04-12 | 2024-04-12 | No | No | No | No | Yes | -1 | -1 | Future State Production | -1 | -1 | 1 | 1 |
| 368 | 1.1.4.2.5.5.1.3 | ZnNi Vat Solution Qualification Check spare chemicals onsite if pump out fails |  | 1d | 2025-10-21 | 2025-10-22 | 367 |  |  | 2024-07-24 | 2024-07-24 | 74.12d | 0d | James Fleming | 1h |  | No | 2024-04-15 | 2024-04-15 | No | No | No | No | No | -1 | -1 | Future State Production |  |  |  |  |
| 369 | 1.1.4.2.5.5.2 | **ZnNi Vat Solution Qualification Pump Tank solution 9 into tank 8** |  | 1.75d | 2025-10-22 | 2025-10-23 |  |  |  | 2024-09-19 | 2024-10-15 | 74.12d |  |  | 1h |  | No | 2024-04-16 | 2024-04-16 |  |  |  |  |  |  |  | Future State Production |  |  |  |  |
| 370 | 1.1.4.2.5.5.2.1 | ZnNi Vat Solution Qualification Placeholder - Organize Koch for Spark Testing |  | 2d | 2025-10-22 | 2025-10-23 | 368 |  |  | 2024-10-15 | 2024-10-15 | 74.12d | 0d | James Fleming [6.25%] | 1h |  | No | 2024-04-16 | 2024-04-16 | No | No | No | No | No | -1 | -1 | Future State Production |  |  |  |  |
| 371 | 1.1.4.2.5.5.3 | **ZnNi Vat Solution Qualification Maintenance to investigate and modify recirculation pump (Vat 9)** |  | 5d | 2025-10-23 | 2025-10-30 |  |  |  | 2024-09-20 | 2024-10-29 | 74.16d |  |  | 2h |  | No | 2025-04-17 | 2025-04-24 |  |  |  |  |  |  |  | Future State Production |  |  |  |  |
| 372 | 1.1.4.2.5.5.3.1 | ZnNi Vat Solution Qualification Pump Maintenance Review |  | 5d | 2025-10-23 | 2025-10-30 | 370 |  |  | 2024-10-16 | 2024-10-29 | 74.16d | 0d | James Allcoat [5%] | 2h |  | No | 2025-04-17 | 2025-04-24 | No | No | No | No | No | -1 | -1 | Future State Production |  |  |  |  |

Notes:
- 364: JF 300724 we have agreed to empty the Vat before we qualify the solution - this means we can carry out some of the maintnenance tasks at this point.

| ID | WBS | Task | Type | Duration | Start | Finish | Predecessors | Complete | Baseline 1 start | Baseline 1 finish | Total slack | Free slack | Resources | Work | Actual work | Tasks Due this Month | Text30 | Initial Planned Start | Initial Planned Finish | Tasks Due next Month | Tasks Due this week | Tasks Due next Week | Tasks Due Today | Last Tasks | Number1 | Number2 | Actual Task Start | Actual Task Finish | Text7 | Text8 | Task active Day | Field |
| --- | --- | --- | --- | --- | --- | --- | --- | --- | --- | --- | --- | --- | --- | --- | --- | --- | --- | --- | --- | --- | --- | --- | --- | --- | --- | --- | --- | --- | --- | --- | --- | --- |
| 373 | 1.1.4.2.5.5.4 | **ZnNi Vat Solution Qualification Pump Fresh solution into Vat 9** |  | 5d | 2025-10-30 | 2025-11-06 |  |  | 2024-10-03 | 2024-11-05 | 74.16d |  |  | 2h |  | No | Future State Production | 2025-04-25 | 2025-05-02 |  |  |  |  |  |  |  |  |  |  |  |  |  |
| 374 | 1.1.4.2.5.5.4.1 | ZnNi Vat Solution Qualification Vat 9 filled carried out |  | 5d | 2025-10-30 | 2025-11-06 | 372 |  | 2024-10-30 | 2024-11-05 | 74.16d | 0d | Operator 1 | 2h |  | No | Future State Production | 2025-04-25 | 2025-05-02 | No | No | No | No | No | -1 | -1 |  |  |  |  |  |  |
| 375 | 1.1.4.2.5.5.5 | **ZnNi Vat Solution Qualification Analysis and additions** |  | 3d | 2025-11-06 | 2025-11-11 |  |  | 2024-10-10 | 2024-11-12 | 74.16d |  |  | 2h |  | No | Future State Production | 2025-05-05 | 2025-05-07 |  |  |  |  |  |  |  |  |  |  |  |  |  |
| 376 | 1.1.4.2.5.5.5.1 | ZnNi Vat Solution Qualification Analysis and Additions carried out |  | 3d | 2025-11-06 | 2025-11-11 | 374 |  | 2024-11-06 | 2024-11-12 | 74.16d | 0d | Dean Wilkins [8.33%] | 2h |  | No | Future State Production | 2025-05-05 | 2025-05-07 | No | No | No | No | No | -1 | -1 |  |  |  |  |  |  |
| 377 | 1.1.4.2.5.5.6 | **ZnNi Vat Solution Qualification Process a Hull Cell once additions are made** |  | 3d | 2025-11-11 | 2025-11-14 |  |  | 2024-10-17 | 2024-11-13 | 74.16d |  |  | 4h |  | No | Future State Production | 2025-05-08 | 2025-05-08 |  |  |  |  |  |  |  |  |  |  |  |  |  |
| 378 | 1.1.4.2.5.5.6.1 | ZnNi Vat Solution Qualification Hull Cell carried out |  | 3d | 2025-11-11 | 2025-11-14 | 376 |  | 2024-11-13 | 2024-11-13 | 74.16d | 0d | Dean Wilkins [16.67%] | 4h |  | No | Future State Production | 2025-05-08 | 2025-05-08 | No | No | No | No | No | -1 | -1 |  |  |  |  |  |  |
| 379 | 1.1.4.2.5.5.7 | **ZnNi Vat Solution Qualification Salt Spray Corrosion Testing (1000hrs)** |  | 15d | 2025-11-14 | 2025-12-05 |  |  | 2024-10-18 | 2024-12-04 | 74.16d |  |  | 4h |  | No | Future State Production | 2025-05-09 | 2025-05-30 |  |  |  |  |  |  |  |  |  |  |  |  |  |
| 380 | 1.1.4.2.5.5.7.1 | ZnNi Vat Solution Qualification Salt Spreay testing carried out |  | 15d | 2025-11-14 | 2025-12-05 | 378 |  | 2024-11-14 | 2024-12-04 | 74.16d | 0d | Dean Wilkins [3.33%] | 4h |  | No | Future State Production | 2025-05-09 | 2025-05-30 | No | No | No | No | No | -1 | -1 |  |  |  |  |  |  |
| 381 | 1.1.4.2.5.5.8 | **ZnNi Vat Solution Qualification Adhesion Testing (XXhrs)** |  | 10d | 2025-12-05 | 2025-12-19 |  |  | 2024-11-08 | 2024-12-18 | 74.16d |  |  | 4h |  | No | Future State Production | 2025-06-02 | 2025-06-16 |  |  |  |  |  |  |  |  |  |  |  |  |  |
| 382 | 1.1.4.2.5.5.8.1 | ZnNi Vat Solution Qualification Adhesion Testing carried out |  | 10d | 2025-12-05 | 2025-12-19 | 380 |  | 2024-12-05 | 2024-12-18 | 74.16d | 0d | Dean Wilkins [5%] | 4h |  | No | Future State Production | 2025-06-02 | 2025-06-16 | No | No | No | No | No | -1 | -1 |  |  |  |  |  |  |
| 383 | 1.1.4.2.5.5.9 | **ZnNi Vat Solution Qualification Embrittlement Testing (200HRS)** |  | 10d | 2025-12-19 | 2026-01-02 |  |  | 2024-11-22 | 2025-01-01 | 74.16d |  |  | 4h |  | No | Future State Production | 2025-06-17 | 2025-07-01 |  |  |  |  |  |  |  |  |  |  |  |  |  |
| 384 | 1.1.4.2.5.5.9.1 | ZnNi Vat Solution Qualification Embrittlement Testing carried out |  | 10d | 2025-12-19 | 2026-01-02 | 382 |  | 2024-12-19 | 2025-01-01 | 74.16d | 0d | Dean Wilkins [5%] | 4h |  | No | Future State Production | 2025-06-17 | 2025-07-01 | No | No | No | No | No | -1 | -1 |  |  |  |  |  |  |
| 385 | 1.1.4.2.5.5.10 | **ZnNi Vat Solution Qualification Process Test component with current density hours** |  | 5d | 2026-01-02 | 2026-01-09 |  |  | 2024-12-06 | 2025-01-02 | 74.16d |  |  | 4h |  | No | Future State Production | 2025-07-02 | 2025-07-09 |  |  |  |  |  |  |  |  |  |  |  |  |  |
| 386 | 1.1.4.2.5.5.10.1 | ZnNi Vat Solution Qualification Current Density Testing carried out |  | 5d | 2026-01-02 | 2026-01-09 | 384 |  | 2025-01-02 | 2025-01-02 | 74.16d | 0d | Dean Wilkins [10%] | 4h |  | No | Future State Production | 2025-07-02 | 2025-07-09 | No | No | No | No | No | -1 | -1 |  |  |  |  |  |  |
| 387 | 1.1.4.2.5.5.11 | **ZnNi Vat Solution Qualification Increase Vat plating Vat efficiency - Placeholder** |  | 0d | 2026-01-09 | 2026-01-09 |  |  | 2024-12-09 | 2025-01-09 | 74.16d |  |  |  |  | No | Future State Production | 2025-07-10 | 2025-07-10 |  |  |  |  |  |  |  |  |  |  |  |  |  |
| 388 | 1.1.4.2.5.5.11.1 | ZnNi Vat Solution Qualification Plating Efficiency Increased | milestone | 0d | 2026-01-09 | 2026-01-09 | 386 |  | 2025-01-03 | 2025-01-09 | 74.16d | 0d | Dean Wilkins |  |  | No | Future State Production | 2025-07-10 | 2025-07-10 | No | No | No | No | No | -1 | -1 |  |  |  |  |  |  |
| 389 | 1.1.4.2.5.5.12 | **ZnNi Vat Solution Qualification DQ Compilation** |  | 25d | 2026-01-09 | 2026-02-13 |  |  | 2024-12-16 | 2025-01-16 | 74.16d |  |  | 10h |  | No | Future State Production | 2025-07-11 | 2025-09-22 |  |  |  |  |  |  |  |  |  |  |  |  |  |
| 390 | 1.1.4.2.5.5.12.1 | ZnNi Vat Solution Qualification DQ carried out |  | 25d | 2026-01-09 | 2026-02-13 | 388 |  | 2025-01-10 | 2025-01-16 | 74.16d | 0d | Martyn Price [5%] | 10h |  | No | Future State Production | 2025-07-11 | 2025-08-15 | No | No | No | No | No | -1 | -1 |  |  |  |  |  |  |
| 391 | 1.1.4.2.5.5.13 | ZnNi Vat Solution Qualification Sign off from QA& M&P Laboratory for Production | milestone | 25d | 2026-02-13 | 2026-03-20 | 390 |  | 2024-12-23 | 2024-12-23 | 74.16d | 0.16d | Lloyd Harrington [2.59%] | 5h |  | No | Current State Production | 2025-08-18 | 2025-09-22 | No | No | No | No | No | -1 | -1 |  |  |  |  |  |  |
| 392 | 1.1.4.2.6 | **ZnNi Vat Solution Qualification Gate 6 - Approval to close out workpackage** |  | 1.75d | 2026-03-23 | 2026-03-24 |  |  |  |  | 74d |  |  | 3h |  | No |  | 2025-09-23 | 2025-09-24 |  |  |  |  |  |  |  |  |  |  |  |  |  |
| 393 | 1.1.4.2.6.1 | ZnNi Vat Solution Qualification Desseminate lessons learnt |  | 1d | 2026-03-23 | 2026-03-23 | 391 |  |  |  | 74d | 0d | James Fleming [25%] | 2h |  | No |  | 2025-09-23 | 2025-09-23 | No | No | No | No | No | -1 | -1 |  |  |  |  |  |  |
| 394 | 1.1.4.2.6.2 | ZnNi Vat Solution Qualification Close out project |  | 1d | 2026-03-23 | 2026-03-24 | 393 |  |  |  | 74.44d |  | James Fleming [12.5%] | 1h |  | No |  | 2025-09-24 | 2025-09-24 | No | No | No | No | No | -1 | -1 |  |  |  |  |  |  |
| 395 | 1.1.4.3 | **ZnNi Extraction Initial Service & Duct Repair** |  | 67d | 2024-07-02 A | 2024-10-02 A |  | 100% | 2024-07-02 | 2024-11-07 |  |  |  | 147h | 147h | No | Maintenance System | 2024-07-02 | 2024-10-02 |  |  |  |  |  |  |  | 2024-07-02 | 2024-10-02 |  |  |  |  |
| 396 | 1.1.4.3.1 | **ZnNi Extraction Initial Service & Duct Repair Kick off meeting completed** |  | 1d | 2024-07-02 A | 2024-07-02 A |  | 100% | 2024-07-02 | 2024-07-02 |  |  |  | 16h | 16h | No | Maintenance System | 2024-07-02 | 2024-07-02 |  |  |  |  |  |  |  | 2024-07-02 | 2024-07-02 |  |  |  |  |
| 397 | 1.1.4.3.1.1 | ZnNi Extraction Initial Service & Duct Repair Requirements identified & agreed |  | 1d | 2024-07-02 A | 2024-07-02 A |  | 100% | 2024-07-02 | 2024-07-02 |  |  | Shaun McGarry | 8h | 8h | No | Maintenance System | 2024-07-02 | 2024-07-02 | No | No | No | No | Yes | -1 | -1 | 2024-07-02 | 2024-07-02 | -1 | -1 | 1 | 1 |
| 398 | 1.1.4.3.1.2 | ZnNi Extraction Initial Service & Duct Repair Vendor(s) identified & agreed |  | 1d | 2024-07-02 A | 2024-07-02 A |  | 100% | 2024-07-02 | 2024-07-02 |  |  | Shaun McGarry | 8h | 8h | No | Maintenance System | 2024-07-02 | 2024-07-02 | No | No | No | No | Yes | -1 | -1 | 2024-07-02 | 2024-07-02 | -1 | -1 | 1 | 1 |

Notes:
- 395: JF 140824 Extraction velocities, balancing and service report complete. We are awaiting a quotation for the ducting which will be measured up week 33 during the scubber servicing. Will need to link: quote and PO to project plan

| ID | WBS | Task | Duration | Start | Finish | Predecessors | Complete | Baseline 1 start | Baseline 1 finish | Constraint | Resources | Work | Actual work | Tasks Due this Month | Text30 | Actual Task Start | Actual Task Finish | Initial Planned Start | Initial Planned Finish | Tasks Due next Month | Tasks Due this week | Tasks Due next Week | Tasks Due Today | Last Tasks | Text7 | Text8 | Task active Day | Number1 | Number2 | Field | Start Difference | Finish Difference |
| --- | --- | --- | --- | --- | --- | --- | --- | --- | --- | --- | --- | --- | --- | --- | --- | --- | --- | --- | --- | --- | --- | --- | --- | --- | --- | --- | --- | --- | --- | --- | --- | --- |
| 399 | 1.1.4.3.2 | **ZnNi Extraction Initial Service & Duct Repair Full assessment of the extraction complete** | 1d | 2024-07-17 A | 2024-07-17 A |  | 100% | 2024-07-17 | 2024-07-23 |  |  | 40h | 40h | No | Maintenance System | 2024-07-17 | 2024-07-17 | 2024-07-17 | 2024-07-17 |  |  |  |  |  |  |  |  |  |  |  |  |  |
| 400 | 1.1.4.3.2.1 | ZnNi Extraction Initial Service & Duct Repair All extraction hood slot velocities complete | 1d | 2024-07-17 A | 2024-07-17 A | 398FS+10d | 100% | 2024-07-17 | 2024-07-17 | start no earlier than 2024-07-16 | Plastic Fan COmpany | 8h | 8h | No | Maintenance System | 2024-07-17 | 2024-07-17 | 2024-07-17 | 2024-07-17 | No | No | No | No | Yes | -1 | -1 | 1 | -1 | -1 | 1 |  |  |
| 401 | 1.1.4.3.2.2 | ZnNi Extraction Initial Service & Duct Repair All riser duct velocities complete | 1d | 2024-07-17 A | 2024-07-17 A | 400 | 100% | 2024-07-18 | 2024-07-18 |  | Plastic Fan COmpany | 8h | 8h | No | Maintenance System | 2024-07-17 | 2024-07-17 | 2024-07-17 | 2024-07-17 | No | No | No | No | Yes | -1 | -1 | 1 | -1 | -1 | 1 |  |  |
| 402 | 1.1.4.3.2.3 | ZnNi Extraction Initial Service & Duct Repair Scrubber duct inlet velocities complete | 1d | 2024-07-17 A | 2024-07-17 A | 400 | 100% | 2024-07-18 | 2024-07-18 |  | Plastic Fan COmpany | 8h | 8h | No | Maintenance System | 2024-07-17 | 2024-07-17 | 2024-07-17 | 2024-07-17 | No | No | No | No | Yes | -1 | -1 | 1 | -1 | -1 | 1 |  |  |
| 403 | 1.1.4.3.2.4 | ZnNi Extraction Initial Service & Duct Repair Stack velocities complete | 1d | 2024-07-17 A | 2024-07-17 A | 400 | 100% | 2024-07-18 | 2024-07-18 |  | Plastic Fan COmpany | 8h | 8h | No | Maintenance System | 2024-07-17 | 2024-07-17 | 2024-07-17 | 2024-07-17 | No | No | No | No | Yes | -1 | -1 | 1 | -1 | -1 | 1 |  |  |
| 404 | 1.1.4.3.2.5 | ZnNi Extraction Initial Service & Duct Repair Pressure reading across scrubber filter complete | 1d | 2024-07-17 A | 2024-07-17 A | 400 | 100% | 2024-07-18 | 2024-07-18 |  | Plastic Fan COmpany | 8h | 8h | No | Maintenance System | 2024-07-17 | 2024-07-17 | 2024-07-17 | 2024-07-17 | No | No | No | No | Yes | -1 | -1 | 1 | -1 | -1 | 1 |  |  |
| 405 | 1.1.4.3.3 | ZnNi Extraction Initial Service & Duct Repair Rebalance system to give best possible performance. | 1d | 2024-07-17 A | 2024-07-17 A | 404 | 100% | 2024-07-24 | 2024-07-24 |  | Plastic Fan COmpany | 8h | 8h | No | Maintenance System | 2024-07-17 | 2024-07-17 | 2024-07-17 | 2024-07-17 | No | No | No | No | Yes | -1 | -1 | 1 | -1 | -1 | 1 |  |  |
| 406 | 1.1.4.3.4 | ZnNi Extraction Initial Service & Duct Repair Provide report on finding and recommended settings. | 1d | 2024-07-17 A | 2024-07-17 A | 405FS+5d | 100% | 2024-08-01 | 2024-08-01 |  | Plastic Fan COmpany | 8h | 8h | No | Maintenance System | 2024-07-17 | 2024-07-17 | 2024-07-17 | 2024-07-17 | No | No | No | No | Yes | -1 | -1 | 1 | -1 | -1 | 1 |  |  |
| 407 | 1.1.4.3.5 | ZnNi Extraction Initial Service & Duct Repair Service of the equipment. | 1d | 2024-07-17 A | 2024-07-17 A | 406 | 100% | 2024-08-02 | 2024-08-02 |  | Plastic Fan COmpany | 8h | 8h | No | Maintenance System | 2024-07-17 | 2024-07-17 | 2024-07-17 | 2024-07-17 | No | No | No | No | Yes | -1 | -1 | 1 | -1 | -1 | 1 |  |  |
| 408 | 1.1.4.3.6 | **ZnNi Extraction Initial Service & Duct Repair Repair/replace damaged rectangular duct.** | 38d | 2024-08-12 A | 2024-10-02 A |  | 100% | 2024-08-05 | 2024-11-07 |  |  | 67h | 67h | No | Maintenance System | 2024-08-20 | 2024-09-27 | 2024-08-12 | 2024-10-02 |  |  |  |  |  |  |  |  |  |  |  |  |  |
| 409 | 1.1.4.3.6.1 | **ZnNi Extraction Initial Service & Duct Repair Procurement completed** | 3d | 2024-08-12 A | 2024-08-14 A |  | 100% | 2024-08-05 | 2024-08-30 |  |  | 32h | 32h | No | Maintenance System | 2024-08-20 | 2024-09-18 | 2024-08-12 | 2024-08-30 |  |  |  |  |  |  |  |  |  |  |  |  |  |
| 410 | 1.1.4.3.6.1.1 | ZnNi Extraction Initial Service & Duct Repair Vendor(s) Kick off meeting | 1d | 2024-08-12 A | 2024-08-12 A | 407FS+5d | 100% | 2024-08-12 | 2024-08-12 |  | Shaun McGarry | 8h | 8h | No | Maintenance System | 2024-08-20 | 2024-08-20 | 2024-08-12 | 2024-08-12 | No | No | No | No | Yes | -1 | -1 | 1 | -1 | -1 | 1 | 8 | 8 |
| 411 | 1.1.4.3.6.1.2 | **ZnNi Extraction Initial Service & Duct Repair Requirements agreed** | 1d | 2024-08-13 A | 2024-08-13 A |  | 100% | 2024-08-05 | 2024-08-13 |  |  | 16h | 16h | No | Maintenance System | 2024-08-20 | 2024-09-27 | 2024-08-13 | 2024-08-13 |  |  |  |  |  |  |  |  |  |  |  |  |  |
| 412 | 1.1.4.3.6.1.2.1 | ZnNi Extraction Initial Service & Duct Repair Scope of work | 1d | 2024-08-13 A | 2024-08-13 A | 410 | 100% | 2024-08-13 | 2024-08-13 |  | Shaun McGarry | 8h | 8h | No | Maintenance System | 2024-08-20 | 2024-08-20 | 2024-08-13 | 2024-08-13 | No | No | No | No | Yes | -1 | -1 | 1 | -1 | -1 | 1 | 7 | 7 |
| 413 | 1.1.4.3.6.1.2.2 | ZnNi Extraction Initial Service & Duct Repair Expected timescales | 1d | 2024-08-13 A | 2024-08-13 A | 410 | 100% | 2024-08-13 | 2024-08-13 |  | Shaun McGarry | 8h | 8h | No | Maintenance System | 2024-08-28 | 2024-08-28 | 2024-08-13 | 2024-08-13 | No | No | No | No | Yes | -1 | -1 | 1 | -1 | -1 | 1 | 15 | 15 |
| 414 | 1.1.4.3.6.1.3 | ZnNi Extraction Initial Service & Duct Repair Request for quotation(s) | 1d | 2024-08-14 A | 2024-08-14 A | 413 | 100% | 2024-08-14 | 2024-08-14 |  | Shaun McGarry | 8h | 8h | No | Maintenance System | 2024-08-01 | 2024-08-01 | 2024-08-14 | 2024-08-14 | No | No | No | No | Yes | -1 | -1 | 1 | -1 | -1 | 1 | -13 | -13 |
| 415 | 1.1.4.3.6.2 | ZnNi Extraction Initial Service & Duct Repair Design Completed | 2d | 2024-09-17 A | 2024-09-18 A |  | 100% | 2024-09-02 | 2024-10-02 |  |  |  |  | No | Maintenance System | 2024-09-17 | 2024-09-18 | 2024-09-17 | 2024-09-18 | No | No | No | No | Yes |  |  | 1 | -1 | -1 | 1 |  |  |
| 416 | 1.1.4.3.6.3 | **ZnNi Extraction Initial Service & Duct Repair Gate 4 - Approval to Start Work** | 2d | 2024-09-17 A | 2024-09-18 A |  | 100% | 2024-10-02 | 2024-10-02 |  |  | 2h | 2h | No | Maintenance System | 2024-09-12 | 2024-09-12 | 2024-09-17 | 2024-09-18 |  |  |  |  |  |  |  |  |  |  |  |  |  |
| 417 | 1.1.4.3.6.3.1 | ZnNi Extraction Initial Service & Duct Repair Vendor RAMs | 1d | 2024-09-17 A | 2024-09-17 A | 422SF-5d | 100% |  |  |  | Plastic Fan COmpany | 1h | 1h | No |  | 2024-09-12 | 2024-09-12 | 2024-09-17 | 2024-09-17 | No | No | No | No | Yes |  |  | 1 | -1 | -1 | 1 | -5 | -5 |
| 418 | 1.1.4.3.6.3.2 | ZnNi Extraction Initial Service & Duct Repair Risk Assessment Services etc. | 1d | 2024-09-18 A | 2024-09-18 A | 417 | 100% |  |  |  | James Allcoat | 1h | 1h | No |  | 2024-09-12 | 2024-09-12 | 2024-09-18 | 2024-09-18 | No | No | No | No | Yes |  |  | 1 | -1 | -1 | 1 | -6 | -6 |
| 419 | 1.1.4.3.6.4 | **ZnNi Extraction Initial Service & Duct Repair Gate 5 - Approval to Handover** | 7d | 2024-09-23 A | 2024-10-01 A |  | 100% | 2024-11-06 | 2024-11-06 |  |  | 32h | 32h | No | Maintenance System | 2024-09-23 | 2024-10-01 | 2024-09-23 | 2024-10-01 |  |  |  |  |  |  |  |  |  |  |  |  |  |
| 420 | 1.1.4.3.6.4.1 | **ZnNi Extraction Initial Service & Duct Repair Installation** | 7d | 2024-09-23 A | 2024-10-01 A |  | 100% | 2024-10-21 | 2024-11-05 |  |  | 32h | 32h | No | Maintenance System | 2024-09-23 | 2024-10-01 | 2024-09-23 | 2024-10-01 |  |  |  |  |  |  |  |  |  |  |  |  |  |
| 421 | 1.1.4.3.6.4.1.1 | ZnNi Extraction Initial Service & Duct Repair Scaffold Erecting | 2d | 2024-09-23 A | 2024-09-24 A |  | 100% |  |  |  | Lansford | 16h | 16h | No |  | 2024-09-23 | 2024-09-24 | 2024-09-23 | 2024-09-24 | No | No | No | No | Yes |  |  | 1 | -1 | -1 | 1 |  |  |
| 422 | 1.1.4.3.6.4.1.2 | ZnNi Extraction Initial Service & Duct Repair Extraction Duct | 2d | 2024-09-25 A | 2024-09-26 A | 421 | 100% | 2024-10-31 | 2024-11-01 |  | Plastic Fan COmpany | 16h | 16h | No | Maintenance System | 2024-09-25 | 2024-09-26 | 2024-09-25 | 2024-09-26 | No | No | No | No | Yes |  |  | 1 | -1 | -1 | 1 |  |  |
| 423 | 1.1.4.3.6.4.1.3 | ZnNi Extraction Initial Service & Duct Repair Validation | 2d | 2024-09-30 A | 2024-10-01 A | 422 | 100% | 2024-11-01 | 2024-11-07 |  |  |  |  | No | Maintenance System | 2024-09-30 | 2024-10-01 | 2024-09-30 | 2024-10-01 | No | No | No | No | Yes |  |  | 1 | -1 | -1 | 1 |  |  |

| ID | WBS | Task | Type | Duration | Start | Finish | Predecessors | Complete | Remaining | Baseline 1 start | Baseline 1 finish | Total slack | Free slack | Constraint | Resources | Work | Actual work | Tasks Due this Month | Actual Task Start | Actual Task Finish | Initial Planned Start | Initial Planned Finish | Tasks Due next Month | Tasks Due this week | Tasks Due next Week | Tasks Due Today | Last Tasks | Task active Day | Number1 | Number2 | Field | Text30 | Start Difference | Finish Difference |
| --- | --- | --- | --- | --- | --- | --- | --- | --- | --- | --- | --- | --- | --- | --- | --- | --- | --- | --- | --- | --- | --- | --- | --- | --- | --- | --- | --- | --- | --- | --- | --- | --- | --- | --- |
| 424 | 1.1.4.3.6.5 | **ZnNi Extraction Initial Service & Duct Repair Gate 6 - Approval to Close Out Project** |  | 1d | 2024-10-02 A | 2024-10-02 A |  | 100% |  |  |  |  |  |  |  | 1h | 1h | No | 2024-10-02 | 2024-10-02 | 2024-10-02 | 2024-10-02 |  |  |  |  |  |  |  |  |  |  |  |  |
| 425 | 1.1.4.3.6.5.1 | ZnNi Extraction Initial Service & Duct Repair Project documentation Closed out |  | 1d | 2024-10-02 A | 2024-10-02 A | 423 | 100% |  |  |  |  |  |  | James Fleming [12.5%] | 1h | 1h | No | 2024-10-02 | 2024-10-02 | 2024-10-02 | 2024-10-02 | No | No | No | No | Yes | 1 | -1 | -1 | 1 |  |  |  |
| 426 | 1.1.4.4 | **ZnNi Vat Lid Limit Switches** |  | 166.62d | 2024-11-04 A | 2025-06-24 |  | 93% | 11.11d | 2024-04-08 | 2024-11-07 | 269.44d |  |  |  | 332h | 327h | No | 2024-11-04 |  | 2024-11-04 | 2025-06-03 |  |  |  |  |  |  |  |  |  | Maintenance System |  |  |
| 427 | 1.1.4.4.1 | **ZnNi Vat Lid Limit Switches Gate 1- Approval to continue with workpackage** |  | 0.88d | 2024-11-04 A | 2024-11-05 A |  | 100% |  |  |  |  |  |  |  | 2h | 2h | No | 2024-11-04 | 2024-12-16 | 2024-11-04 | 2024-11-05 |  |  |  |  |  |  |  |  |  |  |  |  |
| 428 | 1.1.4.4.1.1 | ZnNi Vat Lid Limit Switches PID, scope of work, WBS, PBS completed |  | 1d | 2024-11-04 A | 2024-11-05 A | 316SF-4d | 100% |  |  |  |  |  | start no earlier than 2024-09-23 | James Fleming [25%] | 2h | 2h | No | 2025-01-31 | 2025-01-31 | 2024-11-04 | 2024-11-05 | No | No | No | No | Yes | 1 | -1 | -1 | 1 |  | 88 | 87 |
| 429 | 1.1.4.4.2 | **ZnNi Vat Lid Limit Switches Gate 2 - Approval to RFQ** |  | 1.03d | 2024-11-05 A | 2024-11-06 A |  | 100% |  |  |  |  |  |  |  | 1h | 1h | No | 2024-11-05 | 2024-11-05 | 2024-11-05 | 2024-11-13 |  |  |  |  |  |  |  |  |  |  |  |  |
| 430 | 1.1.4.4.2.1 | ZnNi Vat Lid Limit Switches Vendors identified |  | 1d | 2024-11-05 A | 2024-11-06 A | 428 | 100% |  |  |  |  |  |  | James Fleming [12.5%] | 1h | 1h | No | 2024-11-05 | 2024-11-05 | 2024-11-05 | 2024-11-06 | No | No | No | No | Yes | 1 | -1 | -1 | 1 |  |  | -1 |
| 431 | 1.1.4.4.3 | **ZnNi Vat Lid Limit Switches Gate 3 - Approval to Procure** |  | 14.31d | 2024-11-06 A | 2024-11-26 A |  | 100% |  |  |  |  |  |  |  | 4h | 4h | No | 2024-11-06 | 2024-12-16 | 2024-11-06 | 2024-11-26 |  |  |  |  |  |  |  |  |  |  |  |  |
| 432 | 1.1.4.4.3.1 | ZnNi Vat Lid Limit Switches Request supplier proposals |  | 1d | 2024-11-06 A | 2024-11-07 A | 430 | 100% |  |  |  |  |  |  | James Fleming | 1h | 1h | No | 2024-11-06 | 2024-11-07 | 2024-11-06 | 2024-11-07 | No | No | No | No | Yes | 1 | -1 | -1 | 1 |  |  |  |
| 433 | 1.1.4.4.3.2 | ZnNi Vat Lid Limit Switches Recieve Supplier Proposals |  | 1d | 2024-11-21 A | 2024-11-22 A | 432FS+10d | 100% |  |  |  |  |  |  | ASL [25%] | 2h | 2h | No | 2024-12-11 | 2024-12-11 | 2024-11-21 | 2024-11-21 | No | No | No | No | Yes | 1 | -1 | -1 | 1 |  | 20 | 20 |
| 434 | 1.1.4.4.3.3 | Select Supplier Proposal |  | 2d | 2024-11-22 A | 2024-11-26 A | 433 | 100% |  |  |  |  |  |  | James Fleming [6.25%] | 1h | 1h | No | 2024-12-16 | 2024-12-16 | 2024-11-22 | 2024-11-26 | No | No | No | No | Yes | 1 | -1 | -1 | 1 |  | 24 | 20 |
| 435 | 1.1.4.4.4 | **ZnNi Vat Lid Limit Switches Gate 4 - Approval to Start work** |  | 108.66d | 2024-11-26 A | 2025-04-28 A |  | 100% |  |  |  |  |  |  |  | 86h | 86h | No | 2024-12-16 |  | 2024-11-26 | 2025-02-21 |  |  |  |  |  |  |  |  |  |  |  |  |
| 436 | 1.1.4.4.4.1 | ZnNi Vat Lid Limit Switches POs raised by Purchasing |  | 3d | 2024-11-26 A | 2024-11-29 A | 434 | 100% |  |  |  |  |  |  | Josh Avent [4.17%] | 1h | 1h | No | 2024-12-16 | 2024-12-17 | 2024-11-26 | 2024-11-29 | No | No | No | No | Yes | 1 | -1 | -1 | 1 |  | 20 | 18 |
| 437 | 1.1.4.4.4.2 | ZnNi Vat Lid Limit Switches Initial Design |  | 10d | 2024-11-29 A | 2024-12-13 A | 436 | 100% |  |  |  |  |  |  | ASL | 80h | 80h | No | 2024-11-29 | 2025-02-20 | 2024-11-29 | 2024-12-13 | No | No | No | No | Yes | 1 |  |  | 1 |  |  | 69 |
| 438 | 1.1.4.4.4.3 | ZnNi Vat Lid Limit Switches Initial Design Review | milestone | 0d | 2025-02-19 A | 2025-02-19 A | 436FS+59d | 100% |  |  |  |  |  |  | James Fleming |  |  | No | 2025-02-20 | 2025-02-20 | 2024-12-13 | 2024-12-16 | No | No | No | No | Yes | 1 | -1 | -1 | 1 |  | 69 | 66 |
| 439 | 1.1.4.4.4.4 | ZnNi Vat Lid Limit Switches Trial Manufacture |  | 40d | 2025-02-19 A | 2025-04-15 A | 438 | 100% |  |  |  |  |  |  |  |  |  | No | 2025-02-20 | 2025-03-31 | 2024-12-16 | 2025-02-10 | No | No | No | No | Yes | 1 |  |  | 1 |  | 66 | 49 |
| 440 | 1.1.4.4.4.5 | ZnNi Vat Lid Limit Switches Trial Manufacture complete | milestone | 0d | 2025-04-15 A | 2025-04-15 A | 439 | 100% |  |  |  |  |  |  | ASL |  |  | No | 2025-02-20 | 2025-03-31 | 2025-02-10 | 2025-02-10 | No | No | No | No | Yes | 1 | -1 | -1 | 1 |  | 10 | 49 |
| 441 | 1.1.4.4.4.6 | ZnNi Vat Lid Limit Switches Vendor RAMs |  | 1d | 2025-04-21 A | 2025-04-22 A | 445SF-5d | 100% |  |  |  |  |  |  | James Allcoat [25%] | 2h | 2h | No | 2025-04-10 | 2025-04-10 | 2025-02-14 | 2025-02-17 | No | No | No | No | Yes | 1 | -1 | -1 | 1 |  | 55 | 52 |
| 442 | 1.1.4.4.4.7 | ZnNi Vat Lid Limit Switches Line Isolated |  | 1d | 2025-04-25 A | 2025-04-28 A | 445SF-1d | 100% |  |  |  |  |  |  | James Allcoat [12.5%] | 1h | 1h | No | 2025-04-15 | 2025-04-15 | 2025-02-20 | 2025-02-21 | No | No | No | No | Yes | 1 | -1 | -1 | 1 |  | 54 | 53 |
| 443 | 1.1.4.4.4.8 | ZnNi Vat Lid Limit Switches Area Prep - contamination containment |  | 1d | 2025-04-25 A | 2025-04-28 A | 445SF-1d | 100% |  |  |  |  |  |  | James Allcoat [25%] | 2h | 2h | No | 2025-04-15 | 2025-04-15 | 2025-02-20 | 2025-02-21 | No | No | No | No | Yes | 1 | -1 | -1 | 1 |  | 54 | 53 |
| 444 | 1.1.4.4.5 | **Gate 5 - Approval to Handover to SF** |  | 39d | 2025-04-29 A | 2025-06-20 |  | 88% | 4.76d |  |  | 269d |  |  |  | 236h | 234h | No | 2025-04-15 |  | 2025-02-24 | 2025-05-22 |  |  |  |  |  |  |  |  |  |  |  |  |
| 445 | 1.1.4.4.5.1 | ZnNi Vat Lid Limit Switches Trial Switches Installation |  | 2d | 2025-04-29 A | 2025-04-30 A | 440FS+9d | 100% |  |  |  |  |  |  | ASL | 16h | 16h | No | 2025-04-15 | 2025-04-15 | 2025-02-24 | 2025-02-26 | No | No | No | No | Yes | 1 | -1 | -1 | 1 |  | 50 | 48 |
| 446 | 1.1.4.4.5.2 | ZnNi Vat Lid Limit Switches Trial Switches Installation Complete | milestone | 0d | 2025-04-30 A | 2025-04-30 A | 440FS+11d | 100% |  |  |  |  |  |  | James Fleming |  |  | No | 2025-04-15 | 2025-04-15 | 2025-02-24 | 2025-02-26 | No | No | No | No | Yes | 1 |  |  | 1 |  | 50 | 48 |
| 447 | 1.1.4.4.5.3 | ZnNi Vat Lid Limit Switches Trial Switches PLC Configuration |  | 1d | 2025-04-29 A | 2025-04-29 A | 445SS | 100% |  |  |  |  |  | start no earlier than 2025-04-01 | ASL [50%] | 4h | 4h | No | 2025-04-15 | 2025-04-15 | 2025-02-26 | 2025-02-27 | No | No | No | No | Yes | 1 | -1 | -1 | 1 |  | 48 | 47 |
| 448 | 1.1.4.4.5.4 | ZnNi Vat Lid Limit Switches Trial Switches PLC Configuration Complete | milestone | 0d | 2025-04-29 A | 2025-04-29 A | 447 | 100% |  |  |  |  |  |  |  |  |  | No | 2025-04-15 | 2025-04-15 | 2025-02-26 | 2025-02-27 | No | No | No | No | Yes | 1 |  |  | 1 |  | 48 | 47 |
| 449 | 1.1.4.4.5.5 | ZnNi Vat Lid Limit Switches Trial Validation |  | 5d | 2025-05-01 A | 2025-05-07 A | 446 | 100% |  |  |  |  |  |  | ASL [5%] | 2h | 2h | No | 2025-04-15 | 2025-04-22 | 2025-03-13 | 2025-03-14 | No | No | No | No | Yes | 1 | -1 | -1 | 1 |  | 33 | 39 |
| 450 | 1.1.4.4.5.6 | ZnNi Vat Lid Limit Switches Trial Validation Complete | milestone | 0d | 2025-05-07 A | 2025-05-07 A | 449 | 100% |  |  |  |  |  |  | ASL |  |  | No | 2025-04-22 | 2025-04-22 | 2025-03-13 | 2025-03-14 | No | No | No | No | Yes | 1 |  |  | 1 |  | 40 | 39 |
| 451 | 1.1.4.4.5.7 | ZnNi Vat Lid Limit Switches Final Fix Switch Manufacture |  | 26d | 2025-05-08 A | 2025-06-12 A | 450 | 100% |  |  |  |  |  |  | ASL [96.15%] | 200h | 200h | No | 2025-04-24 |  | 2025-03-13 | 2025-05-08 | No | No | No | No | Yes | 1 |  |  | 1 |  | 42 |  |
| 452 | 1.1.4.4.5.8 | ZnNi Vat Lid Limit Switches Final Fix Switch Manufacture Complete | milestone | 0d | 2025-06-12 A | 2025-06-12 A | 451 | 100% |  |  |  |  |  |  | James Fleming |  |  | No |  |  | 2025-05-09 | 2025-05-09 | No | No | No | No | Yes | 1 |  |  | 1 |  |  |  |
| 453 | 1.1.4.4.5.9 | ZnNi Vat Lid Limit Switches Final Fix Installation |  | 1d | 2025-06-13 A | 2025-06-13 A | 452 | 100% |  |  |  |  |  |  | ASL | 8h | 8h | No |  |  | 2025-05-23 | 2025-05-23 | No | No | No | No | Yes | 1 | -1 | -1 | 1 |  |  |  |
| 454 | 1.1.4.4.5.10 | ZnNi Vat Lid Limit Switches Final Fix Installation Complete | milestone | 0d | 2025-06-13 A | 2025-06-13 A | 453 | 100% |  |  |  |  |  |  |  |  |  | No |  |  | 2025-05-23 | 2025-05-23 | No | No | No | No | Yes | 1 |  |  | 1 |  |  |  |
| 455 | 1.1.4.4.5.11 | ZnNi Vat Lid Limit Switches Final Fix PLC Configuration |  | 1d | 2025-04-29 A | 2025-04-29 A | 447SS | 100% |  |  |  |  |  |  | ASL [50%] | 4h | 4h | No |  |  | 2025-05-19 | 2025-05-20 | No | No | No | No | Yes | 1 | -1 | -1 | 1 |  |  |  |
| 456 | 1.1.4.4.5.12 | ZnNi Vat Lid Limit Switches Final Fix PLC Configuration Complete | milestone | 0d | 2025-04-29 A | 2025-04-29 A | 455 | 100% |  |  |  |  |  |  | James Fleming |  |  | No | 2025-04-15 | 2025-04-15 | 2025-05-19 | 2025-05-20 | No | No | No | No | Yes | 1 |  |  | 1 |  | -34 | -35 |
| 457 | 1.1.4.4.5.13 | ZnNi Vat Lid Limit Switches System Commissioning & Sign off | milestone | 0d | 2025-06-13 A | 2025-06-13 A | 454 | 100% |  |  |  |  |  |  | James Fleming |  |  | No |  |  | 2025-05-20 | 2025-05-21 | No | No | No | No | Yes | 1 | -1 | -1 | 1 |  |  |  |
| 458 | 1.1.4.4.5.14 | ZnNi Vat Lid Limit Switches Drawing updates |  | 5d | 2025-06-16 | 2025-06-20 | 457 |  |  |  |  | 269d | 0d |  | ASL [5%] | 2h |  | No |  |  | 2025-05-21 | 2025-05-28 | No | No | No | No | Yes |  | -1 | -1 |  |  |  |  |

Notes:
- 426: JF 010824 awaiting feedback from Steering 020824 / JF 140824 This fault is on Carl Source and has been accepted by the maintenance team awaiting: timeline to resolve issue.

| ID | WBS | Task | Duration | Start | Finish | Predecessors | Complete | Baseline 1 start | Baseline 1 finish | Total slack | Free slack | Constraint | Resources | Work | Actual work | Tasks Due this Month | Initial Planned Start | Initial Planned Finish | Tasks Due next Month | Tasks Due this week | Tasks Due next Week | Tasks Due Today | Last Tasks | Number1 | Number2 | Text30 | Actual Task Start | Actual Task Finish | Text7 | Text8 | Task active Day | Field | Finish Difference | Start Difference |
| --- | --- | --- | --- | --- | --- | --- | --- | --- | --- | --- | --- | --- | --- | --- | --- | --- | --- | --- | --- | --- | --- | --- | --- | --- | --- | --- | --- | --- | --- | --- | --- | --- | --- | --- |
| 459 | 1.1.4.4.6 | **ZnNi Vat Lid Limit Switches Gate 6 - Approval to close out workpackage** | 1.75d | 2025-06-23 | 2025-06-24 |  |  |  |  | 269d |  |  |  | 3h |  | No | 2025-05-22 | 2025-05-26 |  |  |  |  |  |  |  |  |  |  |  |  |  |  |  |  |
| 460 | 1.1.4.4.6.1 | ZnNi Vat Lid Limit Switches Desseminate lessons learnt | 1d | 2025-06-23 | 2025-06-23 | 458 |  |  |  | 269d | 0d |  | James Fleming [25%] | 2h |  | No | 2025-05-22 | 2025-05-23 | No | No | No | No | Yes | -1 | -1 |  |  |  |  |  |  |  |  |  |
| 461 | 1.1.4.4.6.2 | ZnNi Vat Lid Limit Switches Close out project | 1d | 2025-06-23 | 2025-06-24 | 460 |  |  |  | 269.44d |  |  | James Fleming [12.5%] | 1h |  | No | 2025-05-23 | 2025-05-26 | No | No | No | No | Yes | -1 | -1 |  |  |  |  |  |  |  |  |  |
| 462 | 1.1.4.5 | **ZnNi Line Scrubber Tank auto topping up functional** | 152.5d | 2024-07-25 A | 2025-02-24 A |  | 100% | 2024-07-25 | 2024-10-14 |  |  |  |  | 79h | 79h | No | 2024-09-04 | 2025-02-19 |  |  |  |  |  |  |  | Maintenance System | 2024-09-04 | 2025-02-19 |  |  |  |  |  |  |
| 463 | 1.1.4.5.1 | **ZnNi Line Scrubber Tank auto topping up functional Gate 1 - Approval to Proceed** | 8d | 2024-07-25 A | 2024-08-05 A |  | 100% |  |  |  |  |  |  | 21h | 21h | No | 2024-09-04 | 2024-09-04 |  |  |  |  |  |  |  |  | 2024-09-04 | 2024-09-04 |  |  |  |  |  |  |
| 464 | 1.1.4.5.1.1 | ZnNi Line Scrubber Tank auto topping up functional Confirm ownership of Asset | 1d | 2024-07-25 A | 2024-07-25 A |  | 100% | 2024-07-25 | 2024-07-25 |  |  |  | James Fleming | 1h | 1h | No | 2024-09-04 | 2024-09-04 | No | No | No | No | Yes | -1 | -1 | Maintenance System | 2024-09-04 | 2024-09-04 | -1 | -1 | 1 | 1 |  |  |
| 465 | 1.1.4.5.1.2 | ZnNi Line Scrubber Tank auto topping up functional Get fault onto carlsource | 0.5d | 2024-07-29 A | 2024-07-29 A | 464 | 100% | 2024-07-26 | 2024-07-26 |  |  |  | James Fleming | 1h | 1h | No | 2024-09-04 | 2024-09-04 | No | No | No | No | Yes | -1 | -1 | Maintenance System | 2024-09-04 | 2024-09-04 |  |  | 1 | 1 |  |  |
| 466 | 1.1.4.5.1.3 | **ZnNi Line Scrubber Tank auto topping up functional Kick off meeting completed** | 2d | 2024-07-29 A | 2024-07-30 A |  | 100% | 2024-07-29 | 2024-07-30 |  |  |  |  | 2h | 2h | No | 2024-09-04 | 2024-09-04 |  |  |  |  |  |  |  | Maintenance System | 2024-09-04 | 2024-09-04 |  |  |  |  |  |  |
| 467 | 1.1.4.5.1.3.1 | ZnNi Line Scrubber Tank auto topping up functional Requirements identified & agreed | 1d | 2024-07-29 A | 2024-07-29 A |  | 100% | 2024-07-29 | 2024-07-29 |  |  |  | James Fleming | 1h | 1h | No | 2024-09-04 | 2024-09-04 | No | No | No | No | Yes | -1 | -1 | Maintenance System | 2024-09-04 | 2024-09-04 | -1 | -1 | 1 | 1 |  |  |
| 468 | 1.1.4.5.1.3.2 | ZnNi Line Scrubber Tank auto topping up functional Vendor(s) identified & agreed | 1d | 2024-07-30 A | 2024-07-30 A | 467 | 100% | 2024-07-30 | 2024-07-30 |  |  |  | James Fleming | 1h | 1h | No | 2024-09-04 | 2024-09-04 | No | No | No | No | Yes | -1 | -1 | Maintenance System | 2024-09-04 | 2024-09-04 | -1 | -1 | 1 | 1 |  |  |
| 469 | 1.1.4.5.1.4 | **ZnNi Line Scrubber Tank auto topping up functional Requirements agreed** | 3d | 2024-08-01 A | 2024-08-05 A |  | 100% | 2024-08-01 | 2024-08-02 |  |  |  |  | 17h | 17h | No | 2024-09-06 | 2024-09-10 |  |  |  |  |  |  |  | Maintenance System | 2024-09-06 | 2024-09-23 |  |  |  |  |  |  |
| 470 | 1.1.4.5.1.4.1 | ZnNi Line Scrubber Tank auto topping up functional Scope of work | 1d | 2024-08-01 A | 2024-08-01 A |  | 100% | 2024-08-01 | 2024-08-01 |  |  |  | ASL | 8h | 8h | No | 2024-09-06 | 2024-09-06 | No | No | No | No | Yes | -1 | -1 | Maintenance System | 2024-09-06 | 2024-09-23 | -1 | -1 | 1 | 1 | 17 |  |
| 471 | 1.1.4.5.1.4.2 | ZnNi Line Scrubber Tank auto topping up functional Expected timescales | 1d | 2024-08-02 A | 2024-08-02 A | 470 | 100% | 2024-08-02 | 2024-08-02 |  |  |  | ASL | 8h | 8h | No | 2024-09-09 | 2024-09-09 | No | No | No | No | Yes | -1 | -1 | Maintenance System | 2024-09-06 | 2024-09-23 | -1 | -1 | 1 | 1 | 14 | -3 |
| 472 | 1.1.4.5.1.4.3 | ZnNi Line Scrubber Tank auto topping up functional Request for quotation(s) from ASL | 1d | 2024-08-05 A | 2024-08-05 A | 471 | 100% | 2024-08-05 | 2024-08-05 |  |  |  | James Fleming | 1h | 1h | No | 2024-09-10 | 2024-09-10 | No | No | No | No | Yes | -1 | -1 | Maintenance System | 2024-09-06 | 2024-09-06 | -1 | -1 | 1 | 1 | -4 | -4 |
| 473 | 1.1.4.5.2 | **ZnNi Line Scrubber Tank auto topping up functional Gate 3 - Approval to Procure services from ASL** | 2.5d | 2024-10-16 A | 2024-10-18 A | 472 | 100% |  |  |  |  |  |  | 1h | 1h | No | 2024-09-25 | 2024-09-25 |  |  |  |  |  |  |  |  | 2024-10-15 | 2024-10-16 |  |  |  |  |  |  |
| 474 | 1.1.4.5.2.1 | ZnNi Line Scrubber Tank auto topping up functional Purchase order raised | 2.5d | 2024-10-16 A | 2024-10-18 A | 472FS+10d | 100% | 2024-08-20 | 2024-08-20 |  |  | start no earlier than 2024-10-16 | Josh Avent [5%] | 1h | 1h | No | 2024-09-25 | 2024-09-25 | No | No | No | No | Yes | -1 | -1 | Maintenance System | 2024-10-15 | 2024-10-16 |  |  | 1 | 1 | 21 | 20 |
| 475 | 1.1.4.5.3 | **ZnNi Line Scrubber Tank auto topping up functional Gate 4 approval to Work Start** | 1d | 2024-11-07 A | 2024-11-07 A |  | 100% |  |  |  |  |  |  | 1h | 1h | No | 2024-09-26 | 2024-09-26 |  |  |  |  |  |  |  |  | 2024-11-25 | 2024-11-25 |  |  |  |  |  |  |
| 476 | 1.1.4.5.3.1 | ZnNi Line Scrubber Tank auto topping up functional Vendor RAMS | 1d | 2024-11-07 A | 2024-11-07 A | 479SF-5d | 100% |  |  |  |  |  | ASL | 1h | 1h | No | 2024-09-26 | 2024-09-26 | No | No | No | No | Yes | -1 | -1 |  | 2024-11-25 | 2024-11-25 |  |  | 1 | 1 | 60 | 60 |
| 477 | 1.1.4.5.4 | **ZnNi Line Scrubber Tank auto topping up functional Gate 5 - approval to handover** | 134d | 2024-08-19 A | 2025-02-21 A |  | 100% | 2024-09-05 | 2024-09-05 |  |  |  |  | 54h | 54h | No | 2024-09-27 | 2024-10-11 |  |  |  |  |  |  |  | Maintenance System | 2024-11-25 | 2025-02-18 |  |  |  |  |  |  |
| 478 | 1.1.4.5.4.1 | ZnNi Line Scrubber Tank auto topping up functional Scrubber system servicing | 1d | 2024-08-19 A | 2024-08-19 A |  | 100% | 2024-08-19 | 2024-08-19 |  |  |  | James Allcoat | 8h | 8h | No | 2024-09-27 | 2024-09-27 | No | No | No | No | Yes | -1 | -1 | Maintenance System | 2024-11-25 | 2024-11-26 | -1 | -1 | 1 | 1 | 60 | 59 |
| 479 | 1.1.4.5.4.2 | ZnNi Line Scrubber Tank auto topping up functional Scrubber system Auto top up fault diagnosed | 1d | 2024-11-15 A | 2024-11-15 A |  | 100% | 2024-08-20 | 2024-08-20 |  |  |  | James Allcoat | 1h | 1h | No | 2024-09-30 | 2024-09-30 | No | No | No | No | Yes | -1 | -1 | Maintenance System | 2024-11-25 | 2024-11-26 |  |  | 1 | 1 | 57 | 56 |
| 480 | 1.1.4.5.4.3 | ZnNi Line Scrubber Tank auto topping up functional Scrubber system dignosed part(s) replaced) | 1d | 2024-12-02 A | 2024-12-02 A | 479FS+10d | 100% | 2024-09-04 | 2024-09-04 |  |  |  | James Allcoat | 8h | 8h | No | 2024-10-01 | 2024-10-01 | No | No | No | No | Yes | -1 | -1 | Maintenance System | 2024-11-25 | 2024-11-26 |  |  | 1 | 1 | 56 | 55 |
| 481 | 1.1.4.5.4.4 | ZnNi Line Scrubber Tank auto topping up functional Scrubber pH probe plastic extension required | 1d | 2025-02-11 A | 2025-02-11 A | 480FS+50d | 100% |  |  |  |  |  | ASL | 8h | 8h | No | 2024-10-02 | 2024-10-02 | No | No | No | No | Yes | -1 | -1 |  | 2024-11-25 | 2024-11-26 |  |  | 1 | 1 | 55 | 54 |
| 482 | 1.1.4.5.4.5 | ZnNi Line Scrubber Tank auto topping up functional Wiring Loom husbandry | 1d | 2025-02-12 A | 2025-02-12 A | 481 | 100% |  |  |  |  |  | ASL | 8h | 8h | No | 2024-10-03 | 2024-10-03 | No | No | No | No | Yes | -1 | -1 |  | 2024-11-25 | 2024-11-26 |  |  | 1 | 1 | 54 | 53 |
| 483 | 1.1.4.5.4.6 | ZnNi Line Scrubber Tank auto topping up functional Scrubber tank level labels | 1d | 2025-02-13 A | 2025-02-13 A | 482 | 100% |  |  |  |  |  | ASL | 8h | 8h | No | 2024-10-04 | 2024-10-04 | No | No | No | No | Yes | -1 | -1 |  | 2024-11-25 | 2024-11-26 |  |  | 1 | 1 | 53 | 52 |
| 484 | 1.1.4.5.4.7 | ZnNi Line Scrubber Tank auto topping up functional Scrubber system servicing | 1d | 2025-02-14 A | 2025-02-14 A | 483 | 100% | 2024-08-19 | 2024-08-19 |  |  |  | James Allcoat | 8h | 8h | No | 2024-10-07 | 2024-10-07 | No | No | No | No | Yes | -1 | -1 | Maintenance System | 2024-11-25 | 2024-11-26 |  |  | 1 | 1 | 50 | 49 |
| 485 | 1.1.4.5.4.8 | ZnNi Line Scrubber Tank auto topping up functional Scrubber media changed - needs to form part of first line maintnenance | 1d | 2025-02-17 A | 2025-02-17 A | 484 | 100% | 2024-08-20 | 2024-08-20 |  |  |  | James Allcoat [25%] | 2h | 2h | No | 2024-10-08 | 2024-10-08 | No | No | No | No | Yes | -1 | -1 | Maintenance System | 2024-11-25 | 2024-11-26 |  |  | 1 | 1 | 49 | 48 |
| 486 | 1.1.4.5.4.9 | ZnNi Line Scrubber Tank auto topping up functional Scrubber System Works Completed | 1d | 2025-02-18 A | 2025-02-18 A | 485 | 100% | 2024-09-02 | 2024-10-07 |  |  |  | James Fleming | 1h | 1h | No | 2024-10-09 | 2024-10-09 | No | No | No | No | Yes | -1 | -1 | Maintenance System | 2024-11-25 | 2024-11-26 |  |  | 1 | 1 | 48 | 47 |
| 487 | 1.1.4.5.4.10 | ZnNi Line Scrubber Tank auto topping up functional Updated drawings received and filed | 1d | 2025-02-19 A | 2025-02-19 A | 486 | 100% |  |  |  |  |  | James Fleming | 1h | 1h | No | 2024-10-10 | 2024-10-10 | No | No | No | No | Yes | -1 | -1 |  | 2024-11-25 | 2025-02-18 |  |  | 1 | 1 | 131 | 46 |
| 488 | 1.1.4.5.4.11 | ZnNi Line Scrubber Tank auto topping up functional Validation and sign off | 1d | 2025-02-20 A | 2025-02-21 A | 487 | 100% | 2024-09-05 | 2024-10-10 |  |  |  | James Fleming | 1h | 1h | No | 2024-10-11 | 2024-10-11 | No | No | No | No | Yes | -1 | -1 | Maintenance System | 2024-11-25 | 2025-01-29 |  |  | 1 | 1 | 110 | 45 |

Notes:
- 462: JF 140824 this fault is on Carl Source and the maintnenance team have requested that the issue is looked at whilst the scrubber system service is being carried out. The plan will be updated accordingly on reciept of findings. Service is due week 33. We are awaiting: Quote, PO and report. Report will need to be uploaded to Carl Source or the repository referenced by Jason Payne.

| ID | WBS | Task | Duration | Start | Finish | Predecessors | Complete | Remaining | Baseline 1 start | Baseline 1 finish | Total slack | Constraint | Resources | Work | Actual work | Tasks Due this Month | Text30 | Actual Task Start | Actual Task Finish | Initial Planned Start | Initial Planned Finish | Tasks Due next Month | Tasks Due this week | Tasks Due next Week | Tasks Due Today | Last Tasks | Task active Day | Number1 | Number2 | Start Difference | Finish Difference | Field | Text7 | Text8 |
| --- | --- | --- | --- | --- | --- | --- | --- | --- | --- | --- | --- | --- | --- | --- | --- | --- | --- | --- | --- | --- | --- | --- | --- | --- | --- | --- | --- | --- | --- | --- | --- | --- | --- | --- |
| 489 | 1.1.4.5.5 | **Gate 6 - Approval to close project** | 1.5d | 2025-02-21 A | 2025-02-24 A | 488 | 100% |  | 2024-09-09 | 2024-09-09 |  |  |  | 2h | 2h | No | Maintenance System | 2025-02-10 | 2025-02-10 | 2024-10-14 | 2024-10-14 |  |  |  |  |  |  |  |  |  |  |  |  |  |
| 490 | 1.1.4.5.5.1 | ZnNi Line Scrubber Tank auto topping up functional Desseminate lessons learnt | 0.5d | 2025-02-21 A | 2025-02-21 A | 488 | 100% |  |  |  |  |  | James Fleming [25%] | 1h | 1h | No |  | 2025-02-10 | 2025-02-10 | 2024-10-15 | 2024-10-15 | No | No | No | No | Yes | 1 | -1 | -1 | 118 | 118 | 1 |  |  |
| 491 | 1.1.4.5.5.2 | ZnNi Line Scrubber Tank auto topping up functional Close project documentation | 0.5d | 2025-02-24 A | 2025-02-24 A | 490 | 100% |  |  |  |  | finish no earlier than 2025-02-21 | James Fleming [25%] | 1h | 1h | No |  | 2025-02-10 | 2025-02-10 | 2024-10-16 | 2024-10-16 | No | No | No | No | Yes | 1 | -1 | -1 | 117 | 117 | 1 |  |  |
| 492 | 1.2 | **ZnNi Line Post Stabilization Optimization** | 431.97d? | 2024-03-29 A | 2025-11-24 |  | 38% | 268.85d? | 2024-04-08 | 2025-09-17 | 160.22d |  |  | 1735.64h | 789.04h | No | Maintenance System | 2029-03-29 |  | 2024-03-29 | 2025-08-12 |  |  |  |  |  |  |  |  |  |  |  |  |  |
| 493 | 1.2.1 | **ZnNi Line Filter Upgrade** | 317.75d | 2024-03-29 A | 2025-06-17 A |  | 100% |  | 2024-05-20 | 2024-10-14 |  |  |  | 405.02h | 405.02h | No | Maintenance System | 2024-05-20 |  | 2024-03-29 | 2025-04-01 |  |  |  |  |  |  |  |  | 52 |  |  |  |  |
| 494 | 1.2.1.1 | **ZnNi Line Filter Upgrade Gate 1 - Approval to Proceed with Project** | 2d | 2024-05-20 A | 2024-05-21 A |  | 100% |  |  |  |  |  |  | 2h | 2h | No |  | 2024-05-20 | 2024-05-21 | 2024-05-20 | 2024-05-21 |  |  |  |  |  |  |  |  |  |  |  |  |  |
| 495 | 1.2.1.1.1 | **ZnNi Line Filter Upgrade Kick off meeting completed** | 2d | 2024-05-20 A | 2024-05-21 A |  | 100% |  | 2024-05-20 | 2024-05-21 |  |  |  | 2h | 2h | No | Maintenance System | 2024-05-20 | 2024-05-21 | 2024-05-20 | 2024-05-21 |  |  |  |  |  |  |  |  |  |  |  |  |  |
| 496 | 1.2.1.1.1.1 | ZnNi Line Filter Upgrade Requirements identified& agreed | 1d | 2024-05-20 A | 2024-05-20 A |  | 100% |  | 2024-05-20 | 2024-05-20 |  |  | James Fleming | 1h | 1h | No | Maintenance System | 2024-05-20 | 2024-05-20 | 2024-05-20 | 2024-05-20 | No | No | No | No | Yes | 1 | -1 | -1 |  |  | 1 | -1 | -1 |
| 497 | 1.2.1.1.1.2 | ZnNi Line Filter Upgrade Vendor(s) identified& agreed | 1d | 2024-05-21 A | 2024-05-21 A | 496 | 100% |  | 2024-05-21 | 2024-05-21 |  |  | James Fleming | 1h | 1h | No | Maintenance System | 2024-05-21 | 2024-05-21 | 2024-05-21 | 2024-05-21 | No | No | No | No | Yes | 1 | -1 | -1 |  |  | 1 | -1 | -1 |
| 498 | 1.2.1.2 | **ZnNi Line Filter Upgrade Gate 2 - Approval for RFQ** | 1d | 2024-05-23 A | 2024-05-23 A |  | 100% |  |  |  |  |  |  | 2h | 2h | No |  | 2024-06-25 | 2024-06-25 | 2024-05-22 | 2024-05-22 |  |  |  |  |  |  |  |  | 34 | 34 |  |  |  |
| 499 | 1.2.1.2.1 | **ZnNi Line Filter Upgrade Requirements agreed** | 1d | 2024-05-23 A | 2024-05-23 A |  | 100% |  | 2024-05-22 | 2024-05-23 |  |  |  | 2h | 2h | No | Maintenance System | 2024-06-25 | 2024-06-25 | 2024-05-23 | 2024-05-23 |  |  |  |  |  |  |  |  |  |  |  |  |  |
| 500 | 1.2.1.2.1.1 | ZnNi Line Filter Upgrade Scope of work | 1d | 2024-05-23 A | 2024-05-23 A | 497 | 100% |  | 2024-05-23 | 2024-05-23 |  |  | James Fleming | 1h | 1h | No | Maintenance System | 2024-06-25 | 2024-06-25 | 2024-05-23 | 2024-05-23 | No | No | No | No | Yes | 1 | -1 | -1 | 33 | 33 | 1 | -1 | -1 |
| 501 | 1.2.1.2.1.2 | ZnNi Line Filter Upgrade Expected timescales | 1d | 2024-05-23 A | 2024-05-23 A |  | 100% |  | 2024-05-23 | 2024-05-23 |  |  | James Fleming | 1h | 1h | No | Maintenance System | 2024-06-25 | 2024-06-25 | 2024-05-23 | 2024-05-23 | No | No | No | No | Yes | 1 | -1 | -1 | 33 | 33 | 1 | -1 | -1 |
| 502 | 1.2.1.3 | **ZnNi Line Filter Upgrade Gate 3 - Approval for Procurement** | 12d | 2024-10-24 A | 2024-11-08 A |  | 100% |  | 2024-08-05 | 2024-08-05 |  |  |  | 3h | 3h | No | Maintenance System | 2024-05-20 | 2024-10-23 | 2024-05-24 | 2024-06-12 |  |  |  |  |  |  |  |  | -4 | 133 |  |  |  |
| 503 | 1.2.1.3.1 | ZnNi Line Filter Upgrade Proposals requested | 1d | 2024-10-24 A | 2024-10-24 A | 501 | 100% |  |  |  |  |  | James Fleming [12.5%] | 1h | 1h | No |  | 2024-05-20 | 2024-05-20 | 2024-05-24 | 2024-05-24 | No | No | No | No | Yes | 1 | -1 | -1 | -4 | -4 | 1 |  |  |
| 504 | 1.2.1.3.2 | ZnNi Line Filter Upgrade Proposals received | 10d | 2024-10-25 A | 2024-11-07 A | 503 | 100% |  |  |  |  |  | James Fleming [1.25%] | 1h | 1h | No |  | 2024-08-07 | 2024-08-07 | 2024-05-28 | 2024-06-11 | No | No | No | No | Yes | 1 | -1 | -1 | 71 | 57 | 1 |  |  |
| 505 | 1.2.1.3.3 | ZnNi Line Filter Upgrade Supplier Selected | 1d | 2024-11-08 A | 2024-11-08 A | 504 | 100% |  |  |  |  |  | James Fleming [12.5%] | 1h | 1h | No |  | 2024-10-23 | 2024-10-23 | 2024-06-12 | 2024-06-12 | No | No | No | No | Yes | 1 | -1 | -1 | 133 | 133 | 1 |  |  |
| 506 | 1.2.1.4 | **ZnNi Line Filter Upgrade Gate 4 - Approval to Start Work** | 219d | 2024-03-29 A | 2025-01-29 A |  | 100% |  |  |  |  |  |  | 5.4h | 5.4h | No |  | 2024-11-14 | 2025-01-31 | 2024-06-13 | 2024-09-16 |  |  |  |  |  |  |  |  | 154 | 137 |  |  |  |
| 507 | 1.2.1.4.1 | ZnNi Line Filter Upgrade Purchase order raised | 1d | 2024-11-08 A | 2024-11-08 A | 505FS+11d | 100% |  | 2024-08-19 | 2024-08-19 |  |  | Josh Avent [5%] | 0.4h | 0.4h | No | Maintenance System | 2024-11-14 | 2024-11-14 | 2024-06-13 | 2024-06-13 | No | No | No | No | Yes | 1 | -1 | -1 | 154 | 154 | 1 |  |  |
| 508 | 1.2.1.4.2 | ZnNi Line Filter Upgrade Vendor RAMS | 1d | 2024-11-27 A | 2024-11-27 A | 514SF-5d | 100% |  |  |  |  |  | Puretech [25%] | 2h | 2h | No |  | 2025-01-14 | 2025-01-14 | 2024-09-10 | 2024-09-10 | No | No | No | No | Yes | 1 | -1 | -1 | 126 | 126 | 1 |  |  |
| 509 | 1.2.1.4.3 | ZnNi Line Filter Upgrade Isolation of Line | 1d | 2025-01-23 A | 2025-01-23 A | 514SF-5d | 100% |  |  |  |  |  | James Allcoat [12.5%] | 1h | 1h | No |  | 2025-01-31 | 2025-01-31 | 2024-09-16 | 2024-09-16 | No | No | No | No | Yes | 1 | -1 | -1 | 137 | 137 | 1 |  |  |
| 510 | 1.2.1.4.4 | ZnNi Line Filter Upgrade Services available | 1d | 2025-01-23 A | 2025-01-23 A | 514SF-5d | 100% |  |  |  |  |  | James Allcoat [12.5%] | 1h | 1h | No |  | 2025-01-31 | 2025-01-31 | 2024-09-16 | 2024-09-16 | No | No | No | No | Yes | 1 | -1 | -1 | 137 | 137 | 1 |  |  |
| 511 | 1.2.1.4.5 | ZnNi Line Filter Upgrade Vat 7 emptied | 1d | 2025-01-29 A | 2025-01-29 A | 514SF-1d | 100% |  |  |  |  |  |  |  |  | No |  | 2025-01-31 | 2025-01-31 | 2024-09-16 | 2024-09-16 | No | No | No | No | Yes | 1 | -1 | -1 | 137 | 137 | 1 |  |  |
| 512 | 1.2.1.4.6 | ZnNi Line Filter Upgrade Production Downtime Agreed | 1d | 2024-03-29 A | 2024-03-29 A | 514SF-5d | 100% |  |  |  |  |  | James Fleming [12.5%] | 1h | 1h | No |  | 2025-01-31 | 2025-01-31 | 2024-09-10 | 2024-09-10 | No | No | No | No | Yes | 1 | -1 | -1 | 143 | 143 | 1 |  |  |

Notes:
- 493: JF 140824 The quotation for this has now been recieved. The work can not be completed until October 24. This was bought up at our process meeting week 33 and desseminated to Liam Garner via meeting outputs. Will need bring up during the steering week 33 as a point for discussion.

| ID | WBS | Task | Type | Duration | Start | Finish | Predecessors | Complete | Baseline 1 start | Baseline 1 finish | Constraint | Resources | Work | Actual work | Tasks Due this Month | Actual Task Start | Actual Task Finish | Initial Planned Start | Initial Planned Finish | Start Difference | Finish Difference | Tasks Due next Month | Tasks Due this week | Tasks Due next Week | Tasks Due Today | Last Tasks | Task active Day | Number1 | Number2 | Field | Text30 |
| --- | --- | --- | --- | --- | --- | --- | --- | --- | --- | --- | --- | --- | --- | --- | --- | --- | --- | --- | --- | --- | --- | --- | --- | --- | --- | --- | --- | --- | --- | --- | --- |
| 513 | 1.2.1.5 | **ZnNi Line Filter Upgrade Gate 5 - Approval to handover work to SF** |  | 309.94d | 2024-04-08 A | 2025-06-13 A |  | 100% |  |  |  |  | 390.62h | 390.62h | No | 2025-01-31 | 2025-02-06 | 2024-09-17 | 2024-09-23 | 136 | 136 |  |  |  |  |  |  |  |  |  |  |
| 514 | 1.2.1.5.1 | ZnNi Line Filter Upgrade Vat 7 filters installed |  | 4d | 2025-01-31 A | 2025-02-05 A | 507FS+59d | 100% |  |  |  | Koch | 32h | 32h | No | 2025-01-31 | 2025-02-05 | 2024-09-17 | 2024-09-23 | 136 | 135 | No | No | No | No | Yes | 1 | -1 | -1 | 1 |  |
| 515 | 1.2.1.5.2 | ZnNi Line Filter Upgrade Install Power Supply |  | 1d | 2024-04-08 A | 2024-04-08 A |  | 100% |  |  |  | Koch | 8h | 8h | No | 2025-02-28 | 2025-02-28 | 2024-09-17 | 2024-09-23 | 164 | 158 | No | No | No | No | Yes | 1 | -1 | -1 | 1 |  |
| 516 | 1.2.1.5.3 | ZnNi Line Filter Upgrade Move water conductivity probe |  | 4d | 2025-01-31 A | 2025-02-05 A | 507FS+59d | 100% | 2024-10-09 | 2024-10-09 |  | Koch | 32h | 32h | No | 2025-01-31 | 2025-02-05 | 2024-09-17 | 2024-09-23 | 136 | 135 | No | No | No | No | Yes | 1 | -1 | -1 | 1 | Maintenance System |
| 517 | 1.2.1.5.4 | ZnNi Line Filter Upgrade Move UV lighting |  | 4d | 2025-01-31 A | 2025-02-05 A | 507FS+59d | 100% | 2024-10-09 | 2024-10-09 |  | Koch [75%] | 24h | 24h | No | 2025-01-31 | 2025-02-05 | 2024-09-17 | 2024-09-23 | 136 | 135 | No | No | No | No | Yes | 1 | -1 | -1 | 1 | Maintenance System |
| 518 | 1.2.1.5.5 | ZnNi Line Filter Upgrade Vat 8 and 9 Filters installed |  | 4d | 2025-01-31 A | 2025-02-05 A | 507FS+59d | 100% |  |  |  | Koch | 32h | 32h | No | 2025-01-31 | 2025-02-05 | 2024-09-17 | 2024-09-23 | 136 | 135 | No | No | No | No | Yes | 1 | -1 | -1 | 1 |  |
| 519 | 1.2.1.5.6 | ZnNi Line Filter Upgrade Test pH probe and water conductivity probe and approve |  | 1d | 2025-02-06 A | 2025-02-06 A | 518 | 100% | 2024-10-10 | 2024-10-10 |  | Koch | 8h | 8h | No | 2025-02-06 | 2025-02-06 | 2024-09-17 | 2024-09-23 | 142 | 136 | No | No | No | No | Yes | 1 | -1 | -1 | 1 | Maintenance System |
| 520 | 1.2.1.5.7 | ZnNi Line Filter Upgrade Test UV lighting and approve |  | 1d | 2025-02-06 A | 2025-02-06 A | 518 | 100% | 2024-10-10 | 2024-10-10 |  | Koch | 8h | 8h | No | 2025-02-06 | 2025-02-06 | 2024-09-17 | 2024-09-23 | 142 | 136 | No | No | No | No | Yes | 1 | -1 | -1 | 1 | Maintenance System |
| 521 | 1.2.1.5.8 | **ZnNi Line Filter Upgrade Integrate Vat 7 Filter to Main Panel** |  | 33.91d | 2025-02-06 A | 2025-03-25 A | 515 | 100% |  |  |  | Koch [50%] | 143.62h | 143.62h | No | 2025-02-05 |  | 2025-02-06 | 2025-03-20 |  |  | No | Yes | No | No | Yes |  | -1 | -1 |  |  |
| 522 | 1.2.1.5.8.1 | ZnNi Line Filter Upgrade Request for Quotation for Vat 7 filter integration |  | 1d | 2025-02-06 A | 2025-02-06 A | 514 | 100% |  |  | finish no earlier than 2025-02-06 | James Fleming [12.5%] | 1h | 1h | No | 2025-02-05 | 2025-02-05 | 2025-02-06 | 2025-02-06 | -1 | -1 | No | No | No | No | Yes | 1 |  |  | 1 |  |
| 523 | 1.2.1.5.8.2 | ZnNi Line Filter Upgrade Vat 7 filter integration Quoting |  | 10d | 2025-02-07 A | 2025-02-20 A | 522 | 100% |  |  |  | Craig Baker [5%] | 4h | 4h | No | 2025-02-07 | 2025-03-14 | 2025-02-07 | 2025-02-20 |  | 22 | No | No | No | No | Yes | 1 |  |  | 1 |  |
| 524 | 1.2.1.5.8.3 | ZnNi Line Filter Upgrade Quotation for Vat 7 filter integration received | milestone | 0d | 2025-03-14 A | 2025-03-14 A | 523 | 100% |  |  | finish no earlier than 2025-03-14 | James Fleming |  |  | No | 2025-03-14 | 2025-03-14 | 2025-02-21 | 2025-02-21 | 21 | 21 | No | No | No | No | Yes | 1 |  |  | 1 |  |
| 525 | 1.2.1.5.8.4 | ZnNi Line Filter Upgrade Proposal Approved for Vat 7 filter integration |  | 1d | 2025-03-17 A | 2025-03-17 A | 524 | 100% |  |  | start no earlier than 2025-02-06 | James Fleming [25%] | 2h | 2h | No | 2025-03-19 | 2025-03-19 | 2025-02-21 | 2025-02-21 | 26 | 26 | No | No | No | No | Yes | 1 |  |  | 1 |  |
| 526 | 1.2.1.5.8.5 | ZnNi Line Filter Upgrade Vat 7 filter integration PO raising |  | 1d | 2025-03-24 A | 2025-03-25 A | 525FS+5d | 100% |  |  | start no earlier than 2025-02-07 | Josh Avent [12.5%] | 1h | 1h | No | 2025-03-20 | 2025-04-01 | 2025-03-03 | 2025-03-03 | 17 | 29 | No | No | No | No | Yes | 1 |  |  | 1 |  |
| 527 | 1.2.1.5.9 | **ZnNi Line Filter Upgrade Vat 7 filter integration work** |  | 5.94d | 2025-06-02 A | 2025-06-09 A |  | 100% |  |  |  |  | 101h | 101h | No | 2025-06-12 | 2025-06-13 | 2025-04-08 | 2025-04-11 |  |  | No | No | No | No | Yes |  |  |  |  |  |
| 528 | 1.2.1.5.9.1 | ZnNi Line Filter Upgrade Vat 7 filter integration work RAMs |  | 1d | 2025-06-02 A | 2025-06-02 A | 526FS+48d | 100% |  |  |  | James Fleming [12.5%] | 1h | 1h | No | 2025-06-12 | 2025-06-13 | 2025-04-08 | 2025-04-08 | 65 | 66 | No | No | No | No | Yes | 1 |  |  | 1 |  |
| 529 | 1.2.1.5.9.2 | ZnNi Line Filter Upgrade DMS software for control and monitoring of pump. Filter pressure alarm (utilising pressure sensor mounted on pump). Alarms for pump local isolator/overload trip. |  | 3d | 2025-06-03 A | 2025-06-06 A | 526FS+50d | 100% |  |  | start no earlier than 2025-02-10 | Koch [50%] | 12h | 12h | No | 2025-06-12 | 2025-06-13 | 2025-04-08 | 2025-04-11 | 65 | 63 | No | No | No | No | Yes | 1 | -1 | -1 | 1 |  |
| 530 | 1.2.1.5.9.3 | ZnNi Line Filter Upgrade PLC software for controls and monitoring of pump, together with filter pressure. |  | 3d | 2025-06-03 A | 2025-06-06 A | 526FS+50d | 100% |  |  | start no earlier than 2025-02-11 | Koch [50%] | 12h | 12h | No | 2025-06-12 | 2025-06-13 | 2025-04-08 | 2025-04-11 | 65 | 63 | No | No | No | No | Yes | 1 |  |  | 1 |  |
| 531 | 1.2.1.5.9.4 | ZnNi Line Filter Upgrade Main control panel modifications (including motor circuit breaker, contactor, terminals). This will include integrating the pump into the plant emergency stop system. |  | 3d | 2025-06-03 A | 2025-06-06 A | 526FS+50d | 100% |  |  | start no earlier than 2025-02-12 | Koch [50%] | 12h | 12h | No | 2025-06-12 | 2025-06-13 | 2025-04-08 | 2025-04-11 | 65 | 63 | No | No | No | No | Yes | 1 |  |  | 1 |  |
| 532 | 1.2.1.5.9.5 | ZnNi Line Filter Upgrade Removal of existing pump control panel. |  | 3d | 2025-06-03 A | 2025-06-06 A | 526FS+50d | 100% |  |  | start no earlier than 2025-02-13 | Koch [50%] | 12h | 12h | No | 2025-06-12 | 2025-06-13 | 2025-04-08 | 2025-04-11 | 65 | 63 | No | No | No | No | Yes | 1 |  |  | 1 |  |
| 533 | 1.2.1.5.9.6 | ZnNi Line Filter Upgrade Removal of 3-phase power supply to existing pump control panel (back to supply point, 16A supply). |  | 3d | 2025-06-03 A | 2025-06-06 A | 526FS+50d | 100% |  |  | start no earlier than 2025-02-14 | Koch [50%] | 12h | 12h | No | 2025-06-12 | 2025-06-13 | 2025-04-08 | 2025-04-11 | 65 | 63 | No | No | No | No | Yes | 1 |  |  | 1 |  |
| 534 | 1.2.1.5.9.7 | ZnNi Line Filter Upgrade Installation of auxiliary contact on local isolator. |  | 3d | 2025-06-03 A | 2025-06-06 A | 526FS+50d | 100% |  |  | start no earlier than 2025-02-17 | Koch [50%] | 12h | 12h | No | 2025-06-12 | 2025-06-13 | 2025-04-08 | 2025-04-11 | 65 | 63 | No | No | No | No | Yes | 1 |  |  | 1 |  |
| 535 | 1.2.1.5.9.8 | ZnNi Line Filter Upgrade installation of field cabling. Pump 3PH (main panel to pump). Pump local isolator auxiliary monitor (main panel to local isolator). |  | 3d | 2025-06-03 A | 2025-06-06 A | 526FS+50d | 100% |  |  | start no earlier than 2025-02-18 | Koch [50%] | 12h | 12h | No | 2025-06-12 | 2025-06-13 | 2025-04-08 | 2025-04-11 | 65 | 63 | No | No | No | No | Yes | 1 |  |  | 1 |  |
| 536 | 1.2.1.5.9.9 | ZnNi Line Filter Upgrade Filter pressure monitor (main panel to junction box, junction box to sensor – includes 24V DC power supply to se |  | 3d | 2025-06-03 A | 2025-06-06 A | 526FS+50d | 100% |  |  | start no earlier than 2025-02-19 | Koch [50%] | 12h | 12h | No | 2025-06-12 | 2025-06-13 | 2025-04-08 | 2025-04-11 | 65 | 63 | No | No | No | No | Yes | 1 |  |  | 1 |  |
| 537 | 1.2.1.5.9.10 | ZnNi Line Filter Upgrade Test and validate Filters |  | 1d | 2025-06-06 A | 2025-06-09 A | 536 | 100% |  |  | start no earlier than 2025-02-20 | Koch [50%] | 4h | 4h | No | 2025-06-12 | 2025-06-13 | 2025-04-08 | 2025-04-11 | 65 | 63 | No | No | No | No | Yes | 1 | -1 | -1 | 1 |  |
| 538 | 1.2.1.5.9.11 | ZnNi Line Filter Upgrade Work Acceptance Signed off | milestone | 0d | 2025-06-06 A | 2025-06-06 A | 536 | 100% |  |  | start no earlier than 2025-02-24 | James Fleming |  |  | No | 2025-06-12 | 2025-06-13 | 2025-04-08 | 2025-04-11 | 65 | 63 | No | No | No | No | Yes | 1 | -1 | -1 | 1 |  |
| 539 | 1.2.1.5.10 | ZnNi Line Filter Upgrade Drawings Updated |  | 5d | 2025-06-06 A | 2025-06-13 A | 538 | 100% |  |  | start no earlier than 2025-02-24 | Koch [5%] | 2h | 2h | No | 2025-06-23 | 2025-06-23 | 2025-04-08 | 2025-04-11 | 76 | 73 | No | No | No | No | Yes | 1 | -1 | -1 | 1 |  |

| ID | WBS | Task | Type | Duration | Start | Finish | Predecessors | Complete | Remaining | Baseline 1 start | Baseline 1 finish | Total slack | Free slack | Resources | Work | Actual work | Tasks Due this Month | Text30 | Initial Planned Start | Initial Planned Finish | Tasks Due next Month | Tasks Due this week | Tasks Due next Week | Tasks Due Today | Last Tasks | Task active Day | Number1 | Number2 | Field | Actual Task Start | Actual Task Finish | Start Difference | Finish Difference |
| --- | --- | --- | --- | --- | --- | --- | --- | --- | --- | --- | --- | --- | --- | --- | --- | --- | --- | --- | --- | --- | --- | --- | --- | --- | --- | --- | --- | --- | --- | --- | --- | --- | --- |
| 540 | 1.2.1.6 | **ZnNi Line Filter Upgrade Gate 6 - Approval to close out** |  | 1.75d | 2025-06-16 A | 2025-06-17 A |  | 100% |  | 2024-10-11 | 2024-10-11 |  |  |  | 2h | 2h | No | Maintenance System | 2025-03-25 | 2025-03-27 |  |  |  |  |  |  |  |  |  |  |  |  |  |
| 541 | 1.2.1.6.1 | ZnNi Line Filter Upgrade Lessons Learnt desseminated |  | 1d | 2025-06-16 A | 2025-06-16 A | 539 | 100% |  |  |  |  |  | James Fleming [12.5%] | 1h | 1h | No |  | 2025-03-25 | 2025-03-26 | No | No | No | No | Yes | 1 | -1 | -1 | 1 |  |  |  |  |
| 542 | 1.2.1.6.2 | ZnNi Line Filter Upgrade Project Closed |  | 1d | 2025-06-16 A | 2025-06-17 A | 541 | 100% |  |  |  |  |  | James Fleming [12.5%] | 1h | 1h | No |  | 2025-03-26 | 2025-03-27 | No | No | No | No | Yes | 1 | -1 | -1 | 1 |  |  |  |  |
| 543 | 1.2.2 | **ZnNi Line Flow Rate Optimization** |  | 286.75d | 2024-04-08 A | 2025-05-13 |  | 45% | 156.68d |  |  | 299.44d |  |  | 212h | 98h | No |  | 2024-08-22 | 2025-03-20 | No | No | No | No | Yes |  |  |  |  | 2024-08-22 |  |  |  |
| 544 | 1.2.2.1 | **ZnNi Line Agitation Flow Monitoring** |  | 225.75d | 2024-07-02 A | 2025-05-13 |  | 90% | 21.5d |  |  | 299.44d |  |  | 99h | 96h | No |  | 2024-05-10 | 2024-07-30 |  |  |  |  |  |  |  |  |  | 2024-06-20 | 2024-06-20 | 41 | -40 |
| 545 | 1.2.2.1.1 | **ZnNi Agitation Solution flow and control Gate 1 approval to proceed with project** |  | 1d | 2024-07-02 A | 2024-07-02 A |  | 100% |  |  |  |  |  |  | 1h | 1h | No |  | 2024-05-10 | 2024-05-10 |  |  |  |  |  |  |  |  |  | 2024-06-20 | 2024-06-20 | 41 | 41 |
| 546 | 1.2.2.1.1.1 | ZnNi Agitation Solution flow and control Kick off meeting completed |  | 1d | 2024-07-02 A | 2024-07-02 A |  | 100% |  | 2024-04-29 | 2024-04-30 |  |  | James Fleming | 1h | 1h | No | Maintenance System | 2024-05-10 | 2024-05-10 | No | No | No | No | Yes | 1 | -1 | -1 | 1 | 2024-06-20 | 2024-06-20 | 41 | 41 |
| 547 | 1.2.2.1.2 | **ZnNi Agitation Solution flow and control Gate 2 - Approval to RFQ** |  | 1d | 2024-07-02 A | 2024-07-02 A |  | 100% |  |  |  |  |  |  | 1h | 1h | No |  | 2024-05-10 | 2024-05-10 |  |  |  |  |  |  |  |  |  | 2024-06-20 | 2024-06-20 | 41 | 41 |
| 548 | 1.2.2.1.2.1 | ZnNi Agitation Solution flow and control Supplier selection |  | 1d | 2024-07-02 A | 2024-07-02 A |  | 100% |  | 2024-05-01 | 2024-05-21 |  |  | James Fleming | 1h | 1h | No | Maintenance System | 2024-05-10 | 2024-05-10 | No | No | No | No | Yes | 1 | -1 | -1 | 1 | 2024-06-20 | 2024-06-20 | 41 | 41 |
| 549 | 1.2.2.1.3 | **ZnNi Agitation Solution flow and control Gate 3 Approval to continue with procurement** |  | 2d | 2024-07-02 A | 2024-07-03 A |  | 100% |  | 2024-04-30 | 2024-04-30 |  |  |  | 2h | 2h | No | Maintenance System | 2024-05-13 | 2024-07-03 |  |  |  |  |  |  |  |  |  | 2024-06-20 | 2024-07-11 | 38 | 8 |
| 550 | 1.2.2.1.3.1 | ZnNi Agitation Solution flow and control Request for quotation(s) |  | 1d | 2024-07-02 A | 2024-07-02 A |  | 100% |  | 2024-05-03 | 2024-05-03 |  |  | James Fleming | 1h | 1h | No | Maintenance System | 2024-05-13 | 2024-05-13 | No | No | No | No | Yes | 1 | -1 | -1 | 1 | 2024-06-20 | 2024-06-20 | 38 | 38 |
| 551 | 1.2.2.1.3.2 | ZnNi Agitation Solution flow and control Proposals received |  | 1d | 2024-07-03 A | 2024-07-03 A | 550 | 100% |  |  |  |  |  | James Fleming [12.5%] | 1h | 1h | No |  | 2024-05-28 | 2024-05-29 | No | No | No | No | Yes | 1 | -1 | -1 | 1 | 2024-07-11 | 2024-07-11 | 44 | 43 |
| 552 | 1.2.2.1.4 | **ZnNi Agitation Solution flow and control Gate 4 approval to continue with Work Start** |  | 171.5d | 2024-07-17 A | 2025-03-13 A |  | 100% |  | 2024-05-21 | 2024-05-21 |  |  |  | 12h | 12h | No | Maintenance System | 2024-05-31 | 2024-07-05 |  |  |  |  |  |  |  |  |  | 2024-08-02 | 2024-11-25 | 63 | 143 |
| 553 | 1.2.2.1.4.1 | ZnNi Agitation Solution flow and control Purchase order raised |  | 1d | 2024-07-17 A | 2024-07-17 A | 550FS+10d | 100% |  | 2024-05-20 | 2024-05-20 |  |  | Josh Avent [12.5%] | 1h | 1h | No | Maintenance System | 2024-05-31 | 2024-05-31 | No | No | No | No | Yes | 1 | -1 | -1 | 1 | 2024-08-02 | 2024-08-02 | 63 | 63 |
| 554 | 1.2.2.1.4.2 | ZnNi Agitation Solution flow and control Vendor RAMS |  | 1d | 2024-11-12 A | 2024-11-12 A | 559SF-5d | 100% |  |  |  |  |  | ASL | 8h | 8h | No |  | 2024-07-05 | 2024-07-05 | No | No | No | No | Yes | 1 | -1 | -1 | 1 | 2024-12-02 | 2024-12-02 | 150 | 150 |
| 555 | 1.2.2.1.4.3 | ZnNi Agitation Solution flow and control Isolation of Line |  | 1d | 2024-11-27 A | 2025-03-13 A |  | 100% |  |  |  |  |  | James Allcoat | 1h | 1h | No |  | 2024-07-05 | 2024-07-05 | No | No | No | No | Yes | 1 | -1 | -1 | 1 | 2024-12-02 | 2024-12-02 | 150 | 150 |
| 556 | 1.2.2.1.4.4 | ZnNi Agitation Solution flow and control Services Available |  | 1d | 2024-11-27 A | 2025-03-13 A |  | 100% |  |  |  |  |  | James Allcoat | 1h | 1h | No |  | 2024-07-05 | 2024-07-05 | No | No | No | No | Yes | 1 | -1 | -1 | 1 | 2024-12-02 | 2024-12-02 | 150 | 150 |
| 557 | 1.2.2.1.4.5 | ZnNi Agitation Solution flow and control Production Downtime Agreed |  | 1d | 2024-11-27 A | 2025-03-06 A |  | 100% |  |  |  |  |  | James Fleming [12.5%] | 1h | 1h | No |  | 2024-07-05 | 2024-07-05 | No | No | No | No | Yes | 1 | -1 | -1 | 1 | 2024-11-25 | 2024-11-25 | 143 | 143 |
| 558 | 1.2.2.1.5 | **ZnNi Agitation Solution flow and control Gate 5 Approval to Handover Work** |  | 111.5d | 2024-12-05 A | 2025-05-09 |  | 99% | 0d |  |  | 299.5d |  |  | 80h | 80h | No |  | 2024-07-12 | 2024-07-25 |  |  |  |  |  |  |  |  |  | 2024-12-03 |  | 144 |  |
| 559 | 1.2.2.1.5.1 | ZnNi Agitation Solution flow and control Flow Meters Mechanically installed |  | 2d | 2024-12-05 A | 2024-12-06 A | 553FS+88d | 100% |  | 2024-09-06 | 2024-09-09 |  |  | ASL | 16h | 16h | No | Maintenance System | 2024-07-12 | 2024-07-16 | No | No | No | No | Yes | 1 | -1 | -1 | 1 | 2024-12-03 | 2024-12-03 | 144 | 140 |
| 560 | 1.2.2.1.5.2 | ZnNi Agitation Solution flow and control Flow meters electrically installed |  | 1d | 2025-03-13 A | 2025-03-14 A | 559FS+69d | 100% |  | 2024-09-06 | 2024-09-09 |  |  | ASL | 8h | 8h | No | Maintenance System | 2024-07-17 | 2024-07-17 | No | No | No | No | Yes | 1 | -1 | -1 | 1 | 2025-03-14 | 2025-03-14 | 240 | 240 |
| 561 | 1.2.2.1.5.3 | ZnNi Agitation Solution flow and control Disolution 1 Drain Values Installed |  | 1d | 2025-03-03 A | 2025-03-03 A | 559FS+60d | 100% |  | 2024-09-10 | 2024-09-10 |  |  | ASL | 8h | 8h | No | Maintenance System | 2024-07-17 | 2024-07-17 | No | No | No | No | Yes | 1 | -1 | -1 | 1 | 2025-03-03 | 2025-03-03 | 229 | 229 |
| 562 | 1.2.2.1.5.4 | ZnNi Agitation Solution flow and control Disolution 2 Drain Values Installed |  | 1d | 2025-03-03 A | 2025-03-03 A | 559FS+60d | 100% |  | 2024-09-10 | 2024-09-10 |  |  | ASL | 8h | 8h | No | Maintenance System | 2024-07-17 | 2024-07-17 | No | No | No | No | Yes | 1 | -1 | -1 | 1 | 2025-03-03 | 2025-03-03 | 229 | 229 |
| 563 | 1.2.2.1.5.5 | ZnNi Agitation Solution flow final approval & sign off | milestone | 0d | 2025-05-09 | 2025-05-09 | 560FS+40d |  |  |  |  | 299.5d | 0.5d | James Fleming |  |  | No |  | 2024-07-17 | 2024-07-17 | No | No | No | No | Yes |  |  |  |  | 2025-03-14 |  | 240 |  |
| 564 | 1.2.2.1.5.6 | ZnNi Agitation Solution flow dwg updates |  | 5d | 2025-04-17 A | 2025-04-24 A | 563SF-2d | 100% |  |  |  |  |  | ASL | 40h | 40h | No |  | 2024-07-18 | 2024-07-25 | No | No | No | No | Yes | 1 |  |  | 1 | 2025-04-17 | 2025-04-23 | 273 | 272 |

| ID | WBS | Task | Type | Duration | Start | Finish | Predecessors | Complete | Remaining | Baseline 1 start | Baseline 1 finish | Total slack | Free slack | Resources | Work | Actual work | Tasks Due this Month | Initial Planned Start | Initial Planned Finish | Tasks Due next Month | Tasks Due this week | Tasks Due next Week | Tasks Due Today | Last Tasks | Number1 | Number2 | Text30 | Task active Day | Field | Actual Task Start | Actual Task Finish | Start Difference | Finish Difference |
| --- | --- | --- | --- | --- | --- | --- | --- | --- | --- | --- | --- | --- | --- | --- | --- | --- | --- | --- | --- | --- | --- | --- | --- | --- | --- | --- | --- | --- | --- | --- | --- | --- | --- |
| 565 | 1.2.2.1.6 | **ZnNi Agitation Flow Monitoring Gate 6 Approval to close** |  | 1.75d | 2025-05-12 | 2025-05-13 |  |  |  |  |  | 299d |  |  | 3h |  | No | 2024-07-29 | 2024-07-30 |  |  |  |  |  |  |  |  |  |  |  |  |  |  |
| 566 | 1.2.2.1.6.1 | ZnNi Agitation Flow Monitoring Deseminate Lessons Learnt |  | 1d | 2025-05-12 | 2025-05-12 | 563 |  |  |  |  | 299d | 0d | James Fleming [25%] | 2h |  | No | 2024-07-29 | 2024-07-29 | No | No | No | No | Yes | -1 | -1 |  |  |  |  |  |  |  |
| 567 | 1.2.2.1.6.2 | ZnNi Agitation Flow Monitoring Close out project |  | 1d | 2025-05-12 | 2025-05-13 | 566 |  |  |  |  | 299.44d |  | James Fleming [12.5%] | 1h |  | No | 2024-07-30 | 2024-07-30 | No | No | No | No | Yes | -1 | -1 |  |  |  |  |  |  |  |
| 568 | 1.2.2.2 | **ZnNi Line Agitation Flow Control** |  | 250.5d | 2024-04-08 A | 2025-03-24 |  | 11% | 223.17d |  |  | 335.69d |  |  | 113h | 2h | No | 2024-07-31 | 2024-08-01 |  |  |  |  |  |  |  |  |  |  |  |  |  |  |
| 569 | 1.2.2.2.1 | **ZnNi Agitation Flow Control Gate 1 approval to proceed with project** |  | 1d | 2024-04-08 | 2024-04-08 |  |  |  |  |  | 565.72d |  |  | 1h |  | No | 2024-07-31 | 2024-07-31 |  |  |  |  |  |  |  |  |  |  |  |  |  |  |
| 570 | 1.2.2.2.1.1 | ZnNi Agitation Flow Control Kick off meeting completed |  | 1d | 2024-04-08 | 2024-04-08 |  |  |  | 2024-04-29 | 2024-04-30 | 565.72d | 0d | James Fleming [12.5%] | 1h |  | No | 2024-08-01 | 2024-08-01 | No | No | No | No | Yes | -1 | -1 | Maintenance System |  |  |  |  |  |  |
| 571 | 1.2.2.2.2 | **Gate 2 - Approval to RFQ** |  | 2d | 2025-03-19 A | 2025-03-21 A |  | 100% |  |  |  |  |  |  | 1h | 1h | No | 2024-08-02 | 2024-08-05 |  |  |  |  |  |  |  |  |  |  |  |  |  |  |
| 572 | 1.2.2.2.2.1 | Supplier selection |  | 1d | 2025-03-19 A | 2025-03-20 A | 570 | 100% |  | 2024-05-01 | 2024-05-21 |  |  |  |  |  | No | 2024-08-02 | 2024-08-02 | No | No | No | No | Yes | -1 | -1 | Maintenance System | 1 | 1 |  |  |  |  |
| 573 | 1.2.2.2.2.2 | Specification agreed & completed |  | 1d | 2025-03-20 A | 2025-03-21 A | 572 | 100% |  | 2024-05-01 | 2024-05-01 |  |  | James Fleming | 1h | 1h | No | 2024-08-05 | 2024-08-05 | No | No | No | No | Yes | -1 | -1 | Maintenance System | 1 | 1 |  |  |  |  |
| 574 | 1.2.2.2.3 | **ZnNi Agitation Flow Control Gate 3 Approval to continue with procurement** |  | 249.5d | 2024-04-09 A | 2025-03-24 |  | 50% | 124.75d | 2024-04-30 | 2024-04-30 | 317.19d |  |  | 2h | 1h | No | 2024-08-06 | 2024-08-22 |  |  |  |  |  |  |  | Maintenance System |  |  |  |  |  |  |
| 575 | 1.2.2.2.3.1 | ZnNi Agitation Flow Control Request for quotation(s) |  | 1d | 2025-03-21 A | 2025-03-24 A | 570 | 100% |  | 2024-05-03 | 2024-05-03 |  |  | James Fleming | 1h | 1h | No | 2024-08-06 | 2024-08-06 | No | No | No | No | Yes | -1 | -1 | Maintenance System | 1 | 1 | 2025-04-03 | 2025-04-03 | 240 | 240 |
| 576 | 1.2.2.2.3.2 | ZnNi Agitation Flow Control Proposals received |  | 1d | 2024-04-09 | 2024-04-09 | 570 |  |  |  |  | 565.72d | 0d | James Fleming [12.5%] | 1h |  | No | 2024-08-21 | 2024-08-21 | No | No | No | No | Yes | -1 | -1 |  |  |  |  |  |  |  |
| 577 | 1.2.2.2.3.3 | ZnNi Agitation Flow Control Select supplier proposal complete | milestone | 0d | 2024-04-09 | 2024-04-09 | 576 |  |  | 2024-05-03 | 2024-05-03 | 565.88d | 0d | James Fleming |  |  | No | 2024-08-22 | 2024-08-22 | No | No | No | No | Yes | -1 | -1 | Maintenance System |  |  |  |  |  |  |
| 578 | 1.2.2.2.4 | **ZnNi Agitation Flow Control Gate 4 approval to continue with Work Start** |  | 5d | 2024-04-09 | 2024-04-16 |  |  |  | 2024-05-21 | 2024-05-21 | 565.88d |  |  | 17h |  | No | 2024-08-23 | 2024-09-30 |  |  |  |  |  |  |  | Maintenance System |  |  |  |  |  |  |
| 579 | 1.2.2.2.4.1 | ZnNi Agitation Flow ControlTrail Plan Generated |  | 1d | 2024-04-09 | 2024-04-10 | 577 |  |  |  |  | 583.41d |  | James Fleming | 4h |  | No | 2024-08-23 | 2024-08-26 | No | No | No | No | Yes | -1 | -1 |  |  |  |  |  |  |  |
| 580 | 1.2.2.2.4.2 | ZnNi Agitation Flow Control Purchase order raised |  | 5d | 2024-04-09 | 2024-04-16 | 577 |  |  | 2024-05-20 | 2024-05-20 | 565.88d | 0d | Josh Avent [2.5%] | 1h |  | No | 2024-08-23 | 2024-08-26 | No | No | No | No | Yes | -1 | -1 | Maintenance System |  |  |  |  |  |  |
| 581 | 1.2.2.2.4.3 | ZnNi Agitation Flow Control Vendor RAMS |  | 1d | 2024-04-09 | 2024-04-10 | 577 |  |  |  |  | 583.38d |  | Koch | 8h |  | No | 2024-09-30 | 2024-09-30 | No | No | No | No | Yes | -1 | -1 |  |  |  |  |  |  |  |
| 582 | 1.2.2.2.4.4 | ZnNi Agitation Flow Control Risk Assessment & Service Requirements |  | 1d | 2024-04-09 | 2024-04-10 | 577 |  |  |  |  | 583.38d |  | James Allcoat [12.5%] | 1h |  | No | 2024-09-30 | 2024-09-30 | No | No | No | No | Yes | -1 | -1 |  |  |  |  |  |  |  |
| 583 | 1.2.2.2.4.5 | ZnNi Agitation Flow Control Isolation of Line |  | 1d | 2024-04-09 | 2024-04-10 | 577 |  |  |  |  | 583.38d |  | James Allcoat | 1h |  | No | 2024-09-30 | 2024-09-30 | No | No | No | No | Yes | -1 | -1 |  |  |  |  |  |  |  |
| 584 | 1.2.2.2.4.6 | ZnNi Agitation Flow Control Services Available |  | 1d | 2024-04-09 | 2024-04-10 | 577 |  |  |  |  | 583.38d |  | James Allcoat | 1h |  | No | 2024-09-30 | 2024-09-30 | No | No | No | No | Yes | -1 | -1 |  |  |  |  |  |  |  |
| 585 | 1.2.2.2.4.7 | ZnNi Agitation Flow Control Production Downtime Agreed |  | 1d | 2024-04-09 | 2024-04-10 | 577 |  |  |  |  | 583.41d |  | James Fleming [12.5%] | 1h |  | No | 2024-09-30 | 2024-09-30 | No | No | No | No | Yes | -1 | -1 |  |  |  |  |  |  |  |
| 586 | 1.2.2.2.5 | **ZnNi Agitation Flow Control Gate 5 Approval to Handover Work** |  | 3d | 2024-04-30 | 2024-05-03 |  |  |  |  |  | 565.88d |  |  | 76h |  | No | 2024-10-07 | 2024-10-16 |  |  |  |  |  |  |  |  |  |  |  |  |  |  |
| 587 | 1.2.2.2.5.1 | ZnNi Agitation Flow Control Flow meter control lines installed |  | 3d | 2024-04-30 | 2024-05-03 | 580FS+10d |  |  | 2024-09-06 | 2024-09-09 | 566.38d |  | Koch | 24h |  | No | 2024-10-07 | 2024-10-08 | No | No | No | No | Yes | -1 | -1 | Maintenance System |  |  |  |  |  |  |
| 588 | 1.2.2.2.5.2 | ZnNi Agitation Flow Control PLC programming updated for flow control |  | 2d | 2024-04-30 | 2024-05-02 | 580FS+10d |  |  | 2024-09-06 | 2024-09-09 | 567.38d |  | Koch | 16h |  | No | 2024-10-07 | 2024-10-08 | No | No | No | No | Yes | -1 | -1 | Maintenance System |  |  |  |  |  |  |
| 589 | 1.2.2.2.5.3 | ZnNi Agitation Flow Control PLC programming for flow control recording |  | 3d | 2024-04-30 | 2024-05-03 | 580FS+10d |  |  | 2024-09-10 | 2024-09-10 | 566.38d |  | Koch | 24h |  | No | 2024-10-07 | 2024-10-08 | No | No | No | No | Yes | -1 | -1 | Maintenance System |  |  |  |  |  |  |
| 590 | 1.2.2.2.5.4 | ZnNi Agitation Flow Control PLC programming for flow control reporting |  | 1d | 2024-04-30 | 2024-05-01 | 580FS+10d |  |  | 2024-09-10 | 2024-09-10 | 565.88d | 0d | Koch | 8h |  | No | 2024-10-07 | 2024-10-08 | No | No | No | No | Yes | -1 | -1 | Maintenance System |  |  |  |  |  |  |
| 591 | 1.2.2.2.5.5 | ZnNi Agitation Flow Control Installation complete | milestone | 0d | 2024-05-01 | 2024-05-01 | 590 |  |  |  |  | 568.38d |  | James Fleming |  |  | No | 2025-04-08 | 2025-04-08 | No | No | No | No | Yes |  |  |  |  |  |  |  |  |  |
| 592 | 1.2.2.2.5.6 | ZnNi Agitation Flow Control Drawings updated |  | 0.5d | 2024-05-01 | 2024-05-02 | 590 |  |  |  |  | 565.88d | 0d | Koch | 4h |  | No | 2024-10-09 | 2024-10-16 | No | No | No | No | Yes | -1 | -1 |  |  |  |  |  |  |  |

| ID | WBS | Task | Duration | Start | Finish | Predecessors | Complete | Baseline 1 start | Baseline 1 finish | Total slack | Free slack | Constraint | Resources | Work | Actual work | Tasks Due this Month | Initial Planned Start | Initial Planned Finish | Tasks Due next Month | Tasks Due this week | Tasks Due next Week | Tasks Due Today | Last Tasks | Number1 | Number2 | Text30 | Actual Task Start | Actual Task Finish | Start Difference | Finish Difference | Text7 | Task active Day | Field |
| --- | --- | --- | --- | --- | --- | --- | --- | --- | --- | --- | --- | --- | --- | --- | --- | --- | --- | --- | --- | --- | --- | --- | --- | --- | --- | --- | --- | --- | --- | --- | --- | --- | --- |
| 593 | 1.2.2.2.6 | **ZnNi Agitation Flow Control Gate 6 Approval to close** | 2d | 2024-05-02 | 2024-05-06 |  |  |  |  | 565.88d |  |  |  | 16h |  | No | 2024-10-17 | 2024-10-18 |  |  |  |  |  |  |  |  |  |  |  |  |  |  |  |
| 594 | 1.2.2.2.6.1 | ZnNi Agitation Flow Control Deseminate lessons learnt | 1d | 2024-05-02 | 2024-05-03 | 592 |  |  |  | 565.88d | 0d |  | Koch | 8h |  | No | 2024-10-17 | 2024-10-17 | No | No | No | No | Yes | -1 | -1 |  |  |  |  |  |  |  |  |
| 595 | 1.2.2.2.6.2 | ZnNi Agitation Flow Control Close out project | 1d | 2024-05-03 | 2024-05-06 | 594 |  |  |  | 565.88d |  |  | Koch | 8h |  | No | 2024-10-18 | 2024-10-18 | No | No | No | No | Yes | -1 | -1 |  |  |  |  |  |  |  |  |
| 596 | 1.2.3 | **Safety Interlock Access Point installed** | 150.5d | 2024-08-22 A | 2025-03-20 A |  | 100% | 2024-08-21 | 2024-09-24 |  |  |  |  | 41.12h | 41.12h | No | 2024-08-22 | 2025-03-20 |  |  |  |  |  |  |  | Maintenance System | 2024-08-22 |  |  |  |  |  |  |
| 597 | 1.2.3.1 | **Safety Interlock Access Point Gate 1 - Approval to proceed with project** | 1d | 2024-08-22 A | 2024-08-22 A |  | 100% |  |  |  |  |  |  | 3h | 3h | No | 2024-08-22 | 2024-08-22 |  |  |  |  |  |  |  |  | 2024-08-21 | 2024-09-24 | -1 | 33 |  |  |  |
| 598 | 1.2.3.1.1 | **Safety Interlock Access Point Kick off meeting completed** | 0.25d | 2024-08-22 A | 2024-08-22 A |  | 100% | 2024-08-22 | 2024-08-23 |  |  |  |  | 2h | 2h | No | 2024-08-22 | 2024-08-22 |  |  |  |  |  |  |  | Maintenance System | 2024-08-21 | 2024-09-24 |  |  |  |  |  |
| 599 | 1.2.3.1.1.1 | Safety Interlock Access Point Requirements identified & agreed | 0.25d | 2024-08-22 A | 2024-08-22 A |  | 100% | 2024-08-22 | 2024-08-22 |  |  | start no earlier than 2024-04-04 | James Fleming | 2h | 2h | No | 2024-08-22 | 2024-08-22 | No | No | No | No | Yes | -1 | -1 | Maintenance System | 2024-08-21 | 2024-08-21 | -1 | -1 | -1 | 1 | 1 |
| 600 | 1.2.3.1.2 | Safety Interlock Access Point Outline PID | 1d | 2024-08-22 A | 2024-08-22 A | 599 | 100% |  |  |  |  |  | James Fleming | 1h | 1h | No | 2024-08-22 | 2024-08-22 | No | No | No | No | Yes | -1 | -1 |  | 2024-09-24 | 2024-09-24 | 33 | 33 |  | 1 | 1 |
| 601 | 1.2.3.2 | **Safety Interlock Access Point Gate 2 - Approval to RFQ** | 7.12d | 2024-08-22 A | 2024-09-02 A |  | 100% |  |  |  |  |  |  | 7h | 7h | No | 2024-08-22 | 2024-09-02 |  |  |  |  |  |  |  |  | 2024-07-10 | 2025-09-19 | -43 | 382 |  |  |  |
| 602 | 1.2.3.2.1 | Safety Interlock Access Point Vendor(s) identified & agreed (Electrical & Mechanical) | 0.12d | 2024-08-22 A | 2024-08-22 A | 600 | 100% | 2024-08-22 | 2024-08-23 |  |  |  | James Fleming | 1h | 1h | No | 2024-08-22 | 2024-08-22 | No | No | No | No | Yes | -1 | -1 | Maintenance System | 2024-08-21 | 2024-08-21 | -1 | -1 | -1 | 1 | 1 |
| 603 | 1.2.3.2.2 | Safety Interlock Access Point SOW for Safety Access point Signed off | 0.12d | 2024-08-22 A | 2024-08-22 A | 602 | 100% | 2024-08-22 | 2024-08-23 |  |  |  | James Fleming | 1h | 1h | No | 2024-08-22 | 2024-08-22 | No | No | No | No | Yes | -1 | -1 | Maintenance System | 2024-08-21 | 2024-08-21 | -1 | -1 | -1 | 1 | 1 |
| 604 | 1.2.3.2.3 | Safety Interlock Access Point Vendor(s) Kick off meeting | 0.12d | 2024-08-22 A | 2024-08-22 A | 603 | 100% | 2024-08-22 | 2024-08-26 |  |  |  | James Fleming | 1h | 1h | No | 2024-08-22 | 2024-08-22 | No | No | No | No | Yes | -1 | -1 | Maintenance System | 2024-08-21 | 2024-08-21 | -1 | -1 | -1 | 1 | 1 |
| 605 | 1.2.3.2.4 | Safety Interlock Access Point Access Point Interloc Request for quotation | 1d | 2024-08-28 A | 2024-08-28 A | 604 | 100% | 2024-04-10 | 2024-04-10 |  |  |  | James Fleming | 1h | 1h | No | 2024-08-28 | 2024-08-28 | No | No | No | No | Yes | -1 | -1 | Maintenance System | 2024-07-10 | 2024-07-10 | -49 | -49 |  | 1 | 1 |
| 606 | 1.2.3.2.5 | Safety Interlock Access Point Access Point Sliding Gate Request for quotation | 0.12d | 2024-08-29 A | 2024-08-29 A | 605 | 100% | 2024-04-10 | 2024-04-10 |  |  |  | James Fleming | 1h | 1h | No | 2024-08-29 | 2024-08-29 | No | No | No | No | Yes | -1 | -1 | Maintenance System | 2024-09-19 | 2024-09-19 | 21 | 21 |  | 1 | 1 |
| 607 | 1.2.3.2.6 | Safety Interlock Access Point Access Point Program Logic request for quote | 0.12d | 2024-08-30 A | 2024-08-30 A | 606 | 100% |  |  |  |  |  | James Fleming | 1h | 1h | No | 2024-08-30 | 2024-08-30 | No | No | No | No | Yes | -1 | -1 |  | 2024-07-10 | 2024-07-10 | -51 | -51 |  | 1 | 1 |
| 608 | 1.2.3.2.7 | Safety Interlock Access Point Far side access point logic request for quotation | 0.12d | 2024-09-02 A | 2024-09-02 A | 607 | 100% |  |  |  |  |  | James Fleming | 1h | 1h | No | 2024-09-02 | 2024-09-02 | No | No | No | No | Yes | -1 | -1 |  | 2024-07-10 | 2024-07-10 | -54 | -54 |  | 1 | 1 |
| 609 | 1.2.3.3 | **Safety Interlock Access Point Gate 3 -Approval to continue with Procurement** | 28d | 2024-09-03 A | 2024-10-10 A |  | 100% | 2024-08-22 | 2024-09-03 |  |  |  |  | 3h | 3h | No | 2024-09-03 | 2024-10-11 |  |  |  |  |  |  |  | Maintenance System | 2024-11-14 | 2024-11-19 | 72 | 39 |  |  |  |
| 610 | 1.2.3.3.1 | Safety Interlock Access Point Proposals Requested | 1d | 2024-09-03 A | 2024-09-03 A | 608 | 100% |  |  |  |  |  | James Fleming [12.5%] | 1h | 1h | No | 2024-09-03 | 2024-09-03 | No | No | No | No | Yes | -1 | -1 |  | 2024-11-14 | 2024-11-14 | 72 | 72 |  | 1 | 1 |
| 611 | 1.2.3.3.2 | Safety Interlock Access Point Proposals received | 1d | 2024-09-25 A | 2024-09-25 A | 610FS+15d | 100% |  |  |  |  |  | James Fleming [12.5%] | 1h | 1h | No | 2024-09-25 | 2024-09-25 | No | No | No | No | Yes | -1 | -1 |  | 2024-11-18 | 2024-11-18 | 54 | 54 |  | 1 | 1 |
| 612 | 1.2.3.3.3 | Safety Interlock Access Point Proposals reviewed | 1d | 2024-10-10 A | 2024-10-10 A | 611FS+10d | 100% |  |  |  |  |  | James Fleming [12.5%] | 1h | 1h | No | 2024-09-26 | 2024-09-26 | No | No | No | No | Yes | -1 | -1 |  | 2024-11-19 | 2024-11-19 | 54 | 54 |  | 1 | 1 |
| 613 | 1.2.3.4 | **Safety Interlock Access Point Gate 4 - Safety Access Point area good for work start** | 7d | 2024-10-16 A | 2024-10-24 A |  | 100% | 2024-09-12 | 2024-09-16 |  |  |  |  | 6.12h | 6.12h | No | 2024-09-27 | 2024-10-28 |  |  |  |  |  |  |  | Maintenance System | 2024-10-10 | 2024-11-28 | 13 | 31 |  |  |  |
| 614 | 1.2.3.4.1 | Safety Interlock Access Point Access Point Interloc Purchase order raised | 1d | 2024-10-21 A | 2024-10-21 A |  | 100% | 2024-08-23 | 2024-08-23 |  |  |  | Josh Avent [12.5%] | 1h | 1h | No | 2024-09-27 | 2024-09-27 | No | No | No | No | Yes | -1 | -1 | Maintenance System | 2024-11-28 | 2024-11-28 | 62 | 62 |  | 1 | 1 |
| 615 | 1.2.3.4.2 | Safety Interlock Access Point Mechanical Gate Purchase Order raised | 1d | 2024-10-16 A | 2024-10-16 A |  | 100% |  |  |  |  |  | Josh Avent [13%] | 1.04h | 1.04h | No | 2024-09-27 | 2024-09-27 | No | No | No | No | Yes | -1 | -1 |  | 2024-10-15 | 2024-10-15 | 18 | 18 |  | 1 | 1 |
| 616 | 1.2.3.4.3 | Safety Interlock Access Point Avanta to be added as new supplier | 0.25d | 2024-10-17 A | 2024-10-17 A |  | 100% |  |  |  |  |  | James Fleming [50%] | 1h | 1h | No | 2024-09-27 | 2024-09-27 | No | No | No | No | Yes | -1 | -1 |  | 2024-10-10 | 2024-10-10 | 13 | 13 |  | 1 | 1 |
| 617 | 1.2.3.4.4 | Safety Interlock Access Point Access point program logic purchase order raised | 1d | 2024-10-18 A | 2024-10-18 A |  | 100% |  |  |  |  | start no earlier than 2024-09-13 | Josh Avent [13%] | 1.04h | 1.04h | No | 2024-09-27 | 2024-09-27 | No | No | No | No | Yes | -1 | -1 |  | 2024-11-28 | 2024-11-28 | 62 | 62 |  | 1 | 1 |
| 618 | 1.2.3.4.5 | Safety Interlock Access Point Far side access point far side logic purchase order raised | 1d | 2024-10-21 A | 2024-10-21 A |  | 100% |  |  |  |  | start no earlier than 2024-09-13 | Josh Avent [13%] | 1.04h | 1.04h | No | 2024-09-27 | 2024-09-27 | No | No | No | No | Yes | -1 | -1 |  | 2024-11-28 | 2024-11-28 | 62 | 62 |  | 1 | 1 |
| 619 | 1.2.3.4.6 | Safety Interlock Access Point Avanta RAMS | 1d | 2024-10-22 A | 2024-10-22 A | 622SF-5d | 100% |  |  |  |  |  |  |  |  | No | 2024-10-22 | 2024-10-22 | No | No | No | No | Yes | -1 | -1 |  | 2024-11-25 | 2024-11-25 | 34 | 34 |  | 1 | 1 |
| 620 | 1.2.3.4.7 | Safety Interlock Access Point Line Isolated | 1d | 2024-10-24 A | 2024-10-24 A | 622SF-5d | 100% |  |  |  |  |  | James Allcoat [12.5%] | 1h | 1h | No | 2024-10-24 | 2024-10-24 | No | No | No | No | Yes | -1 | -1 |  | 2024-10-24 | 2024-10-24 |  |  |  | 1 | 1 |

| ID | WBS | Task | Type | Duration | Start | Finish | Predecessors | Complete | Remaining | Baseline 1 start | Baseline 1 finish | Total slack | Resources | Work | Actual work | Tasks Due this Month | Actual Task Start | Actual Task Finish | Initial Planned Start | Initial Planned Finish | Finish Difference | Tasks Due next Month | Tasks Due this week | Tasks Due next Week | Tasks Due Today | Last Tasks | Text30 | Task active Day | Number1 | Number2 | Field | Start Difference |
| --- | --- | --- | --- | --- | --- | --- | --- | --- | --- | --- | --- | --- | --- | --- | --- | --- | --- | --- | --- | --- | --- | --- | --- | --- | --- | --- | --- | --- | --- | --- | --- | --- |
| 621 | 1.2.3.5 | **Safety Interlock Access Point Gate 5 - Approval to Handover to SF** |  | 77.69d | 2024-11-29 A | 2025-03-18 A |  | 100% |  |  |  |  |  | 19h | 19h | No | 2024-11-27 | 2025-04-15 | 2024-11-27 | 2024-12-06 | 133 |  |  |  |  |  |  |  |  |  |  |  |
| 622 | 1.2.3.5.1 | Safety Interlock Access Point Line side near Installation of Gate |  | 3d | 2024-11-29 A | 2024-12-03 A | 616FS+40d | 100% |  | 2024-09-12 | 2024-09-13 |  |  |  |  | No | 2024-11-27 | 2025-04-15 | 2024-11-27 | 2024-12-03 | 133 | No | No | No | No | Yes | Maintenance System | 1 | -1 | -1 | 1 |  |
| 623 | 1.2.3.5.2 | Safety Interlock Access Point ZnNi Line Safety Interlock Access Point Line side near Installation of Gate interlocs |  | 1d | 2025-03-13 A | 2025-03-14 A | 616FS+105d | 100% |  | 2024-09-12 | 2024-09-13 |  | Puretech [25%] | 2h | 2h | No | 2024-11-27 | 2024-11-27 | 2024-11-25 | 2024-11-25 | 2 | No | No | No | No | Yes | Maintenance System | 1 | -1 | -1 | 1 | 2 |
| 624 | 1.2.3.5.3 | Safety Interlock Access Point Line side near Gate Logic update on PLC |  | 1d | 2024-11-29 A | 2024-11-29 A | 616FS+40d | 100% |  | 2024-09-12 | 2024-09-13 |  | ASL | 4h | 4h | No | 2024-11-27 | 2024-11-27 | 2024-11-25 | 2024-11-25 | 2 | No | No | No | No | Yes | Maintenance System | 1 | -1 | -1 | 1 | 2 |
| 625 | 1.2.3.5.4 | Safety Interlock Access Point ZnNi Line Safety Interlock Access Point Line side near Gate Logic update on PLC (third lock) |  | 1d | 2025-03-13 A | 2025-03-14 A | 623SS | 100% |  |  |  |  | Puretech [25%] | 2h | 2h | No | 2024-11-27 | 2024-11-27 | 2024-11-25 | 2024-11-25 | 2 | No | No | No | No | Yes |  | 1 | -1 | -1 | 1 | 2 |
| 626 | 1.2.3.5.5 | Safety Interlock Access Point Line side far Gate Logic updated on PLC |  | 1d | 2024-12-13 A | 2024-12-13 A | 616FS+40d | 100% |  | 2024-09-12 | 2024-09-13 |  | ASL [50%] | 4h | 4h | No | 2024-11-27 | 2024-11-27 | 2024-11-25 | 2024-11-25 | 2 | No | No | No | No | Yes | Maintenance System | 1 | -1 | -1 | 1 | 2 |
| 627 | 1.2.3.5.6 | Safety Interlock Access Point Validation and sign off on work |  | 1d | 2025-03-14 A | 2025-03-17 A | 623 | 100% |  |  |  |  | James Fleming [25%] | 2h | 2h | No | 2025-03-14 | 2025-04-15 | 2024-11-28 | 2024-11-28 | 138 | No | No | No | No | Yes |  | 1 | -1 | -1 | 1 | 106 |
| 628 | 1.2.3.5.7 | Safety Interlock Access Point Drawing updates |  | 1d | 2025-03-17 A | 2025-03-18 A | 627 | 100% |  |  |  |  | ASL [62.5%] | 5h | 5h | No | 2025-02-11 | 2025-02-18 | 2024-11-29 | 2024-12-06 | 74 | No | No | No | No | Yes |  | 1 | -1 | -1 | 1 | 74 |
| 629 | 1.2.3.6 | **Safety Interlock Access Point Gate 6 - Approval to close project** |  | 1.81d | 2025-03-18 A | 2025-03-20 A |  | 100% |  | 2024-09-17 | 2024-09-17 |  |  | 3h | 3h | No |  |  | 2024-12-09 | 2024-12-11 |  |  |  |  |  |  | Maintenance System |  |  |  |  |  |
| 630 | 1.2.3.6.1 | Safety Interlock Access Point Lessons Learnt deseminated |  | 1d | 2025-03-18 A | 2025-03-19 A | 628 | 100% |  |  |  |  | James Fleming [25%] | 2h | 2h | No |  |  | 2024-12-09 | 2024-12-09 |  | No | No | No | No | Yes |  | 1 | -1 | -1 | 1 |  |
| 631 | 1.2.3.6.2 | Safety Interlock Access Point documentation closed |  | 1d | 2025-03-19 A | 2025-03-20 A | 630 | 100% |  |  |  |  | James Fleming [12.5%] | 1h | 1h | No |  |  | 2024-12-11 | 2024-12-11 |  | No | No | No | No | Yes |  | 1 | -1 | -1 | 1 |  |
| 632 | 1.2.4 | **ZnNi Line Kardex Optimization** |  | 174.54d | 2025-03-20 A | 2025-11-20 |  | 11% | 155.29d | 2024-07-16 | 2024-08-15 | 163.15d |  | 404h | 7.2h | No | 2024-06-18 | 2024-07-01 | 2024-06-18 | 2024-07-01 |  |  |  |  |  |  | Documentation & Training |  |  |  |  |  |
| 633 | 1.2.4.1 | **ZnNi Line Kardex Optimization Assessment Report** |  | 150.12d | 2025-03-20 A | 2025-10-16 |  | 67% | 50.15d |  |  | 187.56d |  | 10h | 6h | No | 2024-06-18 | 2024-07-01 | 2024-06-18 | 2024-07-01 |  | No | No | No | No | Yes |  |  |  |  |  |  |
| 634 | 1.2.4.1.1 | ZnNi Line Kardex Optimization Initial Assessment |  | 1.97d | 2025-03-20 A | 2025-03-24 A | 631 | 100% |  | 2024-07-17 | 2024-07-17 |  | James Fleming | 1h | 1h | No | 2024-06-18 | 2024-06-20 | 2024-06-18 | 2024-06-20 |  | No | No | No | No | Yes | Documentation & Training | 1 |  |  | 1 |  |
| 635 | 1.2.4.1.2 | ZnNi Line Kardex Optimization Evaluate the current state of the Kardex machine and tooling. |  | 2d | 2025-03-24 A | 2025-03-26 A | 634 | 100% |  |  |  |  | James Fleming [6.25%] | 1h | 1h | No | 2024-06-21 | 2024-06-25 | 2024-06-21 | 2024-06-25 |  | No | No | No | No | Yes |  | 1 |  |  | 1 |  |
| 636 | 1.2.4.1.3 | ZnNi Line Kardex Optimization Identify all items that need shadow boards. |  | 2d | 2025-03-26 A | 2025-03-28 A | 635 | 100% |  |  |  |  | James Fleming [6.25%] | 1h | 1h | No | 2024-06-26 | 2024-06-28 | 2024-06-26 | 2024-06-28 |  | No | No | No | No | Yes |  | 1 |  |  | 1 |  |
| 637 | 1.2.4.1.4 | ZnNi Line Kardex Optimization Initial Assessment Complete | milestone | 0d | 2025-05-22 A | 2025-05-22 A | 636FS+40d | 100% |  |  |  |  | James Fleming |  |  | No | 2024-04-29 | 2024-04-29 | 2024-07-01 | 2024-07-01 | -63 | No | No | No | No | Yes |  | 1 |  |  | 1 | -63 |
| 638 | 1.2.4.1.5 | ZnNi Line Kardex Optimization Vedor Identification confirmed |  | 1d | 2025-05-23 A | 2025-05-26 A | 637 | 100% |  |  |  |  | James Fleming [12.5%] | 1h | 1h | No | 2025-04-29 | 2025-04-29 | 2024-07-01 | 2024-07-01 | 302 | No | No | No | No | Yes |  | 1 |  |  | 1 | 302 |
| 639 | 1.2.4.1.6 | **ZnNi Line Kardex Optimization Gordano Proposal Agreed** |  | 66.25d | 2025-07-16 A | 2025-10-16 |  | 34% | 43.41d |  |  | 187.56d |  | 6h | 2h | No |  |  | 2024-07-01 |  |  | No | No | No | No | Yes |  |  |  |  |  |  |
| 640 | 1.2.4.1.6.1 | **ZnNi Line Kardex Optimization Initial CAD files organized** |  | 66.25d | 2025-07-16 A | 2025-10-16 |  | 34% | 43.41d |  |  | 187.56d |  | 6h | 2h | No |  |  | 2024-07-01 | 2024-07-01 |  | No | No | No | No | Yes |  | 1 |  |  | 1 |  |
| 641 | 1.2.4.1.6.1.1 | **ZnNi Line Kardex Optimization A330 Axels** |  | 1.25d | 2025-07-16 A | 2025-07-17 A |  | 100% |  |  |  |  |  | 1h | 1h | Yes |  |  | 2024-07-01 | 2024-07-01 |  | No | Yes | No | No | No |  |  |  |  |  |  |
| 642 | 1.2.4.1.6.1.1.1 | ZnNi Line Kardex Optimization A330 Axel Dwg check for completeness |  | 1.25d | 2025-07-16 A | 2025-07-17 A | 638FS+37d | 100% |  |  |  |  | Sam Bates [10%] | 1h | 1h | Yes |  |  | 2024-07-01 | 2024-07-01 |  | No | No | No | No | Yes |  | 1 |  |  | 1 |  |
| 643 | 1.2.4.1.6.1.2 | **ZnNi Line Kardex Optimization Lower Cardan Pins** |  | 1.25d | 2025-07-16 A | 2025-07-17 A |  | 100% |  |  |  |  |  | 1h | 1h | Yes |  |  | 2024-07-01 | 2024-07-01 |  | No | Yes | No | No | No |  |  |  |  |  |  |
| 644 | 1.2.4.1.6.1.2.1 | ZnNi Line Kardex Optimization Lower Cardan Pins Dwg check for completeness |  | 1.25d | 2025-07-16 A | 2025-07-17 A | 638FS+37d | 100% |  |  |  |  | Matt Wetton [10%] | 1h | 1h | Yes |  |  | 2024-07-01 | 2024-07-01 |  | No | No | No | No | Yes |  | 1 |  |  | 1 |  |

Notes:
- 634: JF 070824 I will ask Dean Wilkins if he can shadow the trainer on his return from anual leave in wk 33. Check with Scott what dates the Grad starts, if its not to late in the year the Grad could potentially shadow and document.

| ID | WBS | Task | Type | Duration | Start | Finish | Predecessors | Complete | Remaining | Total slack | Free slack | Constraint | Resources | Work | Actual work | Tasks Due this Month | Tasks Due next Month | Tasks Due this week | Tasks Due next Week | Tasks Due Today | Last Tasks | Initial Planned Start | Initial Planned Finish | Actual Task Start | Start Difference | Task active Day | Field |
| --- | --- | --- | --- | --- | --- | --- | --- | --- | --- | --- | --- | --- | --- | --- | --- | --- | --- | --- | --- | --- | --- | --- | --- | --- | --- | --- | --- |
| 645 | 1.2.4.1.6.1.3 | **ZnNi Line Kardex Optimization Upper Cardan Pins** |  | 1.25d | 2025-07-23 | 2025-07-24 |  |  |  | 247.56d |  |  |  | 1h |  | Yes | No | No | Yes | No | No | 2024-07-08 | 2024-07-08 |  |  |  |  |
| 646 | 1.2.4.1.6.1.3.1 | ZnNi Line Kardex Optimization Upper Cardan Pins Dwg check for completeness |  | 1.25d | 2025-07-23 | 2025-07-24 | 638FS+42d |  |  | 247.56d |  |  | Matt Wetton [10%] | 1h |  | Yes | No | Yes | No | No | No | 2024-07-08 | 2024-07-08 |  |  |  |  |
| 647 | 1.2.4.1.6.1.4 | **ZnNi Line Kardex Optimization Retraction Links** |  | 1.25d | 2025-10-15 | 2025-10-16 |  |  |  | 187.56d |  |  |  | 1h |  | No | No | No | No | No | No | 2024-10-15 | 2024-10-15 |  |  |  |  |
| 648 | 1.2.4.1.6.1.4.1 | ZnNi Line Kardex Optimization Retraction Links Dwg check for completeness |  | 1.25d | 2025-10-15 | 2025-10-16 | 638FS+102d |  |  | 187.56d |  |  | Sam Bates [10%] | 1h |  | No | No | No | No | No | No | 2024-10-15 | 2024-10-15 |  |  |  |  |
| 649 | 1.2.4.1.6.1.5 | **ZnNi Line Kardex Optimization Shackles** |  | 1.25d | 2025-10-15 | 2025-10-16 |  |  |  | 187.56d |  |  |  | 1h |  | No | No | No | No | No | No | 2024-10-15 | 2024-10-15 |  |  |  |  |
| 650 | 1.2.4.1.6.1.5.1 | ZnNi Line Kardex Optimization Shackles Dwg check for completeness |  | 1.25d | 2025-10-15 | 2025-10-16 | 638FS+102d |  |  | 187.56d |  |  | Sam Bates [10%] | 1h |  | No | No | No | No | No | No | 2024-10-15 | 2024-10-15 |  |  |  |  |
| 651 | 1.2.4.1.6.1.6 | ZnNi Line Kardex Optimization Part Placeholder |  | 1d | 2025-10-15 | 2025-10-16 | 638FS+102d |  |  | 187.81d |  |  | Sam Bates [12.5%] | 1h |  | No | No | No | No | No | No | 2024-10-15 | 2024-10-15 |  |  |  |  |
| 652 | 1.2.4.1.6.2 | ZnNi Line Kardex Optimization Initial CAD files sent to Gordano | milestone | 0d | 2025-07-17 | 2025-07-17 | 643 |  |  | 0d |  |  | James Fleming |  |  | Yes | No | No | No | No | Yes | 2024-10-17 | 2024-10-17 |  |  |  |  |
| 653 | 1.2.4.1.6.3 | ZnNi Line Kardex Optimization Gordano Proposal Received | milestone | 0d | 2025-07-31 | 2025-07-31 | 652FS+10d |  |  | 0d |  |  | James Fleming |  |  | Yes | No | No | Yes | No | No | 2024-10-31 | 2024-10-31 |  |  |  |  |
| 654 | 1.2.4.2 | **ZnNi Line Kardex Optimization Design & Planning** |  | 95.35d | 2025-05-15 A | 2025-09-25 |  |  | 94.94d | 164.68d |  |  |  | 204h | 1.2h | No | No | No | No | No | Yes | 2024-07-02 | 2024-10-10 | 2025-01-31 | 213 |  |  |
| 655 | 1.2.4.2.1 | **ZnNi Line Kardex Optimization CAD Models & Layout Plan** |  | 95.35d | 2025-05-15 A | 2025-09-25 |  |  | 94.94d | 164.68d |  |  |  | 204h | 1.2h | No | No | No | No | No | Yes | 2024-07-02 | 2024-10-10 | 2025-01-31 |  |  |  |
| 656 | 1.2.4.2.1.1 | ZnNi Line Kardex Available Tooling Completeness check |  | 5d | 2025-05-15 A | 2025-08-14 | 653FS+5d | 3% | 4.85d | 164.68d | 0d | finish no earlier than 2025-05-22 | Gordano | 40h | 1.2h | No | Yes | No | No | No | No | 2024-07-16 | 2024-07-23 |  |  | 1 | 1 |
| 657 | 1.2.4.2.1.2 | ZnNi Line Kardex Available Tooling Review |  | 5d | 2025-08-14 | 2025-08-21 | 656 |  |  | 164.68d | 0d |  | Gordano | 40h |  | No | Yes | No | No | No | No | 2024-07-30 | 2024-08-06 |  |  |  |  |
| 658 | 1.2.4.2.1.3 | ZnNi Line Kardex Available Tooling layout and capacity confirmed |  | 5d | 2025-08-21 | 2025-08-28 | 657 |  |  | 164.68d | 0d |  | Gordano | 40h |  | No | Yes | No | No | No | No | 2024-08-13 | 2024-08-20 |  |  |  |  |
| 659 | 1.2.4.2.1.4 | ZnNi Line Kardex Available Tooling Completeness check complete | milestone | 0d | 2025-08-28 | 2025-08-28 | 658 |  |  | 164.68d | 0d |  | Gordano |  |  | No | Yes | No | No | No | No | 2024-08-21 | 2024-08-21 |  |  |  |  |
| 660 | 1.2.4.2.1.5 | ZnNi Line Kardex Optimization Create CAD models for each piece of tooling. |  | 10d | 2025-08-28 | 2025-09-11 | 659 |  |  | 164.68d | 0d |  | Gordano | 80h |  | No | No | No | No | No | No | 2024-08-21 | 2024-09-11 |  |  |  |  |
| 661 | 1.2.4.2.1.6 | ZnNi Line Kardex Optimization Plan the layout of tooling on specific shelves |  | 10d | 2025-09-11 | 2025-09-25 | 660 |  |  | 164.68d | 0d |  | James Fleming [5%] | 4h |  | No | No | No | No | No | No | 2024-09-25 | 2024-10-09 |  |  |  |  |
| 662 | 1.2.4.2.2 | ZnNi Line Kardex Optimization Design & Planning Finalized | milestone | 0d | 2025-09-25 | 2025-09-25 | 661 |  |  | 164.68d | 0d |  | James Fleming |  |  | No | No | No | No | No | No | 2024-10-10 | 2024-10-10 |  |  |  |  |
| 663 | 1.2.4.3 | **ZnNi Line Kardex Optimization Shadow Board Implementation** |  | 24.94d | 2025-09-25 | 2025-10-30 |  |  |  | 164.68d |  |  |  | 164h |  | No | No | No | No | No | Yes | 2024-10-11 | 2024-11-19 |  |  |  |  |
| 664 | 1.2.4.3.1 | **ZnNi Line Kardex Optimization Installed Shadow Boards** |  | 24.94d | 2025-09-25 | 2025-10-30 |  |  |  | 164.68d | 0d |  |  | 164h |  | No | No | No | No | No | Yes | 2024-10-11 | 2024-10-11 |  |  |  |  |
| 665 | 1.2.4.3.1.1 | ZnNi Line Kardex Optimization Cut and install foam for shadow boards based on CAD models. |  | 20d | 2025-09-25 | 2025-10-23 | 662 |  |  | 164.68d | 0d |  | Gordano | 160h |  | No | No | No | No | No | No | 2024-10-11 | 2024-11-08 |  |  |  |  |
| 666 | 1.2.4.3.1.2 | ZnNi Line Kardex Optimization Assign each tool a specific location. |  | 5d | 2025-10-23 | 2025-10-30 | 665 |  |  | 164.68d |  |  | James Fleming [10%] | 4h |  | No | No | No | No | No | No | 2024-11-11 | 2024-11-18 |  |  |  |  |
| 667 | 1.2.4.3.2 | ZnNi Line Kardex Optimization Shadow Boards Installed | milestone | 0d | 2025-10-30 | 2025-10-30 | 664 |  |  | 164.71d | 0d |  | James Fleming |  |  | No | No | No | No | No | No | 2024-11-19 | 2024-11-19 |  |  |  |  |
| 668 | 1.2.4.4 | **ZnNi Line Kardex Optimization IT System Integration** |  | 3.16d | 2025-10-30 | 2025-11-04 |  |  |  | 164.68d |  |  |  | 6h |  | No | No | No | No | No | Yes | 2024-11-20 | 2024-11-26 |  |  |  |  |
| 669 | 1.2.4.4.1 | **ZnNi Line Kardex Optimization Integrated IT System** |  | 3.16d | 2025-10-30 | 2025-11-04 |  |  |  | 164.68d | 0d |  |  | 6h |  | No | No | No | No | No | Yes | 2024-11-20 | 2024-11-20 |  |  |  |  |
| 670 | 1.2.4.4.1.1 | ZnNi Line Kardex Optimization Ensure the IT system can track tooling locations and log faults. |  | 1d | 2025-10-30 | 2025-10-31 | 667 |  |  | 164.71d | 0d |  | James Fleming [25%] | 2h |  | No | No | No | No | No | No | 2024-11-20 | 2024-11-20 |  |  |  |  |
| 671 | 1.2.4.4.1.2 | ZnNi Line Kardex Optimization Set up real-time notifications for the process engineer. |  | 2d | 2025-10-31 | 2025-11-04 | 670 |  |  | 164.68d |  |  | James Fleming [25%] | 4h |  | No | No | No | No | No | No | 2024-11-21 | 2024-11-25 |  |  |  |  |
| 672 | 1.2.4.4.2 | ZnNi Line Kardex Optimization Shadow Boards Installed | milestone | 0d | 2025-11-04 | 2025-11-04 | 669 |  |  | 164.68d | 0d |  | James Fleming |  |  | No | No | No | No | No | No | 2024-11-26 | 2024-11-26 |  |  |  |  |

| ID | WBS | Task | Type | Duration | Start | Finish | Predecessors | Complete | Remaining | Baseline 1 start | Baseline 1 finish | Total slack | Free slack | Constraint | Resources | Work | Actual work | Tasks Due this Month | Tasks Due next Month | Tasks Due this week | Tasks Due next Week | Tasks Due Today | Last Tasks | Initial Planned Start | Initial Planned Finish | Text30 | Actual Task Start | Actual Task Finish | Finish Difference | Task active Day | Number1 | Number2 | Field | Start Difference |
| --- | --- | --- | --- | --- | --- | --- | --- | --- | --- | --- | --- | --- | --- | --- | --- | --- | --- | --- | --- | --- | --- | --- | --- | --- | --- | --- | --- | --- | --- | --- | --- | --- | --- | --- |
| 673 | 1.2.4.5 | **ZnNi Line Kardex Optimization Testing & Calibration** |  | 4.06d | 2025-11-04 | 2025-11-10 |  |  |  |  |  | 164.68d |  |  |  | 12h |  | No | No | No | No | No | Yes | 2024-11-27 | 2024-12-03 |  |  |  |  |  |  |  |  |  |
| 674 | 1.2.4.5.1 | **ZnNi Line Kardex Optimization Testing & Adjustment Logs** |  | 4.06d | 2025-11-04 | 2025-11-10 |  |  |  |  |  | 164.68d | 0d |  |  | 12h |  | No | No | No | No | No | Yes | 2024-11-27 | 2024-12-03 |  |  |  |  |  |  |  |  |  |
| 675 | 1.2.4.5.1.1 | ZnNi Line Kardex Optimization Test the Kardex system with the new layout and IT integration. |  | 1d | 2025-11-04 | 2025-11-05 | 672 |  |  |  |  | 164.68d | 0d |  | James Fleming | 8h |  | No | No | No | No | No | No | 2024-11-27 | 2024-11-27 |  |  |  |  |  |  |  |  |  |
| 676 | 1.2.4.5.1.2 | ZnNi Line Kardex Optimization Make adjustments as needed. |  | 3d | 2025-11-05 | 2025-11-10 | 675 |  |  |  |  | 164.68d |  |  | James Fleming [16.67%] | 4h |  | No | No | No | No | No | No | 2024-11-28 | 2024-12-02 |  |  |  |  |  |  |  |  |  |
| 677 | 1.2.4.5.2 | ZnNi Line Kardex Optimization Full System Operational | milestone | 0d | 2025-11-10 | 2025-11-10 | 674 |  |  |  |  | 164.74d | 0d |  | James Fleming |  |  | No | No | No | No | No | No | 2024-12-03 | 2024-12-03 |  |  |  |  |  |  |  |  |  |
| 678 | 1.2.4.6 | **ZnNi Line Kardex Optimization Training & Documentation** |  | 5.75d | 2025-11-10 | 2025-11-18 |  |  |  |  |  | 162.74d |  |  |  | 6h |  | No | No | No | No | No | Yes | 2024-12-04 | 2024-12-11 |  |  |  |  |  |  |  |  |  |
| 679 | 1.2.4.6.1 | **Training Materials & Documentation** |  | 5.75d | 2025-11-10 | 2025-11-18 |  |  |  |  |  | 162.74d |  |  |  | 6h |  | No | No | No | No | No | Yes | 2024-12-04 | 2024-12-11 |  |  |  |  |  |  |  |  |  |
| 680 | 1.2.4.6.1.1 | ZnNi Line Kardex Optimization Train staff on using the updated Kardex system and logging faults. |  | 1d | 2025-11-10 | 2025-11-11 | 677 |  |  |  |  | 164.74d | 0d |  | James Bick [37.5%] | 3h |  | No | No | No | No | No | No | 2024-12-04 | 2024-12-04 |  |  |  |  |  |  |  |  |  |
| 681 | 1.2.4.6.1.2 | ZnNi Line Kardex Optimization Document procedures for future reference. |  | 2d | 2025-11-11 | 2025-11-17 | 680 |  |  |  |  | 162.68d | 0d |  | James Bick [12.5%] | 2h |  | No | No | No | No | No | No | 2024-12-05 | 2024-12-09 |  |  |  |  |  |  |  |  |  |
| 682 | 1.2.4.6.1.3 | ZnNi Line Kardex Optimization BUI checks of foam etc added to 1LM Plan |  | 1d | 2025-11-17 | 2025-11-18 | 681 |  |  |  |  | 162.74d | 0d |  | Jason Payne [12.5%] | 1h |  | No | No | No | No | No | No | 2024-12-10 | 2024-12-10 |  |  |  |  |  |  |  |  |  |
| 683 | 1.2.4.6.2 | Training & Documentation Delivered | milestone | 0d | 2025-11-18 | 2025-11-18 | 682 |  |  |  |  | 162.74d | 0d |  | James Fleming |  |  | No | No | No | No | No | No | 2024-12-11 | 2024-12-11 |  |  |  |  |  |  |  |  |  |
| 684 | 1.2.4.7 | **ZnNi Line Kardex Optimization Project Sign-off** |  | 1.78d | 2025-11-18 | 2025-11-20 |  |  |  |  |  | 162.74d |  |  |  | 2h |  | No | No | No | No | No | Yes | 2024-12-12 | 2024-12-16 |  |  |  |  |  |  |  |  |  |
| 685 | 1.2.4.7.1 | **ZnNi Line Kardex Optimization Lessons Learnt and Approval Document** |  | 1.78d | 2025-11-18 | 2025-11-20 |  |  |  |  |  | 162.74d | 0d |  |  | 2h |  | No | No | No | No | No | Yes | 2024-12-12 | 2024-12-16 |  |  |  |  |  |  |  |  |  |
| 686 | 1.2.4.7.1.1 | ZnNi Line Kardex Optimization Review the entire process with stakeholders. |  | 1d | 2025-11-18 | 2025-11-19 | 683 |  |  |  |  | 162.74d | 0d |  | James Fleming [12.5%] | 1h |  | No | No | No | No | No | No | 2024-12-12 | 2024-12-12 |  |  |  |  |  |  |  |  |  |
| 687 | 1.2.4.7.1.2 | ZnNi Line Kardex Optimization Obtain sign-off on the completed project. |  | 1d | 2025-11-19 | 2025-11-20 | 686 |  |  |  |  | 163.15d |  |  | James Fleming [12.5%] | 1h |  | No | No | No | No | No | No | 2024-12-13 | 2024-12-13 |  |  |  |  |  |  |  |  |  |
| 688 | 1.2.4.7.2 | ZnNi Line Kardex Optimization Project Sign-off Complete | milestone | 0d | 2025-11-20 | 2025-11-20 | 685 |  |  |  |  | 163.15d |  |  | James Fleming |  |  | No | No | No | No | No | No | 2024-12-16 | 2024-12-16 |  |  |  |  |  |  |  |  |  |
| 689 | 1.2.5 | **ZnNi Line First Line Maintenance Plan Roll Out** |  | 197d | 2024-08-05 A | 2025-05-06 |  | 96% | 7.82d | 2024-08-07 | 2024-08-07 | 304.19d |  |  |  | 44h | 44h | No |  |  |  |  |  | 2024-08-05 | 2025-04-03 | Maintenance System |  |  |  |  |  |  |  |  |
| 690 | 1.2.5.1 | **ZnNi Line First Line Maintenance Plan Roll Out Gate 1 - Approval to Proceed** |  | 1d | 2024-08-05 A | 2024-08-05 A |  | 100% |  |  |  |  |  |  |  | 1h | 1h | No |  |  |  |  |  | 2024-08-05 | 2025-01-20 |  | 2024-08-05 | 2024-08-05 | -168 |  |  |  |  |  |
| 691 | 1.2.5.1.1 | ZnNi Line First Line Maintenance Plan Roll Out Outline PID |  | 1d | 2024-08-05 A | 2024-08-05 A |  | 100% |  |  |  |  |  |  | James Fleming [12.5%] | 1h | 1h | No | No | No | No | No | Yes | 2024-08-05 | 2024-08-05 |  | 2024-08-05 | 2024-08-05 |  | 1 | -1 | -1 | 1 |  |
| 692 | 1.2.5.2 | **ZnNi Line First Line Maintenance Plan Roll Out Gate 5 Approval to Handover Work to SF** |  | 143d | 2024-10-18 A | 2025-05-06 |  | 96% | 5.81d |  |  | 304.19d |  |  |  | 41h | 41h | No |  |  |  |  |  | 2024-08-09 | 2025-01-16 |  | 2024-10-15 |  |  |  |  |  |  | 67 |
| 693 | 1.2.5.2.1 | ZnNi Line First Line Maintenance Plan Roll Out Generate draft 1LM plan |  | 5d | 2024-10-18 A | 2024-10-24 A |  | 100% |  |  |  |  |  | start no earlier than 2024-10-18 | Jason Payne [12.5%] | 5h | 5h | No | No | No | No | No | Yes | 2024-08-09 | 2024-08-15 |  | 2024-10-15 | 2024-10-15 | 61 | 1 | -1 | -1 | 1 | 67 |
| 694 | 1.2.5.2.2 | ZnNi Line First Line Maintenance Plan Roll Out Review, feedback and actions |  | 1d | 2024-11-01 A | 2024-11-01 A | 693 | 100% |  |  |  |  |  |  | James Fleming [12.5%] | 1h | 1h | No | No | No | No | No | Yes | 2024-08-15 | 2024-08-15 |  | 2024-10-22 | 2024-10-22 | 68 | 1 | -1 | -1 | 1 | 68 |
| 695 | 1.2.5.2.3 | ZnNi Line First Line Maintenance Plan Roll Out 1LM plan Second review |  | 1d | 2024-11-11 A | 2024-11-11 A | 694FS+5d | 100% |  |  |  |  |  |  | James Fleming [12.5%] | 1h | 1h | No | No | No | No | No | Yes | 2024-08-16 | 2024-08-16 |  | 2024-11-06 | 2024-11-06 | 82 | 1 | -1 | -1 | 1 | 82 |
| 696 | 1.2.5.2.4 | ZnNi Line First Line Maintenance Plan Roll Out 1LM plan Approved |  | 1d | 2024-11-12 A | 2024-11-12 A | 695 | 100% |  |  |  |  |  |  | James Fleming [12.5%] | 1h | 1h | No | No | No | No | No | Yes | 2024-08-19 | 2024-08-19 |  | 2024-11-07 | 2024-11-07 | 80 | 1 | -1 | -1 | 1 | 80 |
| 697 | 1.2.5.2.5 | ZnNi Line First Line Maintenance Plan Roll Out 1LM Plan added to software platform |  | 5d | 2024-11-13 A | 2024-11-19 A | 696 | 100% |  |  |  |  |  |  | Jason Payne [12.5%] | 5h | 5h | No | No | No | No | No | Yes | 2024-08-20 | 2024-08-26 |  | 2024-12-04 | 2024-12-04 | 100 | 1 | -1 | -1 | 1 | 106 |
| 698 | 1.2.5.2.6 | ZnNi Line First Line Maintenance Plan Roll Out 1LM plan software functionality check |  | 2d | 2024-11-20 A | 2024-11-21 A | 697 | 100% |  |  |  |  |  |  | Jason Payne [25%] | 4h | 4h | No | No | No | No | No | Yes | 2024-08-27 | 2024-08-28 |  | 2024-12-04 | 2024-12-04 | 98 | 1 | -1 | -1 | 1 | 99 |
| 699 | 1.2.5.2.7 | ZnNi Line First Line Maintenance Plan Roll Out 1LM Plan software training |  | 1d | 2024-11-22 A | 2024-11-22 A | 698 | 100% |  |  |  |  |  |  | Jason Payne [50%] | 4h | 4h | No | No | No | No | No | Yes | 2024-08-29 | 2024-08-29 |  | 2024-12-04 | 2024-12-04 | 97 | 1 | -1 | -1 | 1 | 97 |
| 700 | 1.2.5.2.8 | ZnNi Line First Line Maintenance Plan Roll Out 1LM Plan periodicity and mechanism approved |  | 1d | 2024-11-25 A | 2024-11-25 A | 699 | 100% |  |  |  |  |  |  | James Fleming [25%] | 2h | 2h | No | No | No | No | No | Yes | 2024-08-30 | 2024-08-30 |  | 2024-12-04 | 2024-12-04 | 96 | 1 | -1 | -1 | 1 | 96 |
| 701 | 1.2.5.2.9 | ZnNi Line First Line Maintenance Plan Roll Out 1LM Plan Go live |  | 1d | 2024-11-26 A | 2024-11-26 A | 700 | 100% |  |  |  |  |  |  | Jason Payne [25%] | 2h | 2h | No | No | No | No | No | Yes | 2024-09-02 | 2024-09-02 |  | 2024-12-04 | 2024-12-04 | 93 | 1 | -1 | -1 | 1 | 93 |
| 702 | 1.2.5.2.10 | ZnNi Line First Line Maintenance Plan Roll Out ZnNi 1LM Plan Roll Out Support Period |  | 95d | 2024-11-27 A | 2025-04-08 A | 701 | 100% |  |  |  |  |  |  | Jason Payne [1.32%] | 10h | 10h | No | No | No | No | No | Yes | 2024-09-03 | 2025-01-07 |  | 2024-12-04 | 2025-04-04 | 87 | 1 | -1 | -1 | 1 | 92 |
| 703 | 1.2.5.2.11 | ZnNi Line First Line Maintenance Plan Roll Out Feedback Mechanism for 1LM updates |  | 5d | 2025-03-26 A | 2025-04-02 A | 702FS-10d | 100% |  |  |  |  |  |  | James Fleming [15%] | 6h | 6h | No | No | No | No | No | Yes | 2025-01-08 | 2025-01-14 |  | 2025-04-09 | 2025-04-09 | 85 | 1 | -1 | -1 | 1 | 91 |
| 704 | 1.2.5.2.12 | ZnNi Line First Line Maintenance Plan Roll Out Training Complete | milestone | 0d | 2025-04-29 | 2025-04-29 | 702FS+15d |  |  |  |  | 304.19d | 0d |  | James Fleming |  |  | No | No | No | No | No | Yes | 2025-01-15 | 2025-01-15 |  | 2025-04-09 | 2025-04-09 | 84 |  | -1 | -1 |  | 84 |
| 705 | 1.2.5.2.13 | ZnNi Line First Line Maintenance Plan Roll Out ZnNi 1LM Plan Roll Out Traffic Light System for 1LM Status |  | 5d | 2025-04-30 | 2025-05-06 | 704 |  |  |  |  | 304.19d |  |  |  |  |  | No | No | No | No | No | Yes | 2025-01-16 | 2025-01-16 |  | 2025-04-01 |  |  |  |  |  |  | 75 |

| ID | WBS | Task | Type | Duration | Start | Finish | Predecessors | Complete | Remaining | Total slack | Resources | Work | Actual work | Tasks Due this Month | Initial Planned Start | Initial Planned Finish | Tasks Due next Month | Tasks Due this week | Tasks Due next Week | Tasks Due Today | Last Tasks | Task active Day | Number1 | Number2 | Field | Actual Task Start | Actual Task Finish | Start Difference | Finish Difference |
| --- | --- | --- | --- | --- | --- | --- | --- | --- | --- | --- | --- | --- | --- | --- | --- | --- | --- | --- | --- | --- | --- | --- | --- | --- | --- | --- | --- | --- | --- |
| 706 | 1.2.5.3 | **ZnNi Line First Line Maintenance Plan Roll Out Gate 6 Approval to close out project** |  | 1.62d | 2025-04-16 A | 2025-04-17 A |  | 100% |  |  |  | 2h | 2h | No | 2025-01-17 | 2025-01-20 |  |  |  |  |  |  |  |  |  |  |  |  |  |
| 707 | 1.2.5.3.1 | ZnNi 1LM Plan Roll Out Lessons Learnt Desemination |  | 1d | 2025-04-16 A | 2025-04-16 A | 705 | 100% |  |  | James Fleming [12.5%] | 1h | 1h | No | 2025-01-17 | 2025-01-17 | No | No | No | No | Yes | 1 | -1 | -1 | 1 |  |  |  |  |
| 708 | 1.2.5.3.2 | ZnNi 1LM Plan Roll Out Close out project documentation |  | 1d | 2025-04-16 A | 2025-04-17 A | 707 | 100% |  |  | James Fleming [12.5%] | 1h | 1h | No | 2025-01-20 | 2025-01-20 | No | No | No | No | Yes | 1 | -1 | -1 | 1 |  |  |  |  |
| 709 | 1.2.6 | **ZnNi Line Chiller System Optimization** |  | 96.03d | 2025-04-08 A | 2025-08-20 |  | 48% | 50.17d | 228.53d |  | 287.5h | 63h | No | 2025-04-14 | 2025-05-07 | No | No | No | No | No | 1 |  |  | 1 | 2025-04-14 | 2025-05-07 |  |  |
| 710 | 1.2.6.1 | **ZnNi Line Chiller System Optimization System Assessment & Data Collection** |  | 21.5d | 2025-04-08 A | 2025-05-08 A |  | 100% |  |  |  | 6h | 6h | No | 2025-04-14 | 2025-05-07 | No | No | No | No | Yes |  |  |  |  | 2025-04-14 | 2025-05-07 |  |  |
| 711 | 1.2.6.1.1 | ZnNi Line Chiller System Optimization Kick Off/Regroup |  | 1d | 2025-04-08 A | 2025-04-09 A | 708FS-7d | 100% |  |  | James Fleming [12.5%] | 1h | 1h | No | 2025-04-14 | 2025-04-14 | No | No | No | No | Yes | 1 |  |  | 1 | 2025-04-14 | 2025-04-14 |  |  |
| 712 | 1.2.6.1.2 | ZnNi Line Chiller System Optimization Attain Current Power Usage |  | 1d | 2025-04-09 A | 2025-04-10 A | 711 | 100% |  |  | James Fleming [25%] | 2h | 2h | No | 2025-04-14 | 2025-04-15 | No | No | No | No | Yes | 1 |  |  | 1 | 2025-04-14 | 2025-04-15 |  |  |
| 713 | 1.2.6.1.3 | ZnNi Line Chiller System Optimization System configuation proposal complete | milestone | 0d | 2025-04-10 A | 2025-04-10 A | 712 | 100% |  |  | James Bick |  |  | No | 2025-05-07 | 2025-05-07 | No | No | No | No | Yes | 1 |  |  | 1 | 2025-05-07 | 2025-05-07 |  |  |
| 714 | 1.2.6.1.4 | ZnNi Line Chiller System Optimization Specification Update |  | 1d | 2025-04-14 A | 2025-04-14 A | 713 | 100% |  |  | James Bick [25%] | 2h | 2h | No | 2025-05-07 | 2025-05-12 | No | No | No | No | Yes | 1 |  |  | 1 | 2025-05-07 | 2025-05-12 |  |  |
| 715 | 1.2.6.1.5 | ZnNi Line Chiller Optimization optimal duty cycle, power & configuration requirements for system inc chiller platform complete | milestone | 0d | 2025-05-07 A | 2025-05-07 A | 714FS+17d | 100% |  |  | James Bick |  |  | No | 2025-05-12 | 2025-05-12 | No | No | No | No | Yes | 1 |  |  | 1 | 2025-05-12 | 2025-05-12 |  |  |
| 716 | 1.2.6.1.6 | ZnNi Line Chiller Optimization Approval to continue with project |  | 0.12d | 2025-05-08 A | 2025-05-08 A | 715 | 100% |  |  | James Fleming | 1h | 1h | No | 2025-05-12 | 2025-05-12 | No | No | No | No | Yes | 1 |  |  | 1 | 2025-05-12 | 2025-05-12 |  |  |
| 717 | 1.2.6.2 | **ZnNi Line Chiller System Optimization Design** |  | 19d | 2025-05-09 A | 2025-06-04 |  | 71% | 5.59d | 283.19d |  | 52.5h | 11h | No | 2025-05-12 | 2025-05-29 | No | No | No | No | Yes |  |  |  |  | 2025-05-12 | 2025-05-29 |  |  |
| 718 | 1.2.6.2.1 | ZnNi Line Chiller System Optimization Design & Requirements Kick Off |  | 1d | 2025-05-09 A | 2025-05-12 A | 716 | 100% |  |  | James Fleming [12.5%] | 1h | 1h | No | 2025-05-12 | 2025-05-13 | No | No | No | No | Yes | 1 |  |  | 1 | 2025-05-12 | 2025-05-13 |  |  |
| 719 | 1.2.6.2.2 | ZnNi Line Chiller System Optimization Initial design specifications |  | 5d | 2025-05-12 A | 2025-05-21 A | 718 | 100% |  |  | James Bick [10%] | 4h | 4h | No | 2025-05-13 | 2025-05-20 | No | No | No | No | Yes | 1 |  |  | 1 | 2025-03-11 | 2025-03-18 | -63 | -63 |
| 720 | 1.2.6.2.3 | **ZnNi Line Chiller System Optimization incorporating energy-efficient features.** |  | 7.72d | 2025-05-12 A | 2025-05-21 A |  | 100% |  |  |  | 6h | 6h | No | 2025-05-28 | 2025-05-29 | No | No | No | No | Yes |  |  |  |  |  |  |  |  |
| 721 | 1.2.6.2.3.1 | ZnNi Line Chiller System Optimization Energy savings calculations complete |  | 5d | 2025-05-12 A | 2025-05-20 A | 716 | 100% |  |  | James Bick [10%] | 4h | 4h | No | 2025-06-04 | 2025-06-17 | No | No | No | No | Yes | 1 |  |  | 1 | 2025-05-07 | 2025-05-14 | -28 | -34 |
| 722 | 1.2.6.2.3.2 | ZnNi Line Chiller System Optimization Energy savings calculations shared with site services |  | 1d | 2025-05-20 A | 2025-05-21 A | 721 | 100% |  |  | James Fleming [25%] | 2h | 2h | No | 2025-05-28 | 2025-05-29 | No | No | No | No | Yes | 1 |  |  | 1 | 2025-05-07 | 2025-05-14 | -21 | -15 |
| 723 | 1.2.6.2.4 | **ZnNi Line Chiller System Optimization System Design Complete** |  | 5d | 2025-05-29 | 2025-06-04 |  |  |  | 283.19d | James Fleming | 41.5h |  | No | 2025-05-28 | 2025-05-29 | No | No | No | No | Yes |  |  |  |  |  |  |  |  |
| 724 | 1.2.6.2.4.1 | ZnNi Line Chiller System Optimization Detailed design specifications and schematics for the new chiller system. |  | 5d | 2025-05-29 | 2025-06-04 | 728 |  |  | 283.19d | Matt Dolphin [5%] | 2h |  | No | 2025-05-20 | 2025-05-27 | No | No | No | No | Yes |  |  |  |  |  |  |  |  |
| 725 | 1.2.6.3 | **ZnNi Line Chiller System Optimization Platform Design** |  | 28.81d | 2025-05-21 A | 2025-06-30 |  | 84% | 4.7d | 265.38d |  | 42h | 41h | No | 2025-06-06 | 2025-06-17 | No | No | No | No | Yes |  |  |  |  | 2025-04-24 |  |  |  |
| 726 | 1.2.6.3.1 | ZnNi Line Chiller System Optimization Vendor Engagement & Input |  | 0.12d | 2025-05-21 A | 2025-05-21 A | 719 | 100% |  |  | James Fleming | 1h | 1h | No | 2025-06-06 | 2025-06-09 | No | No | No | No | Yes | 1 |  |  | 1 | 2025-04-24 | 2025-04-24 | -43 | -46 |
| 727 | 1.2.6.3.2 | ZnNi Line Chiller System Optimization Platform & Housing Modification dwgs |  | 5d | 2025-05-22 A | 2025-05-28 A | 726 | 100% |  |  | M-Tech | 40h | 40h | No | 2025-06-09 | 2025-06-16 | No | No | No | No | Yes | 1 |  |  | 1 | 2025-04-24 | 2025-05-20 | -46 | -27 |
| 728 | 1.2.6.3.3 | ZnNi Line Chiller System Optimization Platform & Housing Design Review | milestone | 0d | 2025-05-28 A | 2025-05-28 A | 727 | 100% |  |  | James Fleming |  |  | No | 2025-06-16 | 2025-06-17 | No | No | No | No | Yes | 1 |  |  | 1 | 2025-05-27 | 2025-05-27 | -20 | -21 |
| 729 | 1.2.6.3.4 | ZnNi Line Chiller System Optimization source bund pump for platform sump |  | 1d | 2025-06-19 | 2025-06-19 | 728FS+15d |  |  | 272.38d | James Fleming [12.5%] | 1h |  | No | 2025-06-16 | 2025-06-17 | No | No | No | No | Yes |  |  |  |  | 2025-06-10 |  | -6 |  |
| 730 | 1.2.6.3.5 | ZnNi Line Chiller System Optimization Platform & Housing Design Complete | milestone | 0d | 2025-06-30 A | 2025-06-30 A | 729FS+7d | 100% |  |  | James Fleming |  |  | No | 2025-06-16 | 2025-06-17 | No | No | No | No | Yes | 1 |  |  | 1 | 2025-06-16 | 2025-06-17 |  |  |

| ID | WBS | Task | Type | Duration | Start | Finish | Predecessors | Complete | Total slack | Free slack | Resources | Work | Actual work | Tasks Due this Month | Tasks Due next Month | Tasks Due this week | Tasks Due next Week | Tasks Due Today | Last Tasks | Actual Task Start | Actual Task Finish | Initial Planned Start | Initial Planned Finish | Task active Day | Field |
| --- | --- | --- | --- | --- | --- | --- | --- | --- | --- | --- | --- | --- | --- | --- | --- | --- | --- | --- | --- | --- | --- | --- | --- | --- | --- |
| 731 | 1.2.6.4 | **ZnNi Line Chiller System Optimization Procurement** |  | 4.41d | 2025-06-30 A | 2025-07-07 A |  | 100% |  |  |  | 5h | 5h | Yes | No | No | No | No | Yes | 2025-06-16 | 2025-06-17 | 2025-06-16 | 2025-06-17 |  |  |
| 732 | 1.2.6.4.1 | ZnNi Line Chiller System Optimization Platform PO raised |  | 3d | 2025-06-30 A | 2025-07-03 A | 730 | 100% |  |  | Josh Avent [4.17%] | 1h | 1h | Yes | No | No | No | No | Yes | 2025-06-16 | 2025-06-17 | 2025-06-16 | 2025-06-17 | 1 | 1 |
| 733 | 1.2.6.4.2 | ZnNi Line Chiller System Optimization Controls PO raised |  | 3d | 2025-06-30 A | 2025-07-03 A | 730 | 100% |  |  | Josh Avent [4.17%] | 1h | 1h | Yes | No | No | No | No | Yes | 2025-06-16 | 2025-06-17 | 2025-06-16 | 2025-06-17 | 1 | 1 |
| 734 | 1.2.6.4.3 | **ZnNi Line Chiller System Optimization ALL PO raised** |  | 1.41d | 2025-07-03 A | 2025-07-07 A |  | 100% |  |  |  | 3h | 3h | Yes | No | No | No | No | Yes | 2025-06-16 | 2025-06-17 | 2025-06-16 | 2025-06-17 |  |  |
| 735 | 1.2.6.4.3.1 | ZnNi Line Chiller System Optimization Design for improved maintenance access |  | 1d | 2025-07-03 A | 2025-07-07 A | 733 | 100% |  |  | James Fleming [12.5%] | 1h | 1h | Yes | No | No | No | No | Yes | 2025-06-16 | 2025-06-17 | 2025-06-16 | 2025-06-17 | 1 | 1 |
| 736 | 1.2.6.4.3.2 | ZnNi Line Chiller System Optimization Design for improved airflow. |  | 1d | 2025-07-03 A | 2025-07-07 A | 733 | 100% |  |  | James Fleming [12.5%] | 1h | 1h | Yes | No | No | No | No | Yes | 2025-06-16 | 2025-06-17 | 2025-06-16 | 2025-06-17 | 1 | 1 |
| 737 | 1.2.6.4.3.3 | ZnNi Line Chiller System Optimization Design for improved bunding |  | 1d | 2025-07-03 A | 2025-07-07 A | 733 | 100% |  |  | James Fleming [12.5%] | 1h | 1h | Yes | No | No | No | No | Yes | 2025-06-16 | 2025-06-17 | 2025-06-16 | 2025-06-17 | 1 | 1 |
| 738 | 1.2.6.5 | **ZnNi Line Chiller System Optimization System Upgrade Implementation** |  | 10d | 2025-07-21 | 2025-08-04 |  |  | 235.66d |  |  | 56h |  | No | No | No | No | No | Yes |  |  | 2025-06-17 | 2025-06-27 |  |  |
| 739 | 1.2.6.5.1 | ZnNi Line Chiller System Optimization Incumbent Platform Controls Removal/Repurpose |  | 1d | 2025-07-28 | 2025-07-29 | 737FS+15d |  | 244.97d |  | Koch | 8h |  | Yes | No | No | Yes | No | No |  |  | 2025-06-17 | 2025-06-19 |  |  |
| 740 | 1.2.6.5.2 | ZnNi Line Chiller System Optimization Incumbent Platform controlled cleaning |  | 1d | 2025-07-21 | 2025-07-22 | 737FS+10d |  | 249.97d |  | Chris Locke | 8h |  | Yes | No | Yes | No | No | Yes |  |  | 2025-06-18 | 2025-06-18 |  |  |
| 741 | 1.2.6.5.3 | ZnNi Line Chiller System Optimization Incumbent Platform Removal Complete | milestone | 0d | 2025-07-30 | 2025-07-30 | 737FS+17d |  | 228.66d | 0d | M-Tech |  |  | Yes | No | No | Yes | No | No |  |  | 2025-06-19 | 2025-06-19 |  |  |
| 742 | 1.2.6.5.4 | ZnNi Line Chiller System Optimization Platform Install Complete | milestone | 0d | 2025-07-30 | 2025-07-30 | 741 |  | 243.97d |  | M-Tech |  |  | Yes | No | No | Yes | No | No |  |  | 2025-06-20 | 2025-06-20 |  |  |
| 743 | 1.2.6.5.5 | ZnNi Line Chiller System Optimization site TCU |  | 1d | 2025-07-30 | 2025-07-31 | 741 |  | 228.66d | 0d | SK | 8h |  | Yes | No | No | Yes | No | No |  |  | 2025-06-23 | 2025-06-23 |  |  |
| 744 | 1.2.6.5.6 | ZnNi Line Chiller System Optimization site and pipe new chiller |  | 1d | 2025-07-31 | 2025-08-01 | 743 |  | 241.97d |  | SK | 8h |  | No | Yes | No | Yes | No | No |  |  | 2025-06-24 | 2025-06-24 |  |  |
| 745 | 1.2.6.5.7 | ZnNi Line Chiller System Optimization site and electrically connect new chiller |  | 1d | 2025-07-31 | 2025-08-01 | 743 |  | 228.66d | 0d | SK | 8h |  | No | Yes | No | Yes | No | No |  |  | 2025-06-25 | 2025-06-25 |  |  |
| 746 | 1.2.6.5.8 | ZnNi Line Chiller System Optimization controls configurations TCU & Chiller |  | 1d | 2025-08-01 | 2025-08-04 | 745 |  | 240.97d |  | Koch | 8h |  | No | Yes | No | No | No | No |  |  | 2025-06-26 | 2025-06-26 |  |  |
| 747 | 1.2.6.5.9 | ZnNi Line Chiller System Optimization connect bund sump & pump |  | 1d | 2025-08-01 | 2025-08-04 | 745 |  | 228.66d | 0d | Chris Locke | 8h |  | No | Yes | No | No | No | No |  |  | 2025-06-27 | 2025-06-27 |  |  |
| 748 | 1.2.6.5.10 | ZnNi Line Chiller System Optimization Chiller Installation inc controlls complete | milestone | 0d | 2025-08-04 | 2025-08-04 | 747 |  | 240.97d |  | James Fleming |  |  | No | Yes | No | No | No | No |  |  |  |  |  |  |
| 749 | 1.2.6.6 | **ZnNi Line Chiller System Optimization System Upgrade Testing** |  | 10.66d | 2025-08-04 | 2025-08-18 |  |  | 228.66d |  |  | 120h |  | No | No | No | No | No | Yes |  |  | 2025-06-27 | 2025-07-22 |  |  |
| 750 | 1.2.6.6.1 | ZnNi Line Chiller System Optimization Chiller System commissioning |  | 2d | 2025-08-04 | 2025-08-06 | 747 |  | 238.97d |  | SK | 16h |  | No | Yes | No | No | No | No |  |  | 2025-06-27 | 2025-07-01 |  |  |
| 751 | 1.2.6.6.2 | ZnNi Line Chiller System Optimization Chiller System commissioning report |  | 2d | 2025-08-04 | 2025-08-06 | 747 |  | 238.97d |  | SK | 16h |  | No | Yes | No | No | No | No |  |  | 2025-06-27 | 2025-07-01 |  |  |
| 752 | 1.2.6.6.3 | ZnNi Line Chiller System Optimization Chiller System Mechanical sign off |  | 2d | 2025-08-04 | 2025-08-06 | 747 |  | 238.78d |  | James Fleming [6.25%] | 1h |  | No | Yes | No | No | No | No |  |  | 2025-06-27 | 2025-07-01 |  |  |
| 753 | 1.2.6.6.4 | ZnNi Line Chiller System Optimization Chiller System electrical sign off |  | 2d | 2025-08-04 | 2025-08-06 | 747 |  | 238.78d |  | James Fleming [6.25%] | 1h |  | No | Yes | No | No | No | No |  |  | 2025-06-27 | 2025-07-01 |  |  |
| 754 | 1.2.6.6.5 | ZnNi Line Chiller System Optimization Chiller System controls sign off |  | 2d | 2025-08-04 | 2025-08-06 | 747 |  | 228.66d | 0d | James Fleming [6.25%] | 1h |  | No | Yes | No | No | No | No |  |  | 2025-06-27 | 2025-07-01 |  |  |
| 755 | 1.2.6.6.6 | ZnNi Line Chiller System Optimization implementation dwg pack updated |  | 5d | 2025-08-06 | 2025-08-12 | 754 |  | 229.09d | 0d | SK; ASL | 80h |  | No | Yes | No | No | No | No |  |  | 2025-07-07 | 2025-07-08 |  |  |
| 756 | 1.2.6.6.7 | ZnNi Line Chiller System Optimization implementation sign off and handover |  | 1d | 2025-08-13 | 2025-08-13 | 755 |  | 229.09d | 0d | James Fleming [12.5%] | 1h |  | No | Yes | No | No | No | No |  |  | 2025-07-15 | 2025-07-16 |  |  |
| 757 | 1.2.6.6.8 | ZnNi Line Chiller System Optimization Finalize system testing and efficiency review. |  | 1d | 2025-08-13 | 2025-08-18 | 756 |  | 227.06d | 0d | James Bick [50%] | 4h |  | No | Yes | No | No | No | No |  |  | 2025-07-16 | 2025-07-17 |  |  |

| ID | WBS | Task | Type | Duration | Start | Finish | Predecessors | Complete | Remaining | Total slack | Free slack | Resources | Work | Actual work | Tasks Due this Month | Tasks Due next Month | Tasks Due this week | Tasks Due next Week | Tasks Due Today | Last Tasks | Initial Planned Start | Initial Planned Finish | Actual Task Start | Actual Task Finish | Finish Difference | Number1 | Number2 | Task active Day | Start Difference | Field |
| --- | --- | --- | --- | --- | --- | --- | --- | --- | --- | --- | --- | --- | --- | --- | --- | --- | --- | --- | --- | --- | --- | --- | --- | --- | --- | --- | --- | --- | --- | --- |
| 758 | 1.2.6.7 | **ZnNi Line Chiller System Optimization Project Close** |  | 1.78d | 2025-08-18 | 2025-08-20 |  |  |  | 228.12d |  |  | 6h |  | No | No | No | No | No | Yes | 2025-07-17 | 2025-07-18 |  |  |  |  |  |  |  |  |
| 759 | 1.2.6.7.1 | ZnNi Line Chiller System Optimization Lessons Learnt Report |  | 1d | 2025-08-18 | 2025-08-19 | 757 |  |  | 228.12d | 0d | James Fleming [50%] | 4h |  | No | Yes | No | No | No | No | 2025-07-17 | 2025-07-18 |  |  |  |  |  |  |  |  |
| 760 | 1.2.6.7.2 | ZnNi Line Chiller System Optimization Close out project documentation |  | 1d | 2025-08-19 | 2025-08-20 | 759 |  |  | 228.53d | 0d | James Fleming [25%] | 2h |  | No | Yes | No | No | No | No | 2025-07-21 | 2025-07-22 |  |  |  |  |  |  |  |  |
| 761 | 1.2.6.7.3 | ZnNi Line Chiller System Optimization Project Closed | milestone | 0d | 2025-08-20 | 2025-08-20 | 760 |  |  | 228.53d |  | James Fleming |  |  | No | Yes | No | No | No | No | 2025-07-22 | 2025-07-22 |  |  |  |  |  |  |  |  |
| 762 | 1.2.7 | **SF Operational Documentation (inc. Training) Optimization** |  | 211.19d? | 2024-12-20 A | 2025-10-13 |  | 44% | 118.33d? | 191d |  |  | 219h | 123h | No |  |  |  |  |  | 2024-12-20 | 2025-10-13 | 2024-12-20 |  |  |  |  |  |  |  |
| 763 | 1.2.7.1 | **SF Operational Documentation (inc. Training) Optimization Initialization** |  | 3.16d? | 2024-12-20 A | 2024-12-25 A |  | 100% |  |  |  |  | 4.5h | 4.5h | No | No | No | No | No | Yes | 2024-12-20 | 2024-12-25 | 2024-12-20 | 2025-03-10 | 75 |  |  |  |  |  |
| 764 | 1.2.7.1.1 | **SF Operational Documentation (inc. Training) Optimization Outline PID** |  | 3.16d? | 2024-12-20 A | 2024-12-25 A |  | 100% |  |  |  |  | 4.5h | 4.5h | No | No | No | No | No | Yes | 2024-12-20 | 2024-12-25 | 2024-12-20 | 2025-03-10 |  | -1 | -1 |  |  |  |
| 765 | 1.2.7.1.1.1 | SF Operational Documentation (inc. Training) Optimization High Level Scope and Objectives |  | 1d | 2024-12-20 A | 2024-12-23 A | 701FS+17d | 100% |  |  |  | James Fleming [6.25%] | 0.5h | 0.5h | No | No | No | No | No | Yes | 2024-12-20 | 2024-12-23 | 2025-01-20 | 2025-01-20 | 28 |  |  | 1 | 31 | 1 |
| 766 | 1.2.7.1.1.2 | SF Operational Documentation (inc. Training) Optimization Initial Stakeholder Identification |  | 1d | 2024-12-23 A | 2024-12-24 A | 765 | 100% |  |  |  | James Fleming [6.25%] | 0.5h | 0.5h | No | No | No | No | No | Yes | 2024-12-23 | 2024-12-24 | 2025-01-20 | 2025-01-20 | 27 |  |  | 1 | 28 | 1 |
| 767 | 1.2.7.1.1.3 | SF Operational Documentation (inc. Training) Optimization Prelim Resource Allocation |  | 1d? | 2024-12-23 A | 2024-12-24 A | 765 | 100% |  |  |  | James Fleming [6.25%] | 0.5h | 0.5h | No | No | No | No | No | Yes | 2024-12-23 | 2024-12-24 | 2025-01-20 | 2025-01-20 | 27 |  |  | 1 | 28 | 1 |
| 768 | 1.2.7.1.1.4 | SF Operational Documentation (inc. Training) Optimization Prelim Budget & Schedule |  | 1d | 2024-12-23 A | 2024-12-24 A | 765 | 100% |  |  |  | James Fleming [6.25%] | 0.5h | 0.5h | No | No | No | No | No | Yes | 2024-12-23 | 2024-12-24 | 2025-01-20 | 2025-01-20 | 27 |  |  | 1 | 28 | 1 |
| 769 | 1.2.7.1.1.5 | SF Operational Documentation (inc. Training) Optimization Feasibility Study |  | 1d | 2024-12-23 A | 2024-12-24 A | 765 | 100% |  |  |  | James Fleming [6.25%] | 0.5h | 0.5h | No | No | No | No | No | Yes | 2024-12-23 | 2024-12-24 | 2025-01-20 | 2025-01-20 | 27 |  |  | 1 | 28 | 1 |
| 770 | 1.2.7.1.1.6 | SF Operational Documentation (inc. Training) Optimization Preliminary Risk Assessment |  | 1d | 2024-12-23 A | 2024-12-24 A | 765 | 100% |  |  |  | James Fleming [6.25%] | 0.5h | 0.5h | No | No | No | No | No | Yes | 2024-12-23 | 2024-12-24 | 2025-01-20 | 2025-01-20 | 27 |  |  | 1 | 28 | 1 |
| 771 | 1.2.7.1.1.7 | SF Operational Documentation (inc. Training) Optimization Prelim Schedule |  | 1d | 2024-12-23 A | 2024-12-24 A | 765 | 100% |  |  |  | James Fleming [6.25%] | 0.5h | 0.5h | No | No | No | No | No | Yes | 2024-12-23 | 2024-12-24 | 2025-01-20 | 2025-01-20 | 27 |  |  | 1 | 28 | 1 |
| 772 | 1.2.7.1.1.8 | **SF Operational Documentation (inc. Training) Optimization Gate 1 Approval to Start Project** |  | 0.97d | 2024-12-24 A | 2024-12-25 A |  | 100% |  |  |  |  | 1h | 1h | No |  |  |  |  |  | 2024-12-24 | 2024-12-25 | 2025-03-10 | 2025-03-10 |  |  |  |  |  |  |
| 773 | 1.2.7.1.1.8.1 | SF Operational Documentation (inc. Training) Optimization Outline PID Team Review |  | 1d | 2024-12-24 A | 2024-12-25 A | 771 | 100% |  |  |  | James Fleming [12.5%] | 1h | 1h | No | No | No | No | No | Yes | 2024-12-24 | 2024-12-25 | 2025-03-10 | 2025-03-10 | 75 |  |  | 1 | 76 | 1 |
| 774 | 1.2.7.1.1.8.2 | SF Operational Documentation (inc. Training) Optimization Approval to Proceed with Project Complete | milestone | 0d | 2024-12-25 A | 2024-12-25 A | 773 | 100% |  |  |  | James Fleming |  |  | No | No | No | No | No | Yes | 2024-12-25 | 2024-12-25 | 2025-03-10 | 2025-03-10 | 75 |  |  | 1 | 75 | 1 |
| 775 | 1.2.7.2 | **SF Operational Documentation (inc. Training) Optimization Planning** |  | 13.03d | 2024-12-25 A | 2025-01-13 A |  | 100% |  |  |  |  | 6.5h | 6.5h | No | No | No | No | No | Yes | 2024-12-25 | 2025-01-13 | 2025-03-25 | 2025-03-25 |  |  |  |  | 90 |  |
| 776 | 1.2.7.2.1 | SF Operational Documentation (inc. Training) Optimization Detailed Project Plan |  | 1d | 2024-12-25 A | 2024-12-26 A | 774 | 100% |  |  |  | James Fleming [6.25%] | 0.5h | 0.5h | No | No | No | No | No | Yes | 2024-12-25 | 2024-12-26 | 2025-03-25 | 2025-03-25 | 89 |  |  | 1 | 90 | 1 |
| 777 | 1.2.7.2.2 | SF Operational Documentation (inc. Training) Optimization Detailed Scope |  | 1d | 2024-12-26 A | 2024-12-26 A | 776 | 100% |  |  |  | James Fleming [6.25%] | 0.5h | 0.5h | No | No | No | No | No | Yes | 2024-12-26 | 2024-12-26 | 2025-03-25 | 2025-03-25 | 89 |  |  | 1 | 89 | 1 |
| 778 | 1.2.7.2.3 | 1.2.8.3.1 |  | 1d | 2024-12-26 A | 2024-12-30 A | 777 | 100% |  |  |  | James Fleming [6.25%] | 0.5h | 0.5h | No | No | No | No | No | Yes | 2024-12-26 | 2024-12-30 | 2025-03-25 | 2025-03-25 | 85 |  |  | 1 | 89 | 1 |
| 779 | 1.2.7.2.4 | SF Operational Documentation (inc. Training) Optimization Stakeholder and Team Alignment |  | 1d | 2024-12-30 A | 2024-12-31 A | 778 | 100% |  |  |  | James Fleming [6.25%] | 0.5h | 0.5h | No | No | No | No | No | Yes | 2024-12-30 | 2024-12-31 | 2025-03-25 | 2025-03-25 | 84 |  |  | 1 | 85 | 1 |
| 780 | 1.2.7.2.5 | SF Operational Documentation (inc. Training) Optimization Roles & Responsibilities (RACI) |  | 1d | 2024-12-31 A | 2025-01-01 A | 779 | 100% |  |  |  | James Fleming [6.25%] | 0.5h | 0.5h | No | No | No | No | No | Yes | 2024-12-31 | 2025-01-01 | 2025-03-25 | 2025-03-25 | 83 |  |  | 1 | 84 | 1 |
| 781 | 1.2.7.2.6 | SF Operational Documentation (inc. Training) Optimization WBS |  | 1d | 2025-01-01 A | 2025-01-02 A | 780 | 100% |  |  |  | James Fleming [6.25%] | 0.5h | 0.5h | No | No | No | No | No | Yes | 2025-01-01 | 2025-01-02 | 2025-03-25 | 2025-04-04 | 92 |  |  | 1 | 83 | 1 |
| 782 | 1.2.7.2.7 | SF Operational Documentation (inc. Training) Optimization PBS |  | 1d | 2025-01-02 A | 2025-01-02 A | 781 | 100% |  |  |  | James Fleming [6.25%] | 0.5h | 0.5h | No | No | No | No | No | Yes | 2025-01-02 | 2025-01-02 | 2025-03-25 | 2025-04-04 | 92 |  |  | 1 | 82 | 1 |
| 783 | 1.2.7.2.8 | SF Operational Documentation (inc. Training) Optimization Procurement Plan |  | 1d | 2025-01-02 A | 2025-01-06 A | 782 | 100% |  |  |  | James Fleming [6.25%] | 0.5h | 0.5h | No | No | No | No | No | Yes | 2025-01-02 | 2025-01-06 | 2025-03-25 | 2025-04-04 | 88 |  |  | 1 | 82 | 1 |
| 784 | 1.2.7.2.9 | SF Operational Documentation (inc. Training) Optimization CBS |  | 1d | 2025-01-06 A | 2025-01-07 A | 783 | 100% |  |  |  | James Fleming [6.25%] | 0.5h | 0.5h | No | No | No | No | No | Yes | 2025-01-06 | 2025-01-07 | 2025-03-25 | 2025-04-04 | 87 |  |  | 1 | 78 | 1 |
| 785 | 1.2.7.2.10 | SF Operational Documentation (inc. Training) Optimization Quality Plan |  | 1d | 2025-01-07 A | 2025-01-08 A | 784 | 100% |  |  |  | James Fleming [6.25%] | 0.5h | 0.5h | No | No | No | No | No | Yes | 2025-01-07 | 2025-01-08 | 2025-03-25 | 2025-04-04 | 86 |  |  | 1 | 77 | 1 |
| 786 | 1.2.7.2.11 | SF Operational Documentation (inc. Training) Optimization Communication Management Plan |  | 1d | 2025-01-08 A | 2025-01-08 A | 785 | 100% |  |  |  | James Fleming [6.25%] | 0.5h | 0.5h | No | No | No | No | No | Yes | 2025-01-08 | 2025-01-08 | 2025-03-25 | 2025-04-04 | 86 |  |  | 1 | 76 | 1 |
| 787 | 1.2.7.2.12 | SF Operational Documentation (inc. Training) Optimization Risk Management Plan |  | 1d | 2025-01-08 A | 2025-01-09 A | 786 | 100% |  |  |  | James Fleming [6.25%] | 0.5h | 0.5h | No | No | No | No | No | Yes | 2025-01-08 | 2025-01-09 | 2025-03-25 | 2025-04-04 | 85 |  |  | 1 | 76 | 1 |
| 788 | 1.2.7.2.13 | SF Operational Documentation (inc. Training) Optimization Schedule |  | 1d | 2025-01-09 A | 2025-01-13 A | 787 | 100% |  |  |  | James Fleming [6.25%] | 0.5h | 0.5h | No | No | No | No | No | Yes | 2025-01-09 | 2025-01-13 | 2025-03-25 | 2025-04-04 | 81 |  |  | 1 | 75 | 1 |
| 789 | 1.2.7.2.14 | SF Operational Documentation (inc. Training) Optimization Detailed Plan Complete | milestone | 0d | 2025-01-13 A | 2025-01-13 A | 788 | 100% |  |  |  | James Fleming |  |  | No | No | No | No | No | Yes | 2025-01-13 | 2025-01-13 | 2025-03-25 | 2025-04-04 | 81 |  |  | 1 | 71 | 1 |

| ID | WBS | Task | Type | Duration | Start | Finish | Predecessors | Complete | Remaining | Total slack | Free slack | Resources | Work | Actual work | Tasks Due this Month | Tasks Due next Month | Tasks Due this week | Tasks Due next Week | Tasks Due Today | Last Tasks | Actual Task Start | Initial Planned Start | Initial Planned Finish | Actual Task Finish | Number1 | Number2 | Task active Day | Start Difference | Finish Difference | Field |
| --- | --- | --- | --- | --- | --- | --- | --- | --- | --- | --- | --- | --- | --- | --- | --- | --- | --- | --- | --- | --- | --- | --- | --- | --- | --- | --- | --- | --- | --- | --- |
| 790 | 1.2.7.3 | **SF Operational Documentation (inc. Training) Optimization Implementation** |  | 174.88d | 2025-01-13 A | 2025-09-15 |  | 41% | 103.18d | 191.16d |  |  | 180h | 112h | No | No | No | No | No | Yes | 2025-01-22 | 2025-01-13 | 2025-09-15 |  |  |  |  |  |  |  |
| 791 | 1.2.7.3.1 | **SF Operational Documentation (inc. Training) Optimization Document Mapping & Consolidation** |  | 102.75d | 2025-01-13 A | 2025-06-04 |  | 98% | 2.45d | 192.88d |  |  | 113h | 112h | No | No | No | No | No | Yes | 2025-01-22 | 2025-01-13 | 2025-06-04 | 2025-01-22 | -1 | -1 |  |  |  |  |
| 792 | 1.2.7.3.1.1 | SF Operational Documentation (inc. Training) Optimization Collect/Map all existing/incumbent documents. |  | 5d | 2025-01-13 A | 2025-01-21 A | 789 | 100% |  |  |  | James Bick | 40h | 40h | No | No | No | No | No | Yes | 2025-01-22 | 2025-01-13 | 2025-01-21 | 2025-01-22 | -1 | -1 | 1 | 9 | 1 | 1 |
| 793 | 1.2.7.3.1.2 | SF Operational Documentation (inc. Training) Optimization Inventory complete |  | 2d | 2025-01-21 A | 2025-01-27 A | 792 | 100% |  |  |  | James Bick [25%] | 4h | 4h | No | No | No | No | No | Yes | 2025-01-22 | 2025-01-21 | 2025-01-27 | 2025-01-22 |  |  | 1 | 1 | -5 | 1 |
| 794 | 1.2.7.3.1.3 | **SF Operational Documentation (inc. Training) Optimization Identify duplicates and obsolete materials.** |  | 52.25d | 2025-03-24 A | 2025-06-04 |  | 97% | 1.49d | 192.88d |  |  | 69h | 68h | No | No | No | No | No | Yes | 2025-01-22 | 2025-03-24 | 2025-06-04 | 2025-01-22 |  |  |  |  |  |  |
| 795 | 1.2.7.3.1.3.1 | SF Operational Documentation (inc. Training) Optimization Document list (inc. forms) with duplicates/obsoletes identified with opportunities for consolidation documented |  | 4d | 2025-03-24 A | 2025-04-01 A | 793FS+40d | 100% |  |  |  | James Bick [25%] | 8h | 8h | No | No | No | No | No | Yes | 2025-01-22 | 2025-01-28 | 2025-02-03 | 2025-01-22 |  |  | 1 | -6 | -12 | 1 |
| 796 | 1.2.7.3.1.3.2 | SF Operational Documentation (inc. Training) Optimization Consolidate relevant information. |  | 30d | 2025-04-01 A | 2025-06-04 A | 795 | 100% |  |  |  | James Bick [25%] | 60h | 60h | No | No | No | No | No | Yes | 2025-01-22 | 2025-02-04 | 2025-03-18 | 2025-01-22 |  |  | 1 | -13 | -55 | 1 |
| 797 | 1.2.7.3.1.3.3 | SF Operational Documentation (inc. Training) Optimization Checkpoint Review meeting. |  | 1d | 2025-06-04 | 2025-06-04 | 796 |  |  | 192.38d | 0d | James Fleming [12.5%] | 1h |  | No | No | No | No | No | Yes |  | 2025-03-19 | 2025-03-19 |  |  |  |  |  |  |  |
| 798 | 1.2.7.3.2 | **SF Operational Documentation (inc. Training) Optimization Streamlining** |  | 67.12d | 2025-06-04 A | 2025-09-08 |  |  | 67.12d | 191.16d |  |  | 63h |  | No | No | No | No | No | Yes |  | 2025-03-20 | 2025-05-19 |  |  |  |  |  |  |  |
| 799 | 1.2.7.3.2.1 | **SF Operational Documentation (inc. Training) Optimization Create a hierarchical structure with a high-level master document.** |  | 52.56d | 2025-06-04 | 2025-08-18 |  |  |  | 190.81d |  |  | 50h |  | No | No | No | No | No | Yes |  | 2025-03-20 | 2025-05-19 |  | -1 | -1 |  |  |  |  |
| 800 | 1.2.7.3.2.1.1 | SF Operational Documentation (inc. Training) Optimization Merge duplicate forms. |  | 20d | 2025-06-04 | 2025-07-02 | 797 |  |  | 192.88d | 2.06d | James Bick [34.63%] | 40h |  | Yes | No | No | No | No | Yes |  | 2025-03-20 | 2025-04-17 |  |  |  |  |  |  |  |
| 801 | 1.2.7.3.2.1.2 | SF Operational Documentation (inc. Training) Optimization Remove redundant processes. |  | 20d | 2025-07-07 | 2025-08-18 | 800 |  |  | 190.81d | 0d | James Bick [6.25%] | 10h |  | No | Yes | No | No | No | No |  | 2025-04-17 | 2025-05-15 |  | -1 | -1 |  |  |  |  |
| 802 | 1.2.7.3.2.1.3 | SF Operational Documentation (inc. Training) Optimization Form/process merging, redundency removed, obsolesence/change filed completed | milestone | 0d | 2025-08-18 | 2025-08-18 | 801 |  |  | 190.81d | 0d | James Bick |  |  | No | Yes | No | No | No | No |  | 2025-05-15 | 2025-05-15 |  |  |  |  |  |  |  |
| 803 | 1.2.7.3.2.2 | SF Operational Documentation (inc. Training) Optimization Progress review. |  | 1d | 2025-08-18 | 2025-08-19 | 802 |  |  | 190.81d | 0d | James Fleming [12.5%] | 1h |  | No | Yes | No | No | No | No |  | 2025-05-16 | 2025-05-16 |  |  |  |  |  |  |  |
| 804 | 1.2.7.3.2.3 | SF Operational Documentation (inc. Training) Optimization Finalized master document | milestone | 0d | 2025-08-19 A | 2025-08-19 | 803 | 22% | 0d | 190.97d | 0d | James Fleming |  |  | No | Yes | No | No | No | No |  | 2025-05-19 | 2025-05-19 |  |  |  | 1 |  |  | 1 |
| 805 | 1.2.7.3.2.4 | **SF Operational Documentation (inc. Training) Optimization Document Linking & Creation** |  | 13.75d | 2025-08-19 | 2025-09-08 |  |  |  | 190.97d |  |  | 12h |  | No | No | No | No | No | Yes |  | 2025-05-20 | 2025-06-05 |  | -1 | -1 |  |  |  |  |
| 806 | 1.2.7.3.2.4.1 | SF Operational Documentation (inc. Training) Optimization Develop necessary missing documents. |  | 10d | 2025-08-19 | 2025-09-02 | 804 |  |  | 190.97d | 0d | Kurt Parsons [10%] | 8h |  | No | No | No | No | No | No |  | 2025-05-20 | 2025-06-03 |  |  |  |  |  |  |  |
| 807 | 1.2.7.3.2.4.2 | SF Operational Documentation (inc. Training) Optimization Link documents within the master document for easy navigation. |  | 2d | 2025-09-02 | 2025-09-08 | 806 |  |  | 190.97d | 0d | James Bick [25%] | 4h |  | No | No | No | No | No | No |  | 2025-06-03 | 2025-06-04 |  | -1 | -1 |  |  |  |  |
| 808 | 1.2.7.3.2.4.3 | SF Operational Documentation (inc. Training) Optimization Full document linking complete | milestone | 0d | 2025-09-08 | 2025-09-08 | 807 |  |  | 191.16d | 0d | James Bick |  |  | No | No | No | No | No | No |  | 2025-06-05 | 2025-06-05 |  |  |  |  |  |  |  |
| 809 | 1.2.7.3.3 | **SF Operational Documentation (inc. Training) Optimization Validation & Quality Control Plan** |  | 5d | 2025-09-08 | 2025-09-15 |  |  |  | 191.16d |  |  | 4h |  | No | No | No | No | No | Yes |  | 2025-06-05 | 2025-06-13 |  | -1 | -1 |  |  |  |  |
| 810 | 1.2.7.3.3.1 | SF Operational Documentation (inc. Training) Optimization Review & testing the entire document set. |  | 5d | 2025-09-08 | 2025-09-15 | 808 |  |  | 191.16d | 0d | Martyn Price [10%] | 4h |  | No | No | No | No | No | No |  | 2025-06-05 | 2025-06-12 |  | -1 | -1 |  |  |  |  |
| 811 | 1.2.7.3.3.2 | SF Operational Documentation (inc. Training) Optimization Perform quality checks and ensure stakeholder approval. | milestone | 0d | 2025-09-15 | 2025-09-15 | 810 |  |  | 191.16d | 0d | Martyn Price [10%] |  |  | No | No | No | No | No | No |  | 2025-06-13 | 2025-06-13 |  | -1 | -1 |  |  |  |  |
| 812 | 1.2.7.4 | **SF Operational Documentation (inc. Training) Optimization Training Plan** |  | 16d | 2025-09-15 | 2025-10-07 |  |  |  | 191.16d |  |  | 20h |  | No | No | No | No | No | Yes |  | 2025-06-16 | 2025-07-08 |  |  |  |  |  |  |  |
| 813 | 1.2.7.4.1 | SF Operational Documentation (inc. Training) Optimization Roll out the new documentation. |  | 10d | 2025-09-15 | 2025-09-29 | 811 |  |  | 191.16d | 0d | Lois Lee [10%] | 8h |  | No | No | No | No | No | No |  | 2025-06-16 | 2025-06-30 |  | -1 | -1 |  |  |  |  |
| 814 | 1.2.7.4.2 | SF Operational Documentation (inc. Training) Optimization upload to CHEOPs/OSR |  | 5d | 2025-09-29 | 2025-10-06 | 813 |  |  | 191.16d | 0d | Lois Lee [10%] | 4h |  | No | No | No | No | No | No |  | 2025-06-30 | 2025-07-07 |  |  |  |  |  |  |  |
| 815 | 1.2.7.4.3 | SF Operational Documentation (inc. Training) Optimization Implementation & Training Plan |  | 1d | 2025-10-06 | 2025-10-07 | 814 |  |  | 191.16d | 0d | Kurt Parsons | 8h |  | No | No | No | No | No | No |  | 2025-07-07 | 2025-07-07 |  |  |  |  |  |  |  |
| 816 | 1.2.7.4.4 | SF Operational Documentation (inc. Training) Optimization Implementation & Training Complete | milestone | 0d | 2025-10-07 | 2025-10-07 | 815 |  |  | 195.12d |  | Kurt Parsons |  |  | No | No | No | No | No | No |  | 2025-07-08 | 2025-07-08 |  |  |  |  |  |  |  |

| ID | WBS | Task | Type | Duration | Start | Finish | Predecessors | Complete | Remaining | Total slack | Free slack | Resources | Work | Actual work | Tasks Due this Month | Tasks Due next Month | Tasks Due this week | Tasks Due next Week | Tasks Due Today | Last Tasks | Initial Planned Start | Initial Planned Finish | Task active Day | Field | Number1 | Number2 | Probability | Impact |
| --- | --- | --- | --- | --- | --- | --- | --- | --- | --- | --- | --- | --- | --- | --- | --- | --- | --- | --- | --- | --- | --- | --- | --- | --- | --- | --- | --- | --- |
| 817 | 1.2.7.5 | **SF Operational Documentation (inc. Training) Optimization Project Closure** |  | 4.12d | 2025-10-07 | 2025-10-13 |  |  |  | 191d |  |  | 8h |  | No | No | No | No | No | Yes | 2025-07-09 | 2025-07-15 |  |  |  |  |  |  |
| 818 | 1.2.7.5.1 | SF Operational Documentation (inc. Training) Optimization Lessons Learnt Meeting |  | 1d | 2025-10-07 | 2025-10-08 | 815 |  |  | 191d | 0d | James Fleming [12.5%] | 1h |  | No | No | No | No | No | No | 2025-07-09 | 2025-07-09 |  |  |  |  |  |  |
| 819 | 1.2.7.5.2 | SF Operational Documentation (inc. Training) Optimization Lessons Learnt Document Complete |  | 1d | 2025-10-08 | 2025-10-08 | 818 |  |  | 191d | 0d | James Fleming [50%] | 4h |  | No | No | No | No | No | No | 2025-07-10 | 2025-07-10 |  |  |  |  |  |  |
| 820 | 1.2.7.5.3 | SF Operational Documentation (inc. Training) Optimization Lessons Learnt Sign off |  | 1d | 2025-10-08 | 2025-10-09 | 819 |  |  | 191.03d | 0d | James Fleming [12.5%] | 1h |  | No | No | No | No | No | No | 2025-07-11 | 2025-07-11 |  |  |  |  |  |  |
| 821 | 1.2.7.5.4 | SF Operational Documentation (inc. Training) Optimization Project Documentation Closed Down |  | 1d | 2025-10-09 | 2025-10-13 | 820 |  |  | 191d | 0d | James Fleming [25%] | 2h |  | No | No | No | No | No | No | 2025-07-14 | 2025-07-14 |  |  |  |  |  |  |
| 822 | 1.2.7.5.5 | SF Operational Documentation (inc. Training) Optimization Project Closed | milestone | 0d | 2025-10-13 | 2025-10-13 | 821 |  |  | 191d |  | James Fleming |  |  | No | No | No | No | No | No | 2025-07-15 | 2025-07-15 |  |  |  |  |  |  |
| 823 | 1.2.8 | **LIMs Roll Out** |  | 168.97d | 2025-04-02 A | 2025-11-24 |  | 5% | 159.84d | 160.22d |  |  | 36h | 7.7h | No | No | No | No | No | Yes | 2025-03-31 | 2025-08-12 | 1 | 1 |  |  |  |  |
| 824 | 1.2.8.1 | **Phase 1 LIMs Roll Out Initiation** |  | 53.97d | 2025-04-02 A | 2025-06-16 |  | 35% | 35.08d | 275.22d |  |  | 36h | 7.7h | No | No | No | No | No | Yes | 2025-03-31 | 2025-04-09 |  |  |  |  |  |  |
| 825 | 1.2.8.1.1 | **LIMs Roll Out Outline PID** |  | 6.62d | 2025-04-02 A | 2025-04-10 A |  | 100% |  |  |  |  | 7h | 7h | No |  |  |  |  |  | 2025-03-31 | 2025-04-09 |  |  |  |  |  |  |
| 826 | 1.2.8.1.1.1 | LIMs Roll Out High Level Scope and Objectives |  | 1d | 2025-04-02 A | 2025-04-02 A | 703 | 100% |  |  |  | James Fleming [12.5%] | 1h | 1h | No | No | No | No | No | Yes | 2025-03-31 | 2025-04-01 | 1 | 1 | -1 | -1 | 3 | 3 |
| 827 | 1.2.8.1.1.2 | LIMs Roll Out Initial Stakeholder Identification |  | 1d | 2025-04-02 A | 2025-04-03 A | 826 | 100% |  |  |  | James Fleming [12.5%] | 1h | 1h | No | No | No | No | No | Yes | 2025-04-01 | 2025-04-02 | 1 | 1 | -1 | -1 |  |  |
| 828 | 1.2.8.1.1.3 | LIMs Roll Out Prelim Resource Allocation |  | 1d | 2025-04-03 A | 2025-04-07 A | 827 | 100% |  |  |  | James Fleming [12.5%] | 1h | 1h | No | No | No | No | No | Yes | 2025-04-02 | 2025-04-02 | 1 | 1 | -1 | -1 |  |  |
| 829 | 1.2.8.1.1.4 | LIMs Roll Out Prelim Budget & Schedule |  | 1d | 2025-04-07 A | 2025-04-08 A | 828 | 100% |  |  |  | James Fleming [12.5%] | 1h | 1h | No | No | No | No | No | Yes | 2025-04-02 | 2025-04-03 | 1 | 1 | -1 | -1 |  |  |
| 830 | 1.2.8.1.1.5 | LIMs Roll Out Feasibility Study |  | 1d | 2025-04-08 A | 2025-04-08 A | 829 | 100% |  |  |  | James Fleming [12.5%] | 1h | 1h | No | No | No | No | No | Yes | 2025-04-03 | 2025-04-07 | 1 | 1 | -1 | -1 |  |  |
| 831 | 1.2.8.1.1.6 | LIMs Roll Out Preliminary Risk Assessment |  | 1d | 2025-04-09 A | 2025-04-09 A | 830 | 100% |  |  |  | James Fleming [12.5%] | 1h | 1h | No | No | No | No | No | Yes | 2025-04-07 | 2025-04-08 | 1 | 1 | -1 | -1 |  |  |
| 832 | 1.2.8.1.1.7 | LIMs Roll Out Prelim Schedule |  | 1d | 2025-04-09 A | 2025-04-10 A | 831 | 100% |  |  |  | James Fleming [12.5%] | 1h | 1h | No | No | No | No | No | Yes | 2025-04-08 | 2025-04-09 | 1 | 1 | -1 | -1 |  |  |
| 833 | 1.2.8.1.2 | **Phase 2 - LIMs Roll Out Planning** |  | 47.34d | 2025-04-10 A | 2025-06-16 |  | 3% | 46.16d | 275.22d |  |  | 29h | 0.7h | No |  |  |  |  |  | 2025-04-09 | 2025-04-29 |  |  |  |  |  |  |
| 834 | 1.2.8.1.2.1 | LIMs Roll Out SoW Approved | milestone | 0d | 2025-05-22 | 2025-05-22 | 832FS+30d |  |  | 0d |  | James Fleming [9%]; Scott Niedzwiecki [1%]; Kurtis Parsons [1%]; Lloyd Harrington [1%]; Josh Avent [1%] |  |  | No | No | No | No | No | Yes | 2025-04-29 | 2025-04-29 |  |  |  |  |  |  |
| 835 | 1.2.8.1.2.2 | LIMs Roll Out Thermo Fischer Proposal Approved | milestone | 0d | 2025-06-12 | 2025-06-12 | 834FS+15d |  |  | 0d |  | James Fleming [9%]; Scott Niedzwiecki [1%]; Kurtis Parsons [1%]; Lloyd Harrington [1%]; Josh Avent [1%] |  |  | No | No | No | No | No | Yes | 2025-04-29 | 2025-04-29 |  |  |  |  |  |  |
| 836 | 1.2.8.1.2.3 | LIMs Roll Out Detailed Project Plan |  | 1d | 2025-04-10 A | 2025-06-13 | 835 | 10% | 0.9d | 276.76d |  | James Fleming [25%] | 2h | 0.2h | No | No | No | No | No | Yes | 2025-04-09 | 2025-04-10 | 1 | 1 | -1 | -1 |  |  |
| 837 | 1.2.8.1.2.4 | LIMs Roll Out Detailed Scope |  | 1d | 2025-04-14 A | 2025-06-13 | 835 | 10% | 0.9d | 276.76d |  | James Fleming [25%] | 2h | 0.2h | No | No | No | No | No | Yes | 2025-04-10 | 2025-04-14 | 1 | 1 | -1 | -1 |  |  |
| 838 | 1.2.8.1.2.5 | LIMs Roll Out Detailed Resource Plan |  | 1d | 2025-04-14 A | 2025-06-13 | 835 | 5% | 0.95d | 276.71d |  | James Fleming [25%] | 2h | 0.1h | No | No | No | No | No | Yes | 2025-04-14 | 2025-04-15 | 1 | 1 | -1 | -1 |  |  |
| 839 | 1.2.8.1.2.6 | LIMs Roll Out Stakeholder and Team Alignment |  | 1d | 2025-04-15 A | 2025-06-13 | 835 | 5% | 0.95d | 276.71d |  | James Fleming [25%] | 2h | 0.1h | No | No | No | No | No | Yes | 2025-04-15 | 2025-04-16 | 1 | 1 | -1 | -1 |  |  |
| 840 | 1.2.8.1.2.7 | LIMs Roll Out Roles & Responsibilities (RACI) |  | 1d | 2025-04-16 A | 2025-06-13 | 835 | 5% | 0.95d | 276.71d |  | James Fleming [25%] | 2h | 0.1h | No | No | No | No | No | Yes | 2025-04-16 | 2025-04-16 | 1 | 1 | -1 | -1 |  |  |
| 841 | 1.2.8.1.2.8 | LIMs Roll Out WBS |  | 1d | 2025-06-12 | 2025-06-16 | 835 |  |  | 276.16d |  | James Fleming [25%] | 2h |  | No | No | No | No | No | Yes | 2025-04-16 | 2025-04-17 |  |  | -1 | -1 |  |  |
| 842 | 1.2.8.1.2.9 | LIMs Roll Out PBS |  | 1d | 2025-06-12 | 2025-06-16 | 835 |  |  | 276.16d |  | James Fleming [25%] | 2h |  | No | No | No | No | No | Yes | 2025-04-17 | 2025-04-21 |  |  | -1 | -1 |  |  |
| 843 | 1.2.8.1.2.10 | LIMs Roll Out Procurement Plan |  | 1d | 2025-06-12 | 2025-06-16 | 835 |  |  | 276.16d |  | James Fleming [25%] | 2h |  | No | No | No | No | No | Yes | 2025-04-21 | 2025-04-22 |  |  | -1 | -1 |  |  |
| 844 | 1.2.8.1.2.11 | LIMs Roll Out CBS |  | 1d | 2025-06-12 | 2025-06-16 | 835 |  |  | 276.16d |  | James Fleming [25%] | 2h |  | No | No | No | No | No | Yes | 2025-04-22 | 2025-04-22 |  |  | -1 | -1 |  |  |
| 845 | 1.2.8.1.2.12 | LIMs Roll Out detailed Quality Plan |  | 1d | 2025-06-12 | 2025-06-13 | 835 |  |  | 276.56d |  | Martyn Price [50%] | 4h |  | No | No | No | No | No | Yes | 2025-04-22 | 2025-04-23 |  |  | -1 | -1 |  |  |
| 846 | 1.2.8.1.2.13 | LIMs Roll Out detailed Communication Management Plan |  | 1d | 2025-06-12 | 2025-06-16 | 835 |  |  | 276.16d |  | James Fleming [25%] | 2h |  | No | No | No | No | No | Yes | 2025-04-23 | 2025-04-24 |  |  | -1 | -1 |  |  |
| 847 | 1.2.8.1.2.14 | LIMs Roll Out detailed Risk Management Plan |  | 1d | 2025-06-12 | 2025-06-16 | 835 |  |  | 276.16d |  | James Fleming [25%] | 2h |  | No | No | No | No | No | Yes | 2025-04-24 | 2025-04-28 |  |  | -1 | -1 |  |  |
| 848 | 1.2.8.1.2.15 | LIMs Roll Out detailed Schedule |  | 1d | 2025-06-12 | 2025-06-16 | 835 |  |  | 160.31d | 0d | James Fleming [25%] | 2h |  | No | No | No | No | No | Yes | 2025-04-28 | 2025-04-28 |  |  | -1 | -1 |  |  |

Notes:
- 826: Risk: If resource does not plan in this work during available time then delays to delivering scope and starting the project on time could occur / Risk Mitigation: Using the project PID satisfactory scope can be create regardless of resource availibility

| ID | WBS | Task | Type | Duration | Start | Finish | Predecessors | Total slack | Free slack | Resources | Work | Tasks Due this Month | Initial Planned Start | Initial Planned Finish | Tasks Due next Month | Tasks Due this week | Tasks Due next Week | Tasks Due Today | Last Tasks | Number1 | Number2 |
| --- | --- | --- | --- | --- | --- | --- | --- | --- | --- | --- | --- | --- | --- | --- | --- | --- | --- | --- | --- | --- | --- |
| 849 | 1.2.8.1.2.16 | **LIMs Roll Out Gate 2 Approval to Start Execution** |  | 0.94d | 2025-06-16 | 2025-06-16 |  | 160.31d |  |  | 1h | No | 2025-04-29 | 2025-04-29 |  |  |  |  |  |  |  |
| 850 | 1.2.8.1.2.16.1 | LIMs Roll Out Detailed Project Plan Team Review |  | 1d | 2025-06-16 | 2025-06-16 | 848 | 160.22d | 0d | James Fleming [8.93%]; Scott Niedzwiecki [1.06%]; Kurtis Parsons [1.06%]; Lloyd Harrington [1.06%]; Josh Avent [1.06%] | 1h | No | 2025-04-29 | 2025-04-29 | No | No | No | No | Yes | -1 | -1 |
| 851 | 1.2.8.1.2.16.2 | LIMs Roll Out Detailed Project Plan complete | milestone | 0d | 2025-06-16 | 2025-06-16 | 850 | 275.22d |  | James Fleming [9%]; Scott Niedzwiecki [1%]; Kurtis Parsons [1%]; Lloyd Harrington [1%]; Josh Avent [1%] |  | No | 2025-04-29 | 2025-04-29 | No | No | No | No | Yes |  |  |
| 852 | 1.2.8.1.2.16.3 | LIMs Roll Out Approval to Start Execution Complete | milestone | 0d | 2025-06-16 | 2025-06-16 | 850 | 160.22d | 0d | James Fleming |  | No | 2025-04-29 | 2025-04-29 | No | No | No | No | Yes | -1 | -1 |
| 853 | 1.2.8.2 | **Phase 3 - LIMs Roll Out Design** |  | 13d | 2025-06-16 | 2025-07-03 |  | 160.22d |  |  |  | Yes | 2025-04-29 | 2025-05-19 |  |  |  |  |  |  |  |
| 854 | 1.2.8.2.1 | LIMs Roll Out stakeholder workshops to gather design requirements. |  | 1d | 2025-06-16 | 2025-06-17 | 852 | 160.22d | 0d |  |  | No | 2025-04-29 | 2025-04-30 | No | No | No | No | Yes | -1 | -1 |
| 855 | 1.2.8.2.2 | LIMs Roll Out Research applicable design standards and regulations. |  | 1d | 2025-06-17 | 2025-06-18 | 854 | 160.22d | 0d |  |  | No | 2025-04-30 | 2025-05-01 | No | No | No | No | Yes | -1 | -1 |
| 856 | 1.2.8.2.3 | LIMs Roll Out Create initial conceptual designs. |  | 1d | 2025-06-18 | 2025-06-19 | 855 | 160.22d | 0d |  |  | No | 2025-05-01 | 2025-05-02 | No | No | No | No | Yes | -1 | -1 |
| 857 | 1.2.8.2.4 | LIMs Roll Out Develop detailed drawings or CAD models. |  | 1d | 2025-06-19 | 2025-06-20 | 856 | 160.22d | 0d |  |  | No | 2025-05-02 | 2025-05-05 | No | No | No | No | Yes | -1 | -1 |
| 858 | 1.2.8.2.5 | LIMs Roll Out Draft technical specifications for the design. |  | 1d | 2025-06-20 | 2025-06-23 | 857 | 160.22d | 0d |  |  | No | 2025-05-05 | 2025-05-06 | No | No | No | No | Yes | -1 | -1 |
| 859 | 1.2.8.2.6 | LIMs Roll Out Assess design feasibility and constraints. |  | 1d | 2025-06-23 | 2025-06-24 | 858 | 160.22d | 0d |  |  | No | 2025-05-06 | 2025-05-07 | No | No | No | No | Yes | -1 | -1 |
| 860 | 1.2.8.2.7 | LIMs Roll Out Test preliminary designs against requirements and standards. |  | 1d | 2025-06-24 | 2025-06-25 | 859 | 160.22d | 0d |  |  | No | 2025-05-07 | 2025-05-08 | No | No | No | No | Yes | -1 | -1 |
| 861 | 1.2.8.2.8 | LIMs Roll Out Consult with subject matter experts (SMEs) or external advisors. |  | 1d | 2025-06-25 | 2025-06-26 | 860 | 160.22d | 0d |  |  | No | 2025-05-08 | 2025-05-09 | No | No | No | No | Yes | -1 | -1 |
| 862 | 1.2.8.2.9 | LIMs Roll Out Revise designs based on feedback from stakeholders. |  | 1d | 2025-06-26 | 2025-06-27 | 861 | 160.22d | 0d |  |  | No | 2025-05-09 | 2025-05-12 | No | No | No | No | Yes | -1 | -1 |
| 863 | 1.2.8.2.10 | LIMs Roll Out Prepare a bill of materials (BOM) if applicable. |  | 1d | 2025-06-27 | 2025-06-30 | 862 | 160.22d | 0d |  |  | No | 2025-05-12 | 2025-05-13 | No | No | No | No | Yes | -1 | -1 |
| 864 | 1.2.8.2.11 | LIMs Roll Out Develop prototypes or mock-ups (physical or digital). |  | 1d | 2025-06-30 | 2025-07-01 | 863 | 160.22d | 0d |  |  | Yes | 2025-05-13 | 2025-05-14 | No | No | No | No | Yes | -1 | -1 |
| 865 | 1.2.8.2.12 | LIMs Roll Out Conduct internal design review meetings. |  | 1d | 2025-07-01 | 2025-07-02 | 864 | 160.22d | 0d |  |  | Yes | 2025-05-14 | 2025-05-15 | No | No | No | No | Yes | -1 | -1 |
| 866 | 1.2.8.2.13 | **Gate 3 LIMs Roll Out Approval to Start Development** |  | 1d | 2025-07-02 | 2025-07-03 |  | 160.22d |  |  |  | Yes | 2025-05-15 | 2025-05-19 | No | No | No | No | Yes |  |  |
| 867 | 1.2.8.2.13.1 | LIMs Roll Out Finalize the approved design package Team Review | milestone | 0d | 2025-07-02 | 2025-07-02 | 865 | 160.22d | 0d |  |  | Yes | 2025-05-15 | 2025-05-16 | No | No | No | No | Yes | -1 | -1 |
| 868 | 1.2.8.2.13.2 | LIMs Roll Out Approval to Start Development Complete |  | 1d | 2025-07-02 | 2025-07-03 | 867 | 160.22d | 0d |  |  | Yes | 2025-05-16 | 2025-05-19 | No | No | No | No | Yes | -1 | -1 |
| 869 | 1.2.8.3 | **Phase 4 - LIMS Roll Out Development** |  | 15d | 2025-07-03 | 2025-07-24 |  | 160.22d |  |  |  | Yes | 2025-05-19 | 2025-06-10 |  |  |  |  |  |  |  |
| 870 | 1.2.8.3.1 | LIMs Roll Out Develop detailed plans and schedules for execution. |  | 1d | 2025-07-03 | 2025-07-04 | 868 | 160.22d | 0d |  |  | Yes | 2025-05-19 | 2025-05-20 | No | No | No | No | Yes | -1 | -1 |
| 871 | 1.2.8.3.2 | LIMs Roll Out Allocate resources and assign tasks to team members. |  | 1d | 2025-07-04 | 2025-07-07 | 870 | 160.22d | 0d |  |  | Yes | 2025-05-20 | 2025-05-21 | No | No | No | No | Yes | -1 | -1 |
| 872 | 1.2.8.3.3 | LIMs Roll Out Conduct kickoff meetings to align all stakeholders. |  | 1d | 2025-07-07 | 2025-07-08 | 871 | 160.22d | 0d |  |  | Yes | 2025-05-21 | 2025-05-22 | No | No | No | No | Yes | -1 | -1 |
| 873 | 1.2.8.3.4 | LIMs Roll Out Procure necessary materials and equipment. |  | 1d | 2025-07-08 | 2025-07-09 | 872 | 160.22d | 0d |  |  | Yes | 2025-05-22 | 2025-05-23 | No | No | No | No | Yes | -1 | -1 |
| 874 | 1.2.8.3.5 | LIMs Roll Out Create prototypes or initial versions of deliverables. |  | 1d | 2025-07-09 | 2025-07-10 | 873 | 160.22d | 0d |  |  | Yes | 2025-05-23 | 2025-05-26 | No | No | No | No | Yes | -1 | -1 |
| 875 | 1.2.8.3.6 | LIMs Roll Out Conduct initial testing and validation of prototypes. |  | 1d | 2025-07-10 | 2025-07-11 | 874 | 160.22d | 0d |  |  | Yes | 2025-05-26 | 2025-05-27 | No | No | No | No | Yes | -1 | -1 |
| 876 | 1.2.8.3.7 | LIMs Roll Out Implement iterative development cycles (e.g., agile sprints). |  | 1d | 2025-07-11 | 2025-07-14 | 875 | 160.22d | 0d |  |  | Yes | 2025-05-27 | 2025-05-28 | No | No | No | No | Yes | -1 | -1 |
| 877 | 1.2.8.3.8 | LIMs Roll Out Monitor and control the execution of tasks. |  | 1d | 2025-07-14 | 2025-07-15 | 876 | 160.22d | 0d |  |  | Yes | 2025-05-28 | 2025-05-29 | No | No | No | No | Yes | -1 | -1 |
| 878 | 1.2.8.3.9 | LIMs Roll Out Collaborate and communicate with team members and stakeholders. |  | 1d | 2025-07-15 | 2025-07-16 | 877 | 160.22d | 0d |  |  | Yes | 2025-05-29 | 2025-05-30 | No | No | No | No | Yes | -1 | -1 |
| 879 | 1.2.8.3.10 | LIMs Roll Out Perform quality assurance and control activities. |  | 1d | 2025-07-16 | 2025-07-17 | 878 | 160.22d | 0d |  |  | Yes | 2025-05-30 | 2025-06-02 | No | No | No | No | Yes | -1 | -1 |
| 880 | 1.2.8.3.11 | LIMs Roll Out Manage project risks and implement mitigation strategies. |  | 1d | 2025-07-17 | 2025-07-18 | 879 | 160.22d | 0d |  |  | Yes | 2025-06-02 | 2025-06-03 | No | No | No | No | Yes | -1 | -1 |
| 881 | 1.2.8.3.12 | LIMs Roll Out Document progress and update project management plans. |  | 1d | 2025-07-18 | 2025-07-21 | 880 | 160.22d | 0d |  |  | Yes | 2025-06-03 | 2025-06-04 | No | Yes | No | No | Yes | -1 | -1 |
| 882 | 1.2.8.3.13 | LIMs Roll Out Conduct regular progress review meetings. |  | 1d | 2025-07-21 | 2025-07-22 | 881 | 160.22d | 0d |  |  | Yes | 2025-06-04 | 2025-06-05 | No | Yes | No | No | Yes | -1 | -1 |
| 883 | 1.2.8.3.14 | LIMs Roll Out Adjust plans based on feedback and changing requirements. |  | 1d | 2025-07-22 | 2025-07-23 | 882 | 160.22d | 0d |  |  | Yes | 2025-06-05 | 2025-06-06 | No | Yes | No | No | Yes | -1 | -1 |

| ID | WBS | Task | Type | Duration | Start | Finish | Predecessors | Total slack | Free slack | Tasks Due this Month | Tasks Due next Month | Tasks Due this week | Tasks Due next Week | Tasks Due Today | Last Tasks | Initial Planned Start | Initial Planned Finish | Number1 | Number2 |
| --- | --- | --- | --- | --- | --- | --- | --- | --- | --- | --- | --- | --- | --- | --- | --- | --- | --- | --- | --- |
| 884 | 1.2.8.3.15 | **Gate 4 LIMs Roll Out Approval to Start Testing** |  | 1d | 2025-07-23 | 2025-07-24 |  | 160.22d |  | Yes | No | No | No | No | Yes | 2025-06-06 | 2025-06-10 |  |  |
| 885 | 1.2.8.3.15.1 | LIMs Roll Out Finalize the approved design package Team Review | milestone | 0d | 2025-07-23 | 2025-07-23 | 883 | 160.22d | 0d | Yes | No | Yes | No | No | Yes | 2025-06-06 | 2025-06-09 | -1 | -1 |
| 886 | 1.2.8.3.15.2 | LIMs Roll Out Approval to Start Testing Complete |  | 1d | 2025-07-23 | 2025-07-24 | 885 | 160.22d | 0d | Yes | No | Yes | No | No | No | 2025-06-09 | 2025-06-10 | -1 | -1 |
| 887 | 1.2.8.4 | **Phase 5 - LIMs Roll Out Testing** |  | 16d | 2025-07-24 | 2025-08-15 |  | 160.22d |  | No |  |  |  |  |  | 2025-06-10 | 2025-07-03 |  |  |
| 888 | 1.2.8.4.1 | LIMs Roll Out Develop detailed testing plans and schedules. |  | 1d | 2025-07-24 | 2025-07-25 | 886 | 160.22d | 0d | Yes | No | Yes | No | Yes | No | 2025-06-10 | 2025-06-11 | -1 | -1 |
| 889 | 1.2.8.4.2 | LIMs Roll Out Prepare test environments and gather necessary tools and equipment. |  | 1d | 2025-07-25 | 2025-07-28 | 888 | 160.22d | 0d | Yes | No | No | Yes | No | No | 2025-06-11 | 2025-06-12 | -1 | -1 |
| 890 | 1.2.8.4.3 | LIMs Roll Out Create test cases and test scripts based on requirements and specifications. |  | 1d | 2025-07-28 | 2025-07-29 | 889 | 160.22d | 0d | Yes | No | No | Yes | No | No | 2025-06-12 | 2025-06-13 | -1 | -1 |
| 891 | 1.2.8.4.4 | LIMs Roll Out Conduct unit testing to verify individual components or modules. |  | 1d | 2025-07-29 | 2025-07-30 | 890 | 160.22d | 0d | Yes | No | No | Yes | No | No | 2025-06-13 | 2025-06-16 | -1 | -1 |
| 892 | 1.2.8.4.5 | LIMs Roll Out Perform integration testing to ensure components work together. |  | 1d | 2025-07-30 | 2025-07-31 | 891 | 160.22d | 0d | Yes | No | No | Yes | No | No | 2025-06-16 | 2025-06-17 | -1 | -1 |
| 893 | 1.2.8.4.6 | LIMs Roll Out Execute system testing to validate the complete system’s functionality. |  | 1d | 2025-07-31 | 2025-08-01 | 892 | 160.22d | 0d | No | Yes | No | Yes | No | No | 2025-06-17 | 2025-06-18 | -1 | -1 |
| 894 | 1.2.8.4.7 | LIMs Roll Out Conduct user acceptance testing (UAT) with stakeholders or end users. |  | 1d | 2025-08-01 | 2025-08-04 | 893 | 160.22d | 0d | No | Yes | No | No | No | No | 2025-06-18 | 2025-06-19 | -1 | -1 |
| 895 | 1.2.8.4.8 | LIMs Roll Out Perform performance testing to assess the system's responsiveness and stability. |  | 1d | 2025-08-04 | 2025-08-05 | 894 | 160.22d | 0d | No | Yes | No | No | No | No | 2025-06-19 | 2025-06-20 | -1 | -1 |
| 896 | 1.2.8.4.9 | LIMs Roll Out Carry out security testing to identify and mitigate vulnerabilities. |  | 1d | 2025-08-05 | 2025-08-06 | 895 | 160.22d | 0d | No | Yes | No | No | No | No | 2025-06-20 | 2025-06-23 | -1 | -1 |
| 897 | 1.2.8.4.10 | LIMs Roll Out Log defects and issues encountered during testing. |  | 1d | 2025-08-06 | 2025-08-07 | 896 | 160.22d | 0d | No | Yes | No | No | No | No | 2025-06-23 | 2025-06-24 | -1 | -1 |
| 898 | 1.2.8.4.11 | LIMs Roll Out Collaborate with developers to resolve identified defects. |  | 1d | 2025-08-07 | 2025-08-08 | 897 | 160.22d | 0d | No | Yes | No | No | No | No | 2025-06-24 | 2025-06-25 | -1 | -1 |
| 899 | 1.2.8.4.12 | LIMs Roll Out Retest corrected defects to ensure proper resolution. |  | 1d | 2025-08-08 | 2025-08-11 | 898 | 160.22d | 0d | No | Yes | No | No | No | No | 2025-06-25 | 2025-06-26 | -1 | -1 |
| 900 | 1.2.8.4.13 | LIMs Roll Out Document test results and create test reports. |  | 1d | 2025-08-11 | 2025-08-12 | 899 | 160.22d | 0d | No | Yes | No | No | No | No | 2025-06-26 | 2025-06-27 | -1 | -1 |
| 901 | 1.2.8.4.14 | LIMs Roll Out Review and validate test results with stakeholders. |  | 1d | 2025-08-12 | 2025-08-13 | 900 | 160.22d | 0d | No | Yes | No | No | No | No | 2025-06-27 | 2025-06-30 | -1 | -1 |
| 902 | 1.2.8.4.15 | LIMs Roll Out Obtain formal sign-off on testing phase completion. | milestone | 0d | 2025-08-13 | 2025-08-13 | 901 | 160.22d | 0d | No | Yes | No | No | No | No | 2025-06-30 | 2025-07-01 | -1 | -1 |
| 903 | 1.2.8.4.16 | **Gate 5 LIMs Roll Out Approval to Start Implementation** |  | 2d | 2025-08-13 | 2025-08-15 |  | 160.22d |  | No | No | No | No | No | Yes | 2025-07-01 | 2025-07-03 |  |  |
| 904 | 1.2.8.4.16.1 | LIMs Roll Out Review and validate test results with Team Review |  | 1d | 2025-08-13 | 2025-08-14 | 902 | 160.22d | 0d | No | Yes | No | No | No | No | 2025-07-01 | 2025-07-02 | -1 | -1 |
| 905 | 1.2.8.4.16.2 | LIMs Roll Out Approval to Start Implementation Complete |  | 1d | 2025-08-14 | 2025-08-15 | 904 | 160.22d | 0d | No | Yes | No | No | No | No | 2025-07-02 | 2025-07-03 | -1 | -1 |
| 906 | 1.2.8.5 | **Phase 6 - LIMs Roll Out Implementation** |  | 60d | 2025-08-15 | 2025-11-07 |  | 160.22d |  | No |  |  |  |  |  | 2025-07-03 | 2025-07-25 |  |  |
| 907 | 1.2.8.5.1 | **LIMs Roll Out M&P Lab and SF** |  | 15d | 2025-08-15 | 2025-09-05 |  | 160.22d |  | No | No | No | No | No | Yes |  |  |  |  |
| 908 | 1.2.8.5.1.1 | LIMs Roll Out M&P Lab and SF Finalize and verify all implementation plans. |  | 1d | 2025-08-15 | 2025-08-18 | 905 | 160.22d | 0d | No | Yes | No | No | No | No | 2025-07-03 | 2025-07-04 | -1 | -1 |
| 909 | 1.2.8.5.1.2 | LIMs Roll Out M&P Lab and SF Prepare the deployment environment and ensure readiness. |  | 1d | 2025-08-18 | 2025-08-19 | 908 | 160.22d | 0d | No | Yes | No | No | No | No | 2025-07-04 | 2025-07-07 | -1 | -1 |
| 910 | 1.2.8.5.1.3 | LIMs Roll Out M&P Lab and SF Schedule implementation activities and communicate timelines to stakeholders. |  | 1d | 2025-08-19 | 2025-08-20 | 909 | 160.22d | 0d | No | Yes | No | No | No | No | 2025-07-07 | 2025-07-08 | -1 | -1 |
| 911 | 1.2.8.5.1.4 | LIMs Roll Out M&P Lab and SF Conduct implementation kickoff meetings. |  | 1d | 2025-08-20 | 2025-08-21 | 910 | 160.22d | 0d | No | Yes | No | No | No | No | 2025-07-08 | 2025-07-09 | -1 | -1 |
| 912 | 1.2.8.5.1.5 | LIMs Roll Out M&P Lab and SF Install or deploy project deliverables into the live environment. |  | 1d | 2025-08-21 | 2025-08-22 | 911 | 160.22d | 0d | No | Yes | No | No | No | No | 2025-07-09 | 2025-07-10 | -1 | -1 |
| 913 | 1.2.8.5.1.6 | LIMs Roll Out M&P Lab and SF Migrate data, if necessary. |  | 1d | 2025-08-22 | 2025-08-25 | 912 | 160.22d | 0d | No | Yes | No | No | No | No | 2025-07-10 | 2025-07-11 | -1 | -1 |
| 914 | 1.2.8.5.1.7 | LIMs Roll Out M&P Lab and SF Perform initial setup and configuration of systems or components. |  | 1d | 2025-08-25 | 2025-08-26 | 913 | 160.22d | 0d | No | Yes | No | No | No | No | 2025-07-11 | 2025-07-14 | -1 | -1 |
| 915 | 1.2.8.5.1.8 | LIMs Roll Out M&P Lab and SF Conduct end-user training sessions and provide user documentation. |  | 1d | 2025-08-26 | 2025-08-27 | 914 | 160.22d | 0d | No | Yes | No | No | No | No | 2025-07-14 | 2025-07-15 | -1 | -1 |
| 916 | 1.2.8.5.1.9 | LIMs Roll Out M&P Lab and SF Perform validation tests to ensure proper installation and functionality. |  | 1d | 2025-08-27 | 2025-08-28 | 915 | 160.22d | 0d | No | Yes | No | No | No | No | 2025-07-15 | 2025-07-16 | -1 | -1 |
| 917 | 1.2.8.5.1.10 | LIMs Roll Out M&P Lab and SF Monitor the implementation process and address any issues that arise. |  | 1d | 2025-08-28 | 2025-08-29 | 916 | 160.22d | 0d | No | Yes | No | No | No | No | 2025-07-16 | 2025-07-17 | -1 | -1 |
| 918 | 1.2.8.5.1.11 | LIMs Roll Out M&P Lab and SF Provide user support and troubleshoot any immediate post-implementation problems. |  | 1d | 2025-08-29 | 2025-09-01 | 917 | 160.22d | 0d | No | No | No | No | No | No | 2025-07-17 | 2025-07-18 | -1 | -1 |
| 919 | 1.2.8.5.1.12 | LIMs Roll Out M&P Lab and SF Obtain final acceptance from stakeholders. |  | 1d | 2025-09-01 | 2025-09-02 | 918 | 160.22d | 0d | No | No | No | No | No | No | 2025-07-18 | 2025-07-21 | -1 | -1 |
| 920 | 1.2.8.5.1.13 | LIMs Roll Out M&P Lab and SF Document the implementation process and any lessons learned. |  | 1d | 2025-09-02 | 2025-09-03 | 919 | 160.22d | 0d | No | No | No | No | No | No | 2025-07-21 | 2025-07-22 | -1 | -1 |
| 921 | 1.2.8.5.1.14 | LIMs Roll Out M&P Lab and SF Conduct a post-implementation review to evaluate success and identify improvements. |  | 1d | 2025-09-03 | 2025-09-04 | 920 | 160.22d | 0d | No | No | No | No | No | No | 2025-07-22 | 2025-07-23 | -1 | -1 |

| ID | WBS | Task | Type | Duration | Start | Finish | Predecessors | Total slack | Free slack | Tasks Due this Month | Tasks Due next Month | Tasks Due this week | Tasks Due next Week | Tasks Due Today | Last Tasks | Initial Planned Start | Initial Planned Finish | Number1 | Number2 |
| --- | --- | --- | --- | --- | --- | --- | --- | --- | --- | --- | --- | --- | --- | --- | --- | --- | --- | --- | --- |
| 922 | 1.2.8.5.1.15 | **Gate 6 LIMs Roll Out M&P Lab and SF Approval to Close out Project** |  | 1d | 2025-09-04 | 2025-09-05 |  | 160.22d |  | No | No | No | No | No | Yes | 2025-07-23 | 2025-07-25 |  |  |
| 923 | 1.2.8.5.1.15.1 | LIMs Roll Out M&P Lab and SF Obtain final acceptance from Team Review | milestone | 0d | 2025-09-04 | 2025-09-04 | 921 | 160.22d | 0d | No | No | No | No | No | No | 2025-07-23 | 2025-07-24 | -1 | -1 |
| 924 | 1.2.8.5.1.15.2 | LIMs Roll Out M&P Lab and SF Approval to ose out Project Complete |  | 1d | 2025-09-04 | 2025-09-05 | 923 | 160.22d | 0d | No | No | No | No | No | No | 2025-07-24 | 2025-07-25 | -1 | -1 |
| 925 | 1.2.8.5.2 | **LIMs Roll Out Heat Treatment** |  | 15d | 2025-09-05 | 2025-09-26 |  | 160.22d |  | No | No | No | No | No | Yes |  |  |  |  |
| 926 | 1.2.8.5.2.1 | LIMs Roll Out Heat Treatment Finalize and verify all implementation plans. |  | 1d | 2025-09-05 | 2025-09-08 | 924 | 160.22d | 0d | No | No | No | No | No | No | 2025-07-03 | 2025-07-04 | -1 | -1 |
| 927 | 1.2.8.5.2.2 | LIMs Roll Out Heat Treatment Prepare the deployment environment and ensure readiness. |  | 1d | 2025-09-08 | 2025-09-09 | 926 | 160.22d | 0d | No | No | No | No | No | No | 2025-07-04 | 2025-07-07 | -1 | -1 |
| 928 | 1.2.8.5.2.3 | LIMs Roll Out Heat Treatment Schedule implementation activities and communicate timelines to stakeholders. |  | 1d | 2025-09-09 | 2025-09-10 | 927 | 160.22d | 0d | No | No | No | No | No | No | 2025-07-07 | 2025-07-08 | -1 | -1 |
| 929 | 1.2.8.5.2.4 | LIMs Roll Out Heat Treatment Conduct implementation kickoff meetings. |  | 1d | 2025-09-10 | 2025-09-11 | 928 | 160.22d | 0d | No | No | No | No | No | No | 2025-07-08 | 2025-07-09 | -1 | -1 |
| 930 | 1.2.8.5.2.5 | LIMs Roll Out Heat Treatment Install or deploy project deliverables into the live environment. |  | 1d | 2025-09-11 | 2025-09-12 | 929 | 160.22d | 0d | No | No | No | No | No | No | 2025-07-09 | 2025-07-10 | -1 | -1 |
| 931 | 1.2.8.5.2.6 | LIMs Roll Out Heat Treatment Migrate data, if necessary. |  | 1d | 2025-09-12 | 2025-09-15 | 930 | 160.22d | 0d | No | No | No | No | No | No | 2025-07-10 | 2025-07-11 | -1 | -1 |
| 932 | 1.2.8.5.2.7 | LIMs Roll Out Heat Treatment Perform initial setup and configuration of systems or components. |  | 1d | 2025-09-15 | 2025-09-16 | 931 | 160.22d | 0d | No | No | No | No | No | No | 2025-07-11 | 2025-07-14 | -1 | -1 |
| 933 | 1.2.8.5.2.8 | LIMs Roll Out Heat Treatment Conduct end-user training sessions and provide user documentation. |  | 1d | 2025-09-16 | 2025-09-17 | 932 | 160.22d | 0d | No | No | No | No | No | No | 2025-07-14 | 2025-07-15 | -1 | -1 |
| 934 | 1.2.8.5.2.9 | LIMs Roll Out Heat Treatment Perform validation tests to ensure proper installation and functionality. |  | 1d | 2025-09-17 | 2025-09-18 | 933 | 160.22d | 0d | No | No | No | No | No | No | 2025-07-15 | 2025-07-16 | -1 | -1 |
| 935 | 1.2.8.5.2.10 | LIMs Roll Out Heat Treatment Monitor the implementation process and address any issues that arise. |  | 1d | 2025-09-18 | 2025-09-19 | 934 | 160.22d | 0d | No | No | No | No | No | No | 2025-07-16 | 2025-07-17 | -1 | -1 |
| 936 | 1.2.8.5.2.11 | LIMs Roll Out Heat Treatment Provide user support and troubleshoot any immediate post-implementation problems. |  | 1d | 2025-09-19 | 2025-09-22 | 935 | 160.22d | 0d | No | No | No | No | No | No | 2025-07-17 | 2025-07-18 | -1 | -1 |
| 937 | 1.2.8.5.2.12 | LIMs Roll Out Heat Treatment Obtain final acceptance from stakeholders. |  | 1d | 2025-09-22 | 2025-09-23 | 936 | 160.22d | 0d | No | No | No | No | No | No | 2025-07-18 | 2025-07-21 | -1 | -1 |
| 938 | 1.2.8.5.2.13 | LIMs Roll Out Heat Treatment Document the implementation process and any lessons learned. |  | 1d | 2025-09-23 | 2025-09-24 | 937 | 160.22d | 0d | No | No | No | No | No | No | 2025-07-21 | 2025-07-22 | -1 | -1 |
| 939 | 1.2.8.5.2.14 | LIMs Roll Out Heat Treatment Conduct a post-implementation review to evaluate success and identify improvements. |  | 1d | 2025-09-24 | 2025-09-25 | 938 | 160.22d | 0d | No | No | No | No | No | No | 2025-07-22 | 2025-07-23 | -1 | -1 |
| 940 | 1.2.8.5.2.15 | **Gate 6 LIMs Roll Heat Treatment Approval to Close out Project** |  | 1d | 2025-09-25 | 2025-09-26 |  | 160.22d |  | No | No | No | No | No | Yes | 2025-07-23 | 2025-07-25 |  |  |
| 941 | 1.2.8.5.2.15.1 | LIMs Roll Out Heat Treatment Obtain final acceptance from Team Review | milestone | 0d | 2025-09-25 | 2025-09-25 | 939 | 160.22d | 0d | No | No | No | No | No | No | 2025-07-23 | 2025-07-24 | -1 | -1 |
| 942 | 1.2.8.5.2.15.2 | LIMs Roll Out Heat Treatment Approval to ose out Project Complete |  | 1d | 2025-09-25 | 2025-09-26 | 941 | 160.22d | 0d | No | No | No | No | No | No | 2025-07-24 | 2025-07-25 | -1 | -1 |
| 943 | 1.2.8.5.3 | **LIMs Roll Out Shot Peen** |  | 15d | 2025-09-26 | 2025-10-17 |  | 160.22d |  | No | No | No | No | No | Yes |  |  |  |  |
| 944 | 1.2.8.5.3.1 | LIMs Roll Out Shot Peen Finalize and verify all implementation plans. |  | 1d | 2025-09-26 | 2025-09-29 | 942 | 160.22d | 0d | No | No | No | No | No | No | 2025-07-03 | 2025-07-04 | -1 | -1 |
| 945 | 1.2.8.5.3.2 | LIMs Roll Out Shot Peen Prepare the deployment environment and ensure readiness. |  | 1d | 2025-09-29 | 2025-09-30 | 944 | 160.22d | 0d | No | No | No | No | No | No | 2025-07-04 | 2025-07-07 | -1 | -1 |
| 946 | 1.2.8.5.3.3 | LIMs Roll Out Shot Peen Schedule implementation activities and communicate timelines to stakeholders. |  | 1d | 2025-09-30 | 2025-10-01 | 945 | 160.22d | 0d | No | No | No | No | No | No | 2025-07-07 | 2025-07-08 | -1 | -1 |
| 947 | 1.2.8.5.3.4 | LIMs Roll Out Shot Peen Conduct implementation kickoff meetings. |  | 1d | 2025-10-01 | 2025-10-02 | 946 | 160.22d | 0d | No | No | No | No | No | No | 2025-07-08 | 2025-07-09 | -1 | -1 |
| 948 | 1.2.8.5.3.5 | LIMs Roll Out Shot Peen Install or deploy project deliverables into the live environment. |  | 1d | 2025-10-02 | 2025-10-03 | 947 | 160.22d | 0d | No | No | No | No | No | No | 2025-07-09 | 2025-07-10 | -1 | -1 |
| 949 | 1.2.8.5.3.6 | LIMs Roll Out Shot Peen Migrate data, if necessary. |  | 1d | 2025-10-03 | 2025-10-06 | 948 | 160.22d | 0d | No | No | No | No | No | No | 2025-07-10 | 2025-07-11 | -1 | -1 |
| 950 | 1.2.8.5.3.7 | LIMs Roll Out Shot Peen Perform initial setup and configuration of systems or components. |  | 1d | 2025-10-06 | 2025-10-07 | 949 | 160.22d | 0d | No | No | No | No | No | No | 2025-07-11 | 2025-07-14 | -1 | -1 |
| 951 | 1.2.8.5.3.8 | LIMs Roll Out Shot Peen Conduct end-user training sessions and provide user documentation. |  | 1d | 2025-10-07 | 2025-10-08 | 950 | 160.22d | 0d | No | No | No | No | No | No | 2025-07-14 | 2025-07-15 | -1 | -1 |
| 952 | 1.2.8.5.3.9 | LIMs Roll Out Shot Peen Perform validation tests to ensure proper installation and functionality. |  | 1d | 2025-10-08 | 2025-10-09 | 951 | 160.22d | 0d | No | No | No | No | No | No | 2025-07-15 | 2025-07-16 | -1 | -1 |
| 953 | 1.2.8.5.3.10 | LIMs Roll Out Shot Peen Monitor the implementation process and address any issues that arise. |  | 1d | 2025-10-09 | 2025-10-10 | 952 | 160.22d | 0d | No | No | No | No | No | No | 2025-07-16 | 2025-07-17 | -1 | -1 |
| 954 | 1.2.8.5.3.11 | LIMs Roll Out Shot Peen Provide user support and troubleshoot any immediate post-implementation problems. |  | 1d | 2025-10-10 | 2025-10-13 | 953 | 160.22d | 0d | No | No | No | No | No | No | 2025-07-17 | 2025-07-18 | -1 | -1 |
| 955 | 1.2.8.5.3.12 | LIMs Roll Out Shot Peen Obtain final acceptance from stakeholders. |  | 1d | 2025-10-13 | 2025-10-14 | 954 | 160.22d | 0d | No | No | No | No | No | No | 2025-07-18 | 2025-07-21 | -1 | -1 |
| 956 | 1.2.8.5.3.13 | LIMs Roll Out Shot Peen Document the implementation process and any lessons learned. |  | 1d | 2025-10-14 | 2025-10-15 | 955 | 160.22d | 0d | No | No | No | No | No | No | 2025-07-21 | 2025-07-22 | -1 | -1 |
| 957 | 1.2.8.5.3.14 | LIMs Roll Out Shot Peen Conduct a post-implementation review to evaluate success and identify improvements. |  | 1d | 2025-10-15 | 2025-10-16 | 956 | 160.22d | 0d | No | No | No | No | No | No | 2025-07-22 | 2025-07-23 | -1 | -1 |

| ID | WBS | Task | Type | Duration | Start | Finish | Predecessors | Total slack | Free slack | Tasks Due this Month | Tasks Due next Month | Tasks Due this week | Tasks Due next Week | Tasks Due Today | Last Tasks | Initial Planned Start | Initial Planned Finish | Number1 | Number2 |
| --- | --- | --- | --- | --- | --- | --- | --- | --- | --- | --- | --- | --- | --- | --- | --- | --- | --- | --- | --- |
| 958 | 1.2.8.5.3.15 | **Gate 6 LIMs Roll Shot Peen Approval to Close out Project** |  | 1d | 2025-10-16 | 2025-10-17 |  | 160.22d |  | No | No | No | No | No | Yes | 2025-07-23 | 2025-07-25 |  |  |
| 959 | 1.2.8.5.3.15.1 | LIMs Roll Out Shot Peen Obtain final acceptance from Team Review | milestone | 0d | 2025-10-16 | 2025-10-16 | 957 | 160.22d | 0d | No | No | No | No | No | No | 2025-07-23 | 2025-07-24 | -1 | -1 |
| 960 | 1.2.8.5.3.15.2 | LIMs Roll Out Shot Peen Approval to ose out Project Complete |  | 1d | 2025-10-16 | 2025-10-17 | 959 | 160.22d | 0d | No | No | No | No | No | No | 2025-07-24 | 2025-07-25 | -1 | -1 |
| 961 | 1.2.8.5.4 | **LIMs Roll Out Paint Shop** |  | 15d | 2025-10-17 | 2025-11-07 |  | 160.22d |  | No | No | No | No | No | Yes |  |  |  |  |
| 962 | 1.2.8.5.4.1 | LIMs Roll Out Paint Shop Finalize and verify all implementation plans. |  | 1d | 2025-10-17 | 2025-10-20 | 960 | 160.22d | 0d | No | No | No | No | No | No | 2025-07-03 | 2025-07-04 | -1 | -1 |
| 963 | 1.2.8.5.4.2 | LIMs Roll Out Paint Shop Prepare the deployment environment and ensure readiness. |  | 1d | 2025-10-20 | 2025-10-21 | 962 | 160.22d | 0d | No | No | No | No | No | No | 2025-07-04 | 2025-07-07 | -1 | -1 |
| 964 | 1.2.8.5.4.3 | LIMs Roll Out Paint Shop Schedule implementation activities and communicate timelines to stakeholders. |  | 1d | 2025-10-21 | 2025-10-22 | 963 | 160.22d | 0d | No | No | No | No | No | No | 2025-07-07 | 2025-07-08 | -1 | -1 |
| 965 | 1.2.8.5.4.4 | LIMs Roll Out Paint Shop Conduct implementation kickoff meetings. |  | 1d | 2025-10-22 | 2025-10-23 | 964 | 160.22d | 0d | No | No | No | No | No | No | 2025-07-08 | 2025-07-09 | -1 | -1 |
| 966 | 1.2.8.5.4.5 | LIMs Roll Out Paint Shop Install or deploy project deliverables into the live environment. |  | 1d | 2025-10-23 | 2025-10-24 | 965 | 160.22d | 0d | No | No | No | No | No | No | 2025-07-09 | 2025-07-10 | -1 | -1 |
| 967 | 1.2.8.5.4.6 | LIMs Roll Out Paint Shop Migrate data, if necessary. |  | 1d | 2025-10-24 | 2025-10-27 | 966 | 160.22d | 0d | No | No | No | No | No | No | 2025-07-10 | 2025-07-11 | -1 | -1 |
| 968 | 1.2.8.5.4.7 | LIMs Roll Out Paint Shop Perform initial setup and configuration of systems or components. |  | 1d | 2025-10-27 | 2025-10-28 | 967 | 160.22d | 0d | No | No | No | No | No | No | 2025-07-11 | 2025-07-14 | -1 | -1 |
| 969 | 1.2.8.5.4.8 | LIMs Roll Out Paint Shop Conduct end-user training sessions and provide user documentation. |  | 1d | 2025-10-28 | 2025-10-29 | 968 | 160.22d | 0d | No | No | No | No | No | No | 2025-07-14 | 2025-07-15 | -1 | -1 |
| 970 | 1.2.8.5.4.9 | LIMs Roll Out Paint Shop Perform validation tests to ensure proper installation and functionality. |  | 1d | 2025-10-29 | 2025-10-30 | 969 | 160.22d | 0d | No | No | No | No | No | No | 2025-07-15 | 2025-07-16 | -1 | -1 |
| 971 | 1.2.8.5.4.10 | LIMs Roll Out Paint Shop Monitor the implementation process and address any issues that arise. |  | 1d | 2025-10-30 | 2025-10-31 | 970 | 160.22d | 0d | No | No | No | No | No | No | 2025-07-16 | 2025-07-17 | -1 | -1 |
| 972 | 1.2.8.5.4.11 | LIMs Roll Out Paint Shop Provide user support and troubleshoot any immediate post-implementation problems. |  | 1d | 2025-10-31 | 2025-11-03 | 971 | 160.22d | 0d | No | No | No | No | No | No | 2025-07-17 | 2025-07-18 | -1 | -1 |
| 973 | 1.2.8.5.4.12 | LIMs Roll Out Paint Shop Obtain final acceptance from stakeholders. |  | 1d | 2025-11-03 | 2025-11-04 | 972 | 160.22d | 0d | No | No | No | No | No | No | 2025-07-18 | 2025-07-21 | -1 | -1 |
| 974 | 1.2.8.5.4.13 | LIMs Roll Out Paint Shop Document the implementation process and any lessons learned. |  | 1d | 2025-11-04 | 2025-11-05 | 973 | 160.22d | 0d | No | No | No | No | No | No | 2025-07-21 | 2025-07-22 | -1 | -1 |
| 975 | 1.2.8.5.4.14 | LIMs Roll Out Paint Shop Conduct a post-implementation review to evaluate success and identify improvements. |  | 1d | 2025-11-05 | 2025-11-06 | 974 | 160.22d | 0d | No | No | No | No | No | No | 2025-07-22 | 2025-07-23 | -1 | -1 |
| 976 | 1.2.8.5.4.15 | **Gate 6 LIMs Roll Paint Shop Approval to Close out Project** |  | 1d | 2025-11-06 | 2025-11-07 |  | 160.22d |  | No | No | No | No | No | Yes | 2025-07-23 | 2025-07-25 |  |  |
| 977 | 1.2.8.5.4.15.1 | LIMs Roll Out Paint Shop Obtain final acceptance from Team Review | milestone | 0d | 2025-11-06 | 2025-11-06 | 975 | 160.22d | 0d | No | No | No | No | No | No | 2025-07-23 | 2025-07-24 | -1 | -1 |
| 978 | 1.2.8.5.4.15.2 | LIMs Roll Out Paint Shop Approval to close out Project Complete |  | 1d | 2025-11-06 | 2025-11-07 | 977 | 160.22d | 0d | No | No | No | No | No | No | 2025-07-24 | 2025-07-25 | -1 | -1 |
| 979 | 1.2.8.6 | **Phase 7 - LIMs Roll Out Closure** |  | 11d | 2025-11-07 | 2025-11-24 |  | 160.22d |  | No | No | No | No | No | Yes | 2025-07-25 | 2025-08-12 |  |  |
| 980 | 1.2.8.6.1 | LIMs Roll Out Confirm all project deliverables have been completed and accepted. |  | 1d | 2025-11-07 | 2025-11-10 | 924, 942, 960, 978 | 160.22d | 0d | No | No | No | No | No | No | 2025-07-25 | 2025-07-28 | -1 | -1 |
| 981 | 1.2.8.6.2 | LIMs Roll Out Obtain formal sign-off from stakeholders and clients. |  | 1d | 2025-11-10 | 2025-11-11 | 980 | 160.22d | 0d | No | No | No | No | No | No | 2025-07-28 | 2025-07-29 | -1 | -1 |
| 982 | 1.2.8.6.3 | LIMs Roll Out Release project resources and reassign team members to new tasks or projects. |  | 1d | 2025-11-11 | 2025-11-12 | 981 | 160.22d | 0d | No | No | No | No | No | No | 2025-07-29 | 2025-07-30 | -1 | -1 |
| 983 | 1.2.8.6.4 | LIMs Roll Out Conduct final project performance reviews. |  | 1d | 2025-11-12 | 2025-11-13 | 982 | 160.22d | 0d | No | No | No | No | No | No | 2025-07-30 | 2025-07-31 | -1 | -1 |
| 984 | 1.2.8.6.5 | LIMs Roll Out Archive all project documents and records. |  | 1d | 2025-11-13 | 2025-11-14 | 983 | 160.22d | 0d | No | No | No | No | No | No | 2025-07-31 | 2025-08-01 | -1 | -1 |
| 985 | 1.2.8.6.6 | LIMs Roll Out Complete any remaining administrative tasks, such as closing contracts and settling invoices. |  | 1d | 2025-11-14 | 2025-11-17 | 984 | 160.22d | 0d | No | No | No | No | No | No | 2025-08-01 | 2025-08-04 | -1 | -1 |
| 986 | 1.2.8.6.7 | LIMs Roll Out Conduct a post-project review or "lessons learned" session. |  | 1d | 2025-11-17 | 2025-11-18 | 985 | 160.22d | 0d | No | No | No | No | No | No | 2025-08-04 | 2025-08-05 | -1 | -1 |
| 987 | 1.2.8.6.8 | LIMs Roll Out Document lessons learned and best practices. |  | 1d | 2025-11-18 | 2025-11-19 | 986 | 160.22d | 0d | No | No | No | No | No | No | 2025-08-05 | 2025-08-06 | -1 | -1 |
| 988 | 1.2.8.6.9 | LIMs Roll Out Prepare a final project report summarizing the project's achievements, challenges, and outcomes. |  | 1d | 2025-11-19 | 2025-11-20 | 987 | 160.22d | 0d | No | No | No | No | No | No | 2025-08-06 | 2025-08-07 | -1 | -1 |
| 989 | 1.2.8.6.10 | LIMs Roll Out Celebrate project completion and recognize the contributions of the project team. |  | 1d | 2025-11-20 | 2025-11-21 | 988 | 160.22d | 0d | No | No | No | No | No | No | 2025-08-07 | 2025-08-08 | -1 | -1 |

| ID | WBS | Task | Type | Duration | Start | Finish | Predecessors | Total slack | Free slack | Constraint | Resources | Work | Tasks Due this Month | Tasks Due next Month | Tasks Due this week | Tasks Due next Week | Tasks Due Today | Last Tasks | Initial Planned Start | Initial Planned Finish | Number1 | Number2 |
| --- | --- | --- | --- | --- | --- | --- | --- | --- | --- | --- | --- | --- | --- | --- | --- | --- | --- | --- | --- | --- | --- | --- |
| 990 | 1.2.8.6.11 | **Gate 7 LIMs Roll Out Approval to Close out Project** |  | 1d | 2025-11-21 | 2025-11-24 |  | 160.22d |  |  |  |  | No | No | No | No | No | Yes | 2025-08-08 | 2025-08-12 |  |  |
| 991 | 1.2.8.6.11.1 | LIMs Roll Out Conduct a post-project review or "lessons learned" session Team Review |  | 1d | 2025-11-21 | 2025-11-24 | 989 | 160.22d | 0d |  |  |  | No | No | No | No | No | No | 2025-08-08 | 2025-08-11 | -1 | -1 |
| 992 | 1.2.8.6.11.2 | LIMs Roll Out Project Complete | milestone | 0d | 2025-11-24 | 2025-11-24 | 991 | 160.22d |  |  |  |  | No | No | No | No | No | No | 2025-08-11 | 2025-08-12 | -1 | -1 |
| 993 | 1.2.9 | **ZnNi Line Asset Management Optimization** |  | 244d | 2024-04-08 | 2025-03-14 |  | 341.78d |  | start no earlier than 2024-04-08 |  | 87h | No | No | No | No | No | Yes | 2024-04-08 | 2025-03-14 |  |  |
| 994 | 1.2.9.1 | **ZnNi Line Asset Management Asset Inventory Creation & Upload to Carlsource** |  | 12.66d | 2024-04-08 | 2024-04-24 |  | 341.72d |  |  |  | 11h | No | No | No | No | No | Yes | 2024-04-08 | 2024-04-24 |  |  |
| 995 | 1.2.9.1.1 | ZnNi Line Asset Management Asset Inventory Kick off meeting |  | 1d | 2024-04-08 | 2024-04-08 |  | 341.78d | 0d |  | James Fleming [12.5%] | 1h | No | No | No | No | No | Yes | 2024-04-08 | 2024-04-08 |  |  |
| 996 | 1.2.9.1.2 | ZnNi Line Asset Management Asset Inventory Asset request forms initiated for each component |  | 5d | 2024-04-08 | 2024-04-15 | 995 | 341.81d | 0d |  | James Fleming [10%] | 4h | No | No | No | No | No | Yes | 2024-04-08 | 2024-04-15 |  |  |
| 997 | 1.2.9.1.3 | ZnNi Line Asset Management Asset Inventory Asset request forms in progress. |  | 1d | 2024-04-15 | 2024-04-16 | 996 | 341.81d | 0d |  | James Fleming [12.5%] | 1h | No | No | No | No | No | Yes | 2024-04-15 | 2024-04-16 |  |  |
| 998 | 1.2.9.1.4 | ZnNi Line Asset Management Asset Inventory Comprehensive inventory list Complete | milestone | 0d | 2024-04-16 | 2024-04-16 | 997 | 341.81d | 0d |  | James Fleming |  | No | No | No | No | No | Yes | 2024-04-16 | 2024-04-16 |  |  |
| 999 | 1.2.9.1.5 | ZnNi Line Asset Management Asset Inventory ALL major assets created on Carlsource |  | 5d | 2024-04-16 | 2024-04-23 | 998 | 341.81d | 0d |  | Hubert Wolski [10%] | 4h | No | No | No | No | No | Yes | 2024-04-16 | 2024-04-23 |  |  |
| 1000 | 1.2.9.1.6 | ZnNi Line Asset Management Asset Inventory Creation & Upload to Carlsource Complete | milestone | 0d | 2024-04-23 | 2024-04-23 | 999 | 341.81d | 0d |  | James Fleming |  | No | No | No | No | No | Yes | 2024-04-23 | 2024-04-23 |  |  |
| 1001 | 1.2.9.1.7 | ZnNi Line Asset Management Asset Inventory Creation & Upload to Carlsource Sign Off |  | 1d | 2024-04-23 | 2024-04-24 | 1000 | 341.72d | 0d |  | James Fleming [12.5%] | 1h | No | No | No | No | No | Yes | 2024-04-23 | 2024-04-24 |  |  |
| 1002 | 1.2.9.2 | **ZnNi Line Asset Management Collection & Uploading of Documents** |  | 96.59d | 2024-04-24 | 2024-09-06 |  | 341.72d |  |  |  | 19h | No | No | No | No | No | Yes | 2024-04-24 | 2024-09-06 |  |  |
| 1003 | 1.2.9.2.1 | ZnNi Line Asset Management Document repository organized in Carlsource. |  | 5d | 2024-04-24 | 2024-05-01 | 1001 | 341.72d | 0d |  | Hubert Wolski [10%] | 4h | No | No | No | No | No | Yes | 2024-04-24 | 2024-05-01 |  |  |
| 1004 | 1.2.9.2.2 | ZnNi Line Asset Management Excel table tracking document collection status. |  | 1d | 2024-05-01 | 2024-05-02 | 1003 | 341.72d | 0d |  | James Fleming [25%] | 2h | No | No | No | No | No | Yes | 2024-05-01 | 2024-05-02 |  |  |
| 1005 | 1.2.9.2.3 | ZnNi Line Asset Management Collect specifications and drawings for all components |  | 90d | 2024-05-02 | 2024-09-04 | 1004 | 341.72d | 0d |  | James Fleming [1.39%] | 10h | No | No | No | No | No | Yes | 2024-05-02 | 2024-09-04 |  |  |
| 1006 | 1.2.9.2.4 | ZnNi Line Asset Management Review meeting to ensure documentation completeness and accuracy. |  | 1d | 2024-09-04 | 2024-09-05 | 1005 | 341.72d | 0d |  | James Fleming [25%] | 2h | No | No | No | No | No | Yes | 2024-09-04 | 2024-09-05 |  |  |
| 1007 | 1.2.9.2.5 | ZnNi Line Asset Management Upload documents to Carlsource manually complete | milestone | 0d | 2024-09-05 | 2024-09-05 | 1006 | 342.28d | 0d |  | James Fleming |  | No | No | No | No | No | Yes | 2024-09-05 | 2024-09-05 |  |  |
| 1008 | 1.2.9.2.6 | ZnNi Line Asset Management Collection & Uploading of Documents sign off |  | 1d | 2024-09-05 | 2024-09-06 | 1007 | 342.25d | 0d |  | James Fleming [12.5%] | 1h | No | No | No | No | No | Yes | 2024-09-05 | 2024-09-06 |  |  |
| 1009 | 1.2.9.3 | **ZnNi Line Asset Management Establishing Service Schedules** |  | 97.44d | 2024-09-06 | 2025-01-21 |  | 341.78d |  |  |  | 20h | No | No | No | No | No | Yes | 2024-09-06 | 2025-01-21 |  |  |
| 1010 | 1.2.9.3.1 | ZnNi Line Asset Management Define service schedules for each component (Week 10). |  | 90d | 2024-09-06 | 2025-01-10 | 1008 | 342.25d | 0d |  | Jason Payne [1.39%] | 10h | No | No | No | No | No | Yes | 2024-09-06 | 2025-01-10 |  |  |
| 1011 | 1.2.9.3.2 | ZnNi Line Asset Management Documented and uploaded service schedules for all components. |  | 5d | 2025-01-10 | 2025-01-17 | 1010 | 342.25d | 0d |  | Hubert Wolski [20%] | 8h | No | No | No | No | No | Yes | 2025-01-10 | 2025-01-17 |  |  |
| 1012 | 1.2.9.3.3 | ZnNi Line Asset Management Stakeholder validation of service schedules. |  | 1d | 2025-01-17 | 2025-01-20 | 1011 | 341.78d | 0d |  | James Fleming [25%] | 2h | No | No | No | No | No | Yes | 2025-01-17 | 2025-01-20 |  |  |
| 1013 | 1.2.9.3.4 | ZnNi Line Asset Management Add service schedules to Carlsource Complete | milestone | 0d | 2025-01-20 | 2025-01-20 | 1012 | 341.78d | 0d |  | James Fleming |  | No | No | No | No | No | Yes | 2025-01-20 | 2025-01-20 |  |  |
| 1014 | 1.2.9.3.5 | ZnNi Line Asset Management Establishing Service Schedules Sign Off |  | 1d | 2025-01-20 | 2025-01-21 | 1013 | 341.78d | 0d |  |  |  | No | No | No | No | No | Yes | 2025-01-20 | 2025-01-21 |  |  |

| ID | WBS | Task | Type | Duration | Start | Finish | Predecessors | Total slack | Free slack | Resources | Work | Tasks Due this Month | Tasks Due next Month | Tasks Due this week | Tasks Due next Week | Tasks Due Today | Last Tasks | Initial Planned Start | Initial Planned Finish |
| --- | --- | --- | --- | --- | --- | --- | --- | --- | --- | --- | --- | --- | --- | --- | --- | --- | --- | --- | --- |
| 1015 | 1.2.9.4 | **ZnNi Line Asset Management SF OEE Data Input to Carlsource** |  | 21.59d | 2025-01-21 | 2025-02-20 |  | 341.78d |  |  | 24h | No | No | No | No | No | Yes | 2025-01-21 | 2025-02-20 |
| 1016 | 1.2.9.4.1 | ZnNi Line Asset Management Conduct feasibility study on Carlsource customization to receive SF OEE data |  | 5d | 2025-01-21 | 2025-01-28 | 1014 | 341.78d | 0d | James Fleming [10%] | 4h | No | No | No | No | No | Yes | 2025-01-21 | 2025-01-28 |
| 1017 | 1.2.9.4.2 | ZnNi Line Asset Management Feasibility study report. |  | 1d | 2025-01-28 | 2025-01-29 | 1016 | 341.66d | 0d | James Fleming [25%] | 2h | No | No | No | No | No | Yes | 2025-01-28 | 2025-01-29 |
| 1018 | 1.2.9.4.3 | **ZnNi Line Asset Management Manual SF OEE data input process for Carlsource** |  | 4.94d | 2025-01-29 | 2025-02-05 |  | 341.66d | 0d |  | 2h | No | No | No | No | No | Yes | 2025-01-29 | 2025-02-05 |
| 1019 | 1.2.9.4.3.1 | ZnNi Line Asset Management Documented process for manual SF OEE data integration. |  | 5d | 2025-01-29 | 2025-02-05 | 1017 | 341.66d | 0d | James Fleming [5%] | 2h | No | No | No | No | No | Yes | 2025-01-29 | 2025-02-05 |
| 1020 | 1.2.9.4.3.2 | ZnNi Line Asset Management Manual process for updating SF OEE data implementation Complete | milestone | 0d | 2025-02-05 | 2025-02-05 | 1019 | 341.66d |  | James Fleming |  | No | No | No | No | No | Yes | 2025-02-05 | 2025-02-05 |
| 1021 | 1.2.9.4.4 | ZnNi Line Asset Management Automated SF OEE data input process for Calrlsource |  | 5d | 2025-02-05 | 2025-02-12 | 1018 | 341.62d | 0d | James Fleming [10%] | 4h | No | No | No | No | No | Yes | 2025-02-05 | 2025-02-12 |
| 1022 | 1.2.9.4.5 | ZnNi Line Asset Management Document methods for automating the integration of SF OEE data |  | 5d | 2025-02-12 | 2025-02-19 | 1021 | 341.59d | 0d | James Fleming [10%] | 4h | No | No | No | No | No | Yes | 2025-02-12 | 2025-02-19 |
| 1023 | 1.2.9.4.6 | ZnNi Line Asset Management Automated process for updating SF OEE data implemntation Complete | milestone | 0d | 2025-02-19 | 2025-02-19 | 1022 | 341.59d | 0d | James Fleming |  | No | No | No | No | No | Yes | 2025-02-19 | 2025-02-19 |
| 1024 | 1.2.9.4.7 | ZnNi Line Asset Management SF OEE data and Carlsource Input Sign off |  | 1d | 2025-02-19 | 2025-02-20 | 1023 | 341.59d | 0d | James Fleming | 8h | No | No | No | No | No | Yes | 2025-02-19 | 2025-02-20 |
| 1025 | 1.2.9.5 | **ZnNi Line Asset Management Dashboard Setup for SF OEE Data in Carlsource** |  | 12.22d | 2025-02-20 | 2025-03-10 |  | 341.72d |  |  | 8h | No | No | No | No | No | Yes | 2025-02-20 | 2025-03-10 |
| 1026 | 1.2.9.5.1 | ZnNi Line Asset Management Design Concept Dashboard |  | 5d | 2025-02-20 | 2025-02-27 | 1024 | 342.22d | 0d | James Fleming [5%] | 2h | No | No | No | No | No | Yes | 2025-02-20 | 2025-02-27 |
| 1027 | 1.2.9.5.2 | ZnNi Line Asset Management Review SF OEE Dashboard Concepts |  | 1d | 2025-02-27 | 2025-02-28 | 1026 | 342.25d | 0d | James Fleming [12.5%] | 1h | No | No | No | No | No | Yes | 2025-02-27 | 2025-02-28 |
| 1028 | 1.2.9.5.3 | ZnNi Line Asset Management Develop and set up a dashboard for SF OEE data (Week 16). |  | 5d | 2025-02-28 | 2025-03-07 | 1027 | 342.25d | 0d | James Fleming [10%] | 4h | No | No | No | No | No | Yes | 2025-02-28 | 2025-03-07 |
| 1029 | 1.2.9.5.4 | ZnNi Line Asset Management Functional dashboard ready to display SF OEE data Complete | milestone | 0d | 2025-03-07 | 2025-03-07 | 1028 | 342.25d | 0d | James Fleming |  | No | No | No | No | No | Yes | 2025-03-07 | 2025-03-07 |
| 1030 | 1.2.9.5.5 | ZnNi Line Asset Management Final review and approval of dashboard with stakeholders. |  | 1d | 2025-03-07 | 2025-03-10 | 1029 | 341.72d | 0d | James Fleming [12.5%] | 1h | No | No | No | No | No | Yes | 2025-03-07 | 2025-03-10 |
| 1031 | 1.2.9.6 | **ZnNi Line Asset Management Project Wrap-Up** |  | 3.5d | 2025-03-10 | 2025-03-14 |  | 341.72d |  |  | 5h | No | No | No | No | No | Yes | 2025-03-10 | 2025-03-14 |
| 1032 | 1.2.9.6.1 | ZnNi Line Asset Management Consolidate and review all deliverables |  | 1d | 2025-03-10 | 2025-03-11 | 1030 | 341.72d | 0d | James Fleming [25%] | 2h | No | No | No | No | No | Yes | 2025-03-10 | 2025-03-11 |
| 1033 | 1.2.9.6.2 | ZnNi Line Asset Management Present final project outcomes to stakeholders (Week 18). |  | 1d | 2025-03-11 | 2025-03-12 | 1032 | 341.69d | 0d | James Fleming [12.5%] | 1h | No | No | No | No | No | Yes | 2025-03-11 | 2025-03-12 |
| 1034 | 1.2.9.6.3 | ZnNi Line Asset Management Feedback summary for potential improvements. |  | 1d | 2025-03-12 | 2025-03-13 | 1033 | 341.72d | 0d | James Fleming [12.5%] | 1h | No | No | No | No | No | Yes | 2025-03-12 | 2025-03-13 |
| 1035 | 1.2.9.6.4 | ZnNi Line Asset Management Project documentation for asset management Complete | milestone | 0d | 2025-03-13 | 2025-03-13 | 1034 | 342.28d | 0d | James Fleming |  | No | No | No | No | No | Yes | 2025-03-13 | 2025-03-13 |
| 1036 | 1.2.9.6.5 | ZnNi Line Asset Management Project closure meeting with all stakeholders. |  | 1d | 2025-03-13 | 2025-03-14 | 1035 | 342.19d |  | James Fleming [12.5%] | 1h | No | No | No | No | No | Yes | 2025-03-13 | 2025-03-14 |
